# 2. Pharma Access Project Plan_06.08.2024_V1

How a schedule from MS Project changed from version to version. A marks actual dates.

## Version 1 (data date 2022-10-13, saved 2024-10-05, file TASK_00631275_1_05102024162443.mpp)

Note of the change: Add project files.

| ID | WBS | Task | Duration | Start | Finish | Predecessors | Complete | Total float | Constraint |
| --- | --- | --- | --- | --- | --- | --- | --- | --- | --- |
| 1 | 1 | **SAP Implementation at PA** | 418d | 2024-09-02 A | 2026-03-09 |  | 9% | 0d |  |
| 2 | 1.1 | **Phase 1: S4 HANA Implementation (Public Cloud)** | 154d | 2024-09-02 A | 2025-03-08 |  | 12% | 264d |  |
| 3 | 1.1.1 | **Implementation** | 102d | 2024-09-02 A | 2025-01-07 |  | 16% | 316d |  |
| 4 | 1.1.1.1 | **Prepare** | 7d | 2024-09-02 A | 2024-09-10 A |  | 100% |  |  |
| 5 | 1.1.1.1.1 | **Project Kick Off and On-Boarding** | 7d | 2024-09-02 A | 2024-09-10 A |  | 100% |  |  |
| 6 |  | On-board Project Team | 7d | 2024-09-02 A | 2024-09-10 A |  | 100% |  | finish no earlier than 2024-09-09 |
| 7 |  | Conduct project kickoff | 1d | 2024-09-05 A | 2024-09-05 A | 6SS+3d | 100% |  | start no earlier than 2024-09-05 |
| 8 | 1.1.1.1.2 | **Project Plan** | 4d | 2024-09-02 A | 2024-09-05 A |  | 100% |  |  |
| 9 |  | Prepare & submit Initial project plan | 1d | 2024-09-02 A | 2024-09-02 A | 6SS | 100% |  | start no earlier than 2024-01-02 |
| 10 |  | Review project plan | 1d | 2024-09-03 A | 2024-09-03 A | 9 | 100% |  |  |
| 11 |  | Make necessary changes in the plan | 1d | 2024-09-04 A | 2024-09-04 A | 10 | 100% |  |  |
| 12 |  | Submit revised plan | 1d | 2024-09-04 A | 2024-09-04 A | 11FF | 100% |  |  |
| 13 |  | Approval of project plan by PA | 1d | 2024-09-05 A | 2024-09-05 A | 12 | 100% |  |  |
| 14 | 1.1.1.1.3 | **Project Governance** | 2d | 2024-09-06 A | 2024-09-09 A |  | 100% |  |  |
| 15 |  | Establish Project Governance Mechanism | 1d | 2024-09-06 A | 2024-09-09 A | 7FS+1d | 100% |  | start no earlier than 2023-12-04 |
| 16 |  | Define Project Communications and Reporting | 1d | 2024-09-06 A | 2024-09-09 A | 7FS+1d | 100% |  |  |
| 17 | 1.1.1.1.4 | **Project Standards, Infrastructure & Solution** | 1d | 2024-09-06 A | 2024-09-06 A |  | 100% |  |  |
| 18 |  | Set Up Project Team Logistics and Infrastructure | 1d | 2024-09-06 A | 2024-09-06 A | 7 | 100% |  | start no earlier than 2023-12-05 |
| 19 |  | Create a Document Repository for the Implementation Project Team | 1d | 2024-09-06 A | 2024-09-06 A | 7 | 100% |  |  |
| 20 | 1.1.1.1.5 | **Fit-to-Standard Analysis Preparation** | 1d | 2024-09-09 A | 2024-09-09 A |  | 100% |  |  |
| 21 |  | Prepare for Fit-to-Standard Workshops | 1d | 2024-09-09 A | 2024-09-09 A | 19 | 100% |  |  |
| 22 | 1.1.1.1.6 | **Phase Closure and Sign-Off Phase Deliverables** | 1d | 2024-09-10 A | 2024-09-10 A |  | 100% |  |  |
| 23 |  | Prepare Phase Signoff | 0d | 2024-09-10 A | 2024-09-10 A | 21 | 100% |  |  |
| 24 | 1.1.1.1.7 | **Deliverables** | 1d | 2024-09-10 A | 2024-09-10 A |  | 100% |  |  |
| 25 |  | D: Baseline Project Plan | 1d | 2024-09-10 A | 2024-09-10 A | 23FF | 100% |  | start no earlier than 2022-11-07 |
| 26 |  | D: Project kickoff presentation | 1d | 2024-09-10 A | 2024-09-10 A | 23FF | 100% |  | start no earlier than 2022-11-07 |
| 27 | 1.1.1.2 | **Explore** | 30d | 2024-09-02 A | 2024-10-11 |  | 60% | 388d |  |
| 28 | 1.1.1.2.1 | **Requirement gathering** | 12d | 2024-09-02 A | 2024-09-17 A |  | 100% |  |  |
| 29 |  | Review AS IS document | 6d | 2024-09-02 A | 2024-09-17 A | 21 | 100% |  | start no earlier than 2022-11-04 |
| 30 |  | Update AS IS document as per discussion | 12d | 2024-09-02 A | 2024-09-17 A | 29SS | 100% |  |  |
| 31 | 1.1.1.2.2 | **Fit-to-Standard analysis** | 9d | 2024-09-17 A | 2024-09-27 A |  | 100% |  |  |
| 32 |  | Conduct workshop for all modules | 8d | 2024-09-17 A | 2024-09-27 A | 30 | 100% |  |  |
| 33 | 1.1.1.2.3 | **Fit to Standard analysis documentation** | 20d | 2024-09-16 A | 2024-10-11 |  | 18% | 388d |  |
| 34 |  | Document Initial Configuration Settings for SAP Central Business Configuration | 1d | 2024-09-16 A | 2024-09-16 A | 32 | 100% |  |  |
| 35 |  | Document Scope via SAP Central Business Configuration | 3d | 2024-09-17 A | 2024-09-19 A | 34 | 100% |  |  |
| 36 | 1.1.1.2.3.3 | **Document and Maintain Business Process Flows** | 10d | 2024-09-20 A | 2024-10-04 |  | 56% | 393d |  |
| 37 |  | Prepare fit-to-standard Document and KDS | 2.5d | 2024-09-20 A | 2024-10-01 A | 32 | 100% |  |  |
| 38 |  | Submition of Fit-to-standard and KDS | 0d | 2024-09-23 A | 2024-10-01 A | 37 | 100% |  |  |
| 39 |  | Review of fit-to-standard & KDS by CTM | 0d | 2024-09-25 A | 2024-10-02 A | 38 | 100% |  |  |
| 40 |  | Solution Walkthrough | 1d | 2024-10-03 A | 2024-10-03 | 39 |  | 3d |  |
| 41 |  | Fit-to-Standard document Signoff | 1d | 2024-10-04 | 2024-10-04 | 40 |  | 393d |  |
| 42 |  | Document Configuration Values | 2d | 2024-10-04 | 2024-10-05 | 40 |  | 3d |  |
| 43 | 1.1.1.2.3.5 | **Data migration requirements** | 3d | 2024-10-07 | 2024-10-09 |  |  | 3d |  |
| 44 |  | Identify master data requirement | 1d | 2024-10-07 | 2024-10-07 | 42 |  | 3d |  |
| 45 |  | Prepare and explain master data template | 2d | 2024-10-08 | 2024-10-09 | 44 |  | 3d |  |
| 46 |  | Circulate master data template | 1d | 2024-10-09 | 2024-10-09 | 45FF |  | 3d |  |
| 47 |  | Confirm Backlog and prioritise (SIT/UAT, Golive, Post-Golive) | 2d | 2024-10-10 | 2024-10-11 | 46 |  | 3d |  |
| 48 | 1.1.1.2.3.7 | **Integration Planning and Design** | 5d | 2024-10-04 | 2024-10-09 |  |  | 390d |  |
| 49 |  | Integration with ASP/GSP | 5d | 2024-10-04 | 2024-10-09 | 40 |  | 390d |  |
| 50 |  | Integration with bank host to host (upto 3) | 5d | 2024-10-04 | 2024-10-09 | 40 |  | 390d |  |
| 51 |  | Integration with Primavera | 5d | 2024-10-04 | 2024-10-09 | 40 |  | 390d |  |
| 52 |  | Integration with third party payroll | 5d | 2024-10-04 | 2024-10-09 | 40 |  | 390d |  |
| 53 | 1.1.1.2.4 | **Getting Started with your SAP Implementation** | 7d | 2024-09-20 | 2024-09-30 |  |  | 397d |  |
| 54 |  | Review Overview Documentation | 2d | 2024-09-20 | 2024-09-23 | 35 |  | 397d |  |
| 55 |  | Organize Provisioning Emails | 3d | 2024-09-24 | 2024-09-26 | 54 |  | 397d |  |
| 56 |  | Ensure Project Team Members Access to the SAP Support Portal, SAP Best Practices Explorer, and SAP Customer Communities | 2d | 2024-09-27 | 2024-09-30 | 55 |  | 397d |  |
| 57 | 1.1.1.2.5 | **SAP Cloud ALM Onboarding** | 9d | 2024-09-03 A | 2024-09-13 A |  | 100% |  |  |
| 58 |  | Request SAP Cloud ALM Tenant | 9d | 2024-09-03 A | 2024-09-13 A | 56 | 100% |  |  |
| 59 |  | Access SAP Cloud ALM and Create Users | 1d | 2024-09-13 A | 2024-09-13 A | 58 | 100% |  |  |
| 60 | 1.1.1.2.6 | **Initial System Access for Central Business Configuration** | 13d | 2024-09-03 A | 2024-09-19 A |  | 100% |  |  |
| 61 |  | Access the SAP Central Business Configuration | 6d | 2024-09-03 A | 2024-09-10 A | 59 | 100% |  |  |
| 62 |  | Set Up Starter Project in SAP Central Business Configuration | 1d | 2024-09-11 A | 2024-09-11 A | 61 | 100% |  |  |
| 63 |  | Set Up SAP Central Business Configuration Integration | 5d | 2024-09-13 A | 2024-09-19 A | 62 | 100% |  |  |
| 64 | 1.1.1.2.7 | **Initial System Access for SAP S/4HANA Cloud** | 14d | 2024-09-03 A | 2024-09-20 A |  | 100% |  |  |
| 65 |  | Access Starter System and Reset Password | 6d | 2024-09-03 A | 2024-09-10 A | 29 | 100% |  |  |
| 66 |  | Create Users in the Starter System | 1d | 2024-09-10 A | 2024-09-11 A | 65 | 100% |  |  |
| 67 |  | Self-Activation of Project Team Members in the Identity Authentication Service | 1d | 2024-09-20 A | 2024-09-20 A | 66 | 100% |  |  |
| 68 | 1.1.1.2.8 | **Phase Closure and Sign-Off Phase Deliverables** | 1d | 2024-10-11 | 2024-10-11 |  |  | 14d |  |
| 69 |  | Explore Phase Signoff | 1d | 2024-10-11 | 2024-10-11 | 47FF |  | 14d |  |
| 70 | 1.1.1.2.9 | **Deliverables** | 5d | 2024-10-05 | 2024-10-10 |  |  | 389d |  |

| ID | WBS | Task | Duration | Start | Finish | Predecessors | Total float |
| --- | --- | --- | --- | --- | --- | --- | --- |
| 71 |  | Fit to Standard documents with Process flow diagram, Gap Analysis | 1d | 2024-10-05 | 2024-10-05 | 41 | 393d |
| 72 |  | Core team training/ presentation | 1d | 2024-10-05 | 2024-10-05 | 41 | 393d |
| 73 |  | Initial Master data templates | 1d | 2024-10-10 | 2024-10-10 | 46 | 389d |
| 74 | 1.1.1.3 | **Realize** | 45d | 2024-10-12 | 2024-12-05 |  | 3d |
| 75 | 1.1.1.3.1 | **Requirement gathering sheet (RGS)** | 4d | 2024-10-12 | 2024-10-16 |  | 3d |
| 76 |  | Prepare RGS | 3d | 2024-10-12 | 2024-10-15 | 47 | 3d |
| 77 |  | Submit RGS | 1d | 2024-10-16 | 2024-10-16 | 76 | 384d |
| 78 | 1.1.1.3.2 | **Functional Specifications** | 6d | 2024-10-16 | 2024-10-22 |  | 3d |
| 79 |  | Prepare functional specfications | 4d | 2024-10-16 | 2024-10-19 | 76 | 3d |
| 80 |  | Finalize development tracker | 2d | 2024-10-21 | 2024-10-22 | 79 | 379d |
| 81 | 1.1.1.3.3 | **Solution Configuration** | 10d | 2024-10-21 | 2024-11-02 |  | 3d |
| 82 |  | Configure Processes and Functions in golden master (100) | 5d | 2024-10-21 | 2024-10-25 | 79 | 3d |
| 83 |  | Transfer of Configuration to Dev testing | 1d | 2024-10-26 | 2024-10-26 | 82 | 3d |
| 84 |  | Unit testing-1 (Consultant) | 3d | 2024-10-28 | 2024-10-30 | 83 | 3d |
| 85 |  | Document and Resolve Issues | 3d | 2024-10-28 | 2024-10-30 | 84SS | 3d |
| 86 |  | Submit Unit Testing result & completion of baseline config | 1d | 2024-11-02 | 2024-11-02 | 85 | 3d |
| 87 | 1.1.1.3.4 | **Core team training & UT** | 12d | 2024-11-02 | 2024-11-15 |  | 3d |
| 88 |  | Plan for CTM training | 1d | 2024-11-02 | 2024-11-02 | 86FF | 3d |
| 89 |  | Making necessery training arrangement - PPT + tutorial | 2d | 2024-11-04 | 2024-11-05 | 88 | 3d |
| 90 |  | Conducting CTM Training (Module wise) | 3d | 2024-11-06 | 2024-11-08 | 89 | 3d |
| 91 |  | Unit Testing by Core team | 6d | 2024-11-09 | 2024-11-15 | 90 | 354d |
| 92 | 1.1.1.3.5 | **Quality System Request / Initial Setup** | 1d | 2024-10-12 | 2024-10-12 |  | 382d |
| 93 |  | Execute Initial Setup of the Quality System via SAP Central Business Configuration | 1d | 2024-10-12 | 2024-10-12 | 69 | 387d |
| 94 |  | Request Quality System via Manage Your Solution App | 1d | 2024-10-12 | 2024-10-12 | 69 | 382d |
| 95 | 1.1.1.3.6 | **Quality System Initial Access** | 7d | 2024-10-12 | 2024-10-19 |  | 381d |
| 96 |  | Receive Quality System and Reset Password | 1d | 2024-10-14 | 2024-10-14 | 94 | 382d |
| 97 |  | Create Preset Configuration User in the Quality System via Manage Your Solution App | 1d | 2024-10-15 | 2024-10-15 | 96 | 384d |
| 98 |  | Define Preset Parameters and Trigger System Activation via Manage Your Solution App | 1d | 2024-10-16 | 2024-10-16 | 97 | 384d |
| 99 | 1.1.1.3.6.4 | **Create Users in the Quality Server** | 6d | 2024-10-12 | 2024-10-18 |  | 381d |
| 100 | 1.1.1.3.6.4.1 | **Finalize list of users for QAS** | 6d | 2024-10-12 | 2024-10-18 |  | 381d |
| 101 | 1.1.1.3.6.4.1.1 | **Provide user authorization** | 6d | 2024-10-12 | 2024-10-18 |  | 381d |
| 102 |  | Finalize user authorization | 2d | 2024-10-12 | 2024-10-14 | 69 | 381d |
| 103 |  | Create roles and authorization | 1d | 2024-10-15 | 2024-10-15 | 102 | 381d |
| 104 |  | Testing of roles and authorization | 2d | 2024-10-16 | 2024-10-17 | 103 | 381d |
| 105 |  | Deployment of roles to users | 1d | 2024-10-18 | 2024-10-18 | 104 | 381d |
| 106 |  | Self-Activation of Project Team Members in the Identity Authentication Service | 1d | 2024-10-19 | 2024-10-19 | 105 | 381d |
| 107 | 1.1.1.3.7 | **Required Configuration Before System Use - SAP S/4HANA Cloud** | 1d | 2024-10-15 | 2024-10-15 |  | 382d |
| 108 |  | Configure system | 1d | 2024-10-15 | 2024-10-15 | 96 | 382d |
| 109 | 1.1.1.3.8 | **Standard Integration Setup in the Quality/Test System** | 3d | 2024-10-16 | 2024-10-18 |  | 382d |
| 110 |  | Set Up Integration using Cloud Integration Automation Service (CIAS) | 1d | 2024-10-16 | 2024-10-16 | 108 | 382d |
| 111 |  | Set Up Employee Central Integration (JB1) | 1d | 2024-10-17 | 2024-10-17 | 110 | 382d |
| 112 |  | Set Up Integrations in the Quality/Test System | 1d | 2024-10-18 | 2024-10-18 | 111 | 382d |
| 113 | 1.1.1.3.9 | **System Integration Test** | 44d | 2024-10-12 | 2024-12-04 |  | 14d |
| 114 | 1.1.1.3.9.1 | **Integration test Plan** | 24d | 2024-10-12 | 2024-11-11 |  | 14d |
| 115 |  | Identify scenerios for Integration test | 2d | 2024-11-09 | 2024-11-11 | 90 | 3d |
| 116 |  | Write scripts for Integration test | 2d | 2024-11-09 | 2024-11-11 | 115SS | 3d |
| 117 | 1.1.1.3.9.1.3 | **Master data** | 13d | 2024-10-22 | 2024-11-07 |  | 367d |
| 118 |  | Receipt Master Data from PA | 10d | 2024-10-22 | 2024-11-04 | 46FS+10d | 367d |
| 119 |  | Upload Master data in QAS | 3d | 2024-11-05 | 2024-11-07 | 118 | 367d |
| 120 | 1.1.1.3.9.1.4 | **Identity and Access Management Planning and Design** | 20d | 2024-10-12 | 2024-11-06 |  | 14d |
| 121 |  | Finalize list of users | 15d | 2024-10-12 | 2024-10-29 | 69 | 14d |
| 122 |  | Provide & Check roles and authorization | 5d | 2024-10-30 | 2024-11-06 | 121 | 14d |
| 123 | 1.1.1.3.9.2 | **Conduct System integration test** | 20d | 2024-11-12 | 2024-12-04 |  | 3d |
| 124 |  | Perform Integration testing by Consultant | 7d | 2024-11-12 | 2024-11-19 | 116 | 3d |
| 125 |  | Perform User Acceptance test - CTM | 10d | 2024-11-20 | 2024-11-30 | 124, 122 | 3d |
| 126 |  | Resolving the issues, if any | 10d | 2024-11-20 | 2024-11-30 | 125SS | 3d |
| 127 |  | Retesting of scenarios | 3d | 2024-12-02 | 2024-12-04 | 126 | 3d |
| 128 |  | UAT (by CTM) signoff | 1d | 2024-12-04 | 2024-12-04 | 127FF | 3d |
| 129 | 1.1.1.3.9.3 | **ABAP Development - SIT Critical** | 31d | 2024-10-26 | 2024-12-03 |  | 317d |
| 130 |  | Develop reports | 25d | 2024-10-26 | 2024-11-26 | 82 | 317d |
| 131 |  | Testing by consultant | 25d | 2024-10-30 | 2024-11-29 | 130SS+3d | 345d |
| 132 |  | Testing by CTM | 25d | 2024-11-05 | 2024-12-03 | 131SS+3d | 345d |
| 133 |  | Sign off Development | 1d | 2024-12-03 | 2024-12-03 | 132FF | 345d |
| 134 | 1.1.1.3.10 | **Cutover Strategy** | 1d | 2024-12-05 | 2024-12-05 |  | 3d |
| 135 |  | Discussion on cutover strategy | 1d | 2024-12-05 | 2024-12-05 | 128 | 3d |
| 136 |  | Cutover & data responsibility Plan | 1d | 2024-12-05 | 2024-12-05 | 135FF | 3d |
| 137 |  | Communication to Organisation for Cutover | 1d | 2024-12-05 | 2024-12-05 | 136FF | 3d |
| 138 | 1.1.1.3.11 | **End user training plan** | 2d | 2024-11-16 | 2024-11-18 |  | 354d |
| 139 |  | Preparation of End User training plan | 2d | 2024-11-16 | 2024-11-18 | 91 | 354d |
| 140 |  | Communicate plan to PA | 1d | 2024-11-18 | 2024-11-18 | 139FF | 354d |

| ID | WBS | Task | Duration | Start | Finish | Predecessors | Total float | Constraint |
| --- | --- | --- | --- | --- | --- | --- | --- | --- |
| 141 | 1.1.1.3.12 | **Production System Request** | 2d | 2024-10-12 | 2024-10-14 |  | 384d |  |
| 142 |  | Request for Production System | 1d | 2024-10-12 | 2024-10-12 | 69 | 384d |  |
| 143 |  | Request Access to the SAP S/4HANA Cloud Release Assessment Tool. | 1d | 2024-10-14 | 2024-10-14 | 142 | 384d |  |
| 144 | 1.1.1.3.13 | **Production System Initial Access** | 2d | 2024-10-15 | 2024-10-16 |  | 384d |  |
| 145 |  | Receive Production System and Reset Password | 1d | 2024-10-15 | 2024-10-15 | 143 | 384d |  |
| 146 |  | Transport Initial Change Project from Q-System to P-System | 1d | 2024-10-16 | 2024-10-16 | 145 | 384d |  |
| 147 |  | Phase Closure & Signoff Phase deliverables | 1d | 2024-12-05 | 2024-12-05 | 128 | 343d |  |
| 148 | 1.1.1.3.15 | **Deliverables** | 28d | 2024-11-04 | 2024-12-05 |  | 343d |  |
| 149 |  | D: Test scripts | 1d | 2024-11-12 | 2024-11-12 | 116 | 363d |  |
| 150 |  | D: Unit test result document | 1d | 2024-11-04 | 2024-11-04 | 86 | 370d |  |
| 151 |  | D: Integration testing document | 1d | 2024-11-20 | 2024-11-20 | 124 | 356d |  |
| 152 |  | D: User Acceptance testing document | 1d | 2024-12-04 | 2024-12-04 | 128FF | 344d |  |
| 153 |  | D: Final master data templates | 1d | 2024-12-05 | 2024-12-05 | 137FF | 343d |  |
| 154 |  | D: Data migration strategy document | 1d | 2024-12-05 | 2024-12-05 | 137FF | 343d |  |
| 155 | 1.1.1.4 | **Deploy** | 42d | 2024-11-19 | 2025-01-07 |  | 13d |  |
| 156 | 1.1.1.4.1 | **ABAP Developments Pre Go Live** | 34d | 2024-11-27 | 2025-01-06 |  | 317d |  |
| 157 |  | Develop reports | 27d | 2024-11-27 | 2024-12-28 | 130 | 317d | start no earlier than 2022-12-20 |
| 158 |  | Testing by consultant | 27d | 2024-11-30 | 2025-01-01 | 157SS+3d | 317d |  |
| 159 |  | Testing by CTM | 27d | 2024-12-03 | 2025-01-03 | 158SS+2d | 317d |  |
| 160 |  | Sign off Development | 2d | 2025-01-04 | 2025-01-06 | 159 | 317d |  |
| 161 | 1.1.1.4.2 | **End User Training** | 10d | 2024-12-06 | 2024-12-17 |  | 332d |  |
| 162 |  | Prepare end user training manual | 2d | 2024-12-06 | 2024-12-07 | 137 | 332d |  |
| 163 |  | Conduct end user training | 5d | 2024-12-09 | 2024-12-13 | 162 | 332d |  |
| 164 |  | Conduct training to HODs/Management | 3d | 2024-12-14 | 2024-12-17 | 163 | 333d |  |
| 165 | 1.1.1.4.3 | **Production Environment Preparation** | 3d | 2024-12-05 | 2024-12-07 |  | 341d |  |
| 166 |  | Transport final configurations | 1d | 2024-12-05 | 2024-12-05 | 128 | 341d |  |
| 167 |  | Maintain number ranges | 1d | 2024-12-06 | 2024-12-06 | 166 | 341d |  |
| 168 |  | Maintain client specific data | 1d | 2024-12-07 | 2024-12-07 | 167 | 341d |  |
| 169 | 1.1.1.4.4 | **User creation** | 26d | 2024-11-19 | 2024-12-18 |  | 332d |  |
| 170 |  | Finalize list of users for production enviornment | 2d | 2024-11-19 | 2024-11-20 | 140 | 354d |  |
| 171 |  | Finalise Authorization Matrix | 2d | 2024-11-21 | 2024-11-22 | 170 | 354d |  |
| 172 |  | Check roles and authorization | 4d | 2024-12-14 | 2024-12-18 | 163 | 332d |  |
| 173 | 1.1.1.4.5 | **Data preparation and upload** | 33d | 2024-11-28 | 2025-01-06 |  | 5d |  |
| 174 |  | Receipt of master data | 20d | 2024-11-28 | 2024-12-20 | 46FS+40d | 5d |  |
| 175 |  | Validate & cleanse master data | 1d | 2024-12-21 | 2024-12-21 | 174 | 5d |  |
| 176 |  | Upload master data in Production | 4d | 2024-12-23 | 2024-12-27 | 175 | 5d |  |
| 177 |  | Confirm uploaded master data | 1d | 2024-12-28 | 2024-12-28 | 176 | 324d |  |
| 178 |  | Receipt of cutover data | 20d | 2024-12-06 | 2024-12-30 | 137 | 3d |  |
| 179 |  | Validate & cleanse cutover data | 6d | 2024-12-31 | 2025-01-06 | 178 | 317d |  |
| 180 |  | Upload cutover data in production | 6d | 2024-12-31 | 2025-01-06 | 178, 176 | 3d |  |
| 181 |  | Check and validate uploaded data | 1d | 2025-01-06 | 2025-01-06 | 180FF | 3d |  |
| 182 | 1.1.1.4.6 | **Deliverables** | 34d | 2024-11-21 | 2024-12-31 |  | 322d |  |
| 183 |  | D: End user training manual | 3d | 2024-12-09 | 2024-12-11 | 162 | 338d |  |
| 184 |  | D: Data migration plan & checklist | 3d | 2024-12-21 | 2024-12-24 | 174 | 327d |  |
| 185 |  | D: Master data upload programs | 3d | 2024-12-28 | 2024-12-31 | 176 | 322d |  |
| 186 |  | D: Sample data upload validation | 1d | 2024-12-28 | 2024-12-28 | 176 | 324d |  |
| 187 |  | D: Final SAP Authorization matrix | 1d | 2024-11-21 | 2024-11-21 | 170 | 355d |  |
| 188 | 1.1.1.4.7 | **Phase Closure & Sign Off Phase Deliverables** | 1d | 2025-01-07 | 2025-01-07 |  | 3d |  |
| 189 |  | Deploy signoff | 1d | 2025-01-07 | 2025-01-07 | 181 | 3d |  |
| 190 |  | Completion of Final Preparation (Deploy) Phase | 1d | 2025-01-07 | 2025-01-07 | 189FF | 3d |  |
| 191 |  | Go Live | 1d | 2025-01-08 | 2025-01-08 | 190 | 3d |  |
| 192 | 1.1.3 | **Stabilization** | 27d | 2025-01-09 | 2025-02-08 |  | 3d |  |
| 193 |  | Stabilization | 27d | 2025-01-09 | 2025-02-08 | 191 | 3d |  |
| 194 | 1.1.3.2 | **Deliverables** | 27d | 2025-01-09 | 2025-02-08 |  | 288d |  |
| 195 |  | D: Issue list with resolution status | 27d | 2025-01-09 | 2025-02-08 | 193SS | 288d |  |
| 196 |  | D: Configuration documents | 27d | 2025-01-09 | 2025-02-08 | 193SS | 288d |  |
| 197 |  | D: FS & TS | 27d | 2025-01-09 | 2025-02-08 | 193SS | 288d |  |
| 198 |  | D: Cre team training document | 27d | 2025-01-09 | 2025-02-08 | 193SS | 288d |  |
| 199 | 1.1.4 | **Extended Support** | 24d | 2025-02-10 | 2025-03-08 |  | 3d |  |
| 200 |  | One month extended support | 24d | 2025-02-10 | 2025-03-08 | 193 | 3d |  |
| 201 | 1.2 | **Phase 2: One Year AMC** | 261d | 2025-03-13 | 2026-03-09 |  | 0d |  |
| 202 |  | AMC Support | 261d | 2025-03-13 | 2026-03-09 | 200 | 0d | finish no earlier than 2026-03-09 |

## Version 2 (data date 2022-10-13, saved 2024-10-20, file TASK_00631275_1_21102024092229.mpp)

Note of the change: Add project files.

Last finish stays 2026-03-09. Complete tasks 31 → 38.

Changed:

| ID | Task | Start | Finish | Duration | Complete | Total float | Other |
| --- | --- | --- | --- | --- | --- | --- | --- |
| 1 | **SAP Implementation at PA** |  |  |  | 9% → 11% |  |  |
| 2 | **Phase 1: S4 HANA Implementation (Public Cloud)** |  | 2025-03-08 → 2025-03-07 (-1d) | 154d → 153d | 12% → 16% | 264d → 265d |  |
| 3 | **Implementation** |  | 2025-01-07 → 2025-01-20 (+13d) | 102d → 113d | 16% → 20% | 316d → 305d |  |
| 27 | **Explore** |  | 2024-10-11 → 2024-10-26 (+15d) | 30d → 43d | 60% → 65% | 388d → 375d |  |
| 33 | **Fit to Standard analysis documentation** |  | 2024-10-11 → 2024-10-26 (+15d) | 20d → 33d | 18% → 38% | 388d → 375d |  |
| 36 | **Document and Maintain Business Process Flows** |  | 2024-10-04 → 2024-10-22 (+18d) | 10d → 25d | 56% → 13% | 393d → 378d |  |
| 40 | Solution Walkthrough |  | 2024-10-03 → 2024-10-21 (+18d) | 1d → 16d |  | 3d → 0d | constraint none → finish no earlier than 2024-10-21 |
| 41 | Fit-to-Standard document Signoff | 2024-10-04 → 2024-10-22 (+18d) | 2024-10-04 → 2024-10-22 (+18d) |  |  | 393d → 378d |  |
| 42 | Document Configuration Values | 2024-10-04 → 2024-10-22 (+18d) | 2024-10-05 → 2024-10-23 (+18d) |  |  | 3d → 378d |  |
| 43 | **Data migration requirements** | 2024-10-07 A | 2024-10-09 → 2024-10-18 A (+9d) | 3d → 11d | 0% → 100% | 3d → none |  |
| 44 | Identify master data requirement | 2024-10-07 A | 2024-10-07 A |  | 0% → 100% | 3d → none |  |
| 45 | Prepare and explain master data template | 2024-10-08 → 2024-10-10 A (+2d) | 2024-10-09 → 2024-10-18 A (+9d) | 2d → 8d | 0% → 100% | 3d → none |  |
| 46 | Circulate master data template | 2024-10-09 → 2024-10-10 A (+1d) | 2024-10-09 → 2024-10-18 A (+9d) | 1d → 8d | 0% → 100% | 3d → none |  |
| 47 | Confirm Backlog and prioritise (SIT/UAT, Golive, Post-Golive) | 2024-10-10 → 2024-10-11 A (+1d) | 2024-10-11 → 2024-10-25 (+14d) | 2d → 6d |  | 3d → 4d | constraint none → finish no earlier than 2024-10-25 |
| 48 | **Integration Planning and Design** | 2024-10-04 → 2024-10-09 A (+5d) | 2024-10-09 → 2024-10-26 (+17d) | 5d → 16d | 0% → 6% | 390d → 375d |  |
| 49 | Integration with ASP/GSP | 2024-10-04 → 2024-10-09 A (+5d) | 2024-10-09 A | 5d → 1d | 0% → 100% | 390d → none |  |
| 50 | Integration with bank host to host (upto 3) | 2024-10-04 → 2024-10-09 A (+5d) | 2024-10-09 → 2024-10-26 (+17d) |  |  | 390d → 375d |  |
| 51 | Integration with Primavera | 2024-10-04 → 2024-10-22 (+18d) | 2024-10-09 → 2024-10-26 (+17d) |  |  | 390d → 375d |  |
| 52 | Integration with third party payroll | 2024-10-04 → 2024-10-22 (+18d) | 2024-10-09 → 2024-10-26 (+17d) |  |  | 390d → 375d |  |
| 53 | **Getting Started with your SAP Implementation** | 2024-09-20 → 2024-10-07 A (+17d) | 2024-09-30 → 2024-10-07 A (+7d) | 7d → 1d | 0% → 100% | 397d → none |  |
| 54 | Review Overview Documentation | 2024-09-20 → 2024-10-07 A (+17d) | 2024-09-23 → 2024-10-07 A (+14d) | 2d → 1d | 0% → 100% | 397d → none |  |
| 55 | Organize Provisioning Emails | 2024-09-24 → 2024-10-07 A (+13d) | 2024-09-26 → 2024-10-07 A (+11d) | 3d → 1d | 0% → 100% | 397d → none |  |
| 56 | Ensure Project Team Members Access to the SAP Support Portal, SAP Best Practices Explorer, and SAP Customer Communities | 2024-09-27 → 2024-10-07 A (+10d) | 2024-09-30 → 2024-10-07 A (+7d) | 2d → 1d | 0% → 100% | 397d → none |  |
| 68 | **Phase Closure and Sign-Off Phase Deliverables** | 2024-10-11 → 2024-10-25 (+14d) | 2024-10-11 → 2024-10-25 (+14d) |  |  | 14d → 16d |  |
| 69 | Explore Phase Signoff | 2024-10-11 → 2024-10-25 (+14d) | 2024-10-11 → 2024-10-25 (+14d) |  |  | 14d → 16d |  |
| 70 | **Deliverables** | 2024-10-05 → 2024-10-19 (+14d) | 2024-10-10 → 2024-10-23 (+13d) | 5d → 4d |  | 389d → 378d |  |
| 71 | Fit to Standard documents with Process flow diagram, Gap Analysis | 2024-10-05 → 2024-10-23 (+18d) | 2024-10-05 → 2024-10-23 (+18d) |  |  | 393d → 378d |  |
| 72 | Core team training/ presentation | 2024-10-05 → 2024-10-23 (+18d) | 2024-10-05 → 2024-10-23 (+18d) |  |  | 393d → 378d |  |
| 73 | Initial Master data templates | 2024-10-10 → 2024-10-19 (+9d) | 2024-10-10 → 2024-10-19 (+9d) |  |  | 389d → 381d |  |
| 74 | **Realize** | 2024-10-12 → 2024-10-26 (+14d) | 2024-12-05 → 2024-12-17 (+12d) | 45d → 43d |  | 3d → 4d |  |
| 75 | **Requirement gathering sheet (RGS)** | 2024-10-12 → 2024-10-26 (+14d) | 2024-10-16 → 2024-10-30 (+14d) |  |  | 3d → 4d |  |
| 76 | Prepare RGS | 2024-10-12 → 2024-10-26 (+14d) | 2024-10-15 → 2024-10-29 (+14d) |  |  | 3d → 4d |  |
| 77 | Submit RGS | 2024-10-16 → 2024-10-30 (+14d) | 2024-10-16 → 2024-10-30 (+14d) |  |  | 384d → 372d |  |
| 78 | **Functional Specifications** | 2024-10-16 → 2024-10-30 (+14d) | 2024-10-22 → 2024-11-07 (+16d) |  |  | 3d → 4d |  |
| 79 | Prepare functional specfications | 2024-10-16 → 2024-10-30 (+14d) | 2024-10-19 → 2024-11-05 (+17d) |  |  | 3d → 4d |  |
| 80 | Finalize development tracker | 2024-10-21 → 2024-11-06 (+16d) | 2024-10-22 → 2024-11-07 (+16d) |  |  | 379d → 367d |  |
| 81 | **Solution Configuration** | 2024-10-21 → 2024-11-06 (+16d) | 2024-11-02 → 2024-11-15 (+13d) | 10d → 9d |  | 3d → 4d |  |
| 82 | Configure Processes and Functions in golden master (100) | 2024-10-21 → 2024-11-06 (+16d) | 2024-10-25 → 2024-11-11 (+17d) |  |  | 3d → 4d |  |
| 83 | Transfer of Configuration to Dev testing | 2024-10-26 → 2024-11-12 (+17d) | 2024-10-26 → 2024-11-12 (+17d) |  |  | 3d → 4d |  |
| 84 | Unit testing-1 (Consultant) | 2024-10-28 → 2024-11-13 (+16d) | 2024-10-30 → 2024-11-14 (+15d) | 3d → 2d |  | 3d → 4d |  |
| 85 | Document and Resolve Issues | 2024-10-28 → 2024-11-13 (+16d) | 2024-10-30 → 2024-11-14 (+15d) | 3d → 2d |  | 3d → 4d |  |
| 86 | Submit Unit Testing result & completion of baseline config | 2024-11-02 → 2024-11-15 (+13d) | 2024-11-02 → 2024-11-15 (+13d) |  |  | 3d → 4d |  |
| 87 | **Core team training & UT** | 2024-11-02 → 2024-11-15 (+13d) | 2024-11-15 → 2024-11-28 (+13d) |  |  | 3d → 4d |  |
| 88 | Plan for CTM training | 2024-11-02 → 2024-11-15 (+13d) | 2024-11-02 → 2024-11-15 (+13d) |  |  | 3d → 4d |  |
| 89 | Making necessery training arrangement - PPT + tutorial | 2024-11-04 → 2024-11-16 (+12d) | 2024-11-05 → 2024-11-18 (+13d) |  |  | 3d → 4d |  |
| 90 | Conducting CTM Training (Module wise) | 2024-11-06 → 2024-11-19 (+13d) | 2024-11-08 → 2024-11-21 (+13d) |  |  | 3d → 4d |  |
| 91 | Unit Testing by Core team | 2024-11-09 → 2024-11-22 (+13d) | 2024-11-15 → 2024-11-28 (+13d) |  |  | 354d → 343d |  |
| 92 | **Quality System Request / Initial Setup** | 2024-10-12 → 2024-10-26 (+14d) | 2024-10-12 → 2024-10-26 (+14d) |  |  | 382d → 370d |  |
| 93 | Execute Initial Setup of the Quality System via SAP Central Business Configuration | 2024-10-12 → 2024-10-26 (+14d) | 2024-10-12 → 2024-10-26 (+14d) |  |  | 387d → 375d |  |
| 94 | Request Quality System via Manage Your Solution App | 2024-10-12 → 2024-10-26 (+14d) | 2024-10-12 → 2024-10-26 (+14d) |  |  | 382d → 370d |  |
| 95 | **Quality System Initial Access** | 2024-10-12 → 2024-10-26 (+14d) | 2024-10-19 → 2024-11-05 (+17d) |  |  | 381d → 369d |  |
| 96 | Receive Quality System and Reset Password | 2024-10-14 → 2024-10-28 (+14d) | 2024-10-14 → 2024-10-28 (+14d) |  |  | 382d → 370d |  |
| 97 | Create Preset Configuration User in the Quality System via Manage Your Solution App | 2024-10-15 → 2024-10-29 (+14d) | 2024-10-15 → 2024-10-29 (+14d) |  |  | 384d → 372d |  |
| 98 | Define Preset Parameters and Trigger System Activation via Manage Your Solution App | 2024-10-16 → 2024-10-30 (+14d) | 2024-10-16 → 2024-10-30 (+14d) |  |  | 384d → 372d |  |
| 99 | **Create Users in the Quality Server** | 2024-10-12 → 2024-10-26 (+14d) | 2024-10-18 → 2024-11-04 (+17d) |  |  | 381d → 369d |  |
| 100 | **Finalize list of users for QAS** | 2024-10-12 → 2024-10-26 (+14d) | 2024-10-18 → 2024-11-04 (+17d) |  |  | 381d → 369d |  |
| 101 | **Provide user authorization** | 2024-10-12 → 2024-10-26 (+14d) | 2024-10-18 → 2024-11-04 (+17d) |  |  | 381d → 369d |  |
| 102 | Finalize user authorization | 2024-10-12 → 2024-10-26 (+14d) | 2024-10-14 → 2024-10-28 (+14d) |  |  | 381d → 369d |  |
| 103 | Create roles and authorization | 2024-10-15 → 2024-10-29 (+14d) | 2024-10-15 → 2024-10-29 (+14d) |  |  | 381d → 369d |  |
| 104 | Testing of roles and authorization | 2024-10-16 → 2024-10-30 (+14d) | 2024-10-17 → 2024-11-02 (+16d) |  |  | 381d → 369d |  |
| 105 | Deployment of roles to users | 2024-10-18 → 2024-11-04 (+17d) | 2024-10-18 → 2024-11-04 (+17d) |  |  | 381d → 369d |  |
| 106 | Self-Activation of Project Team Members in the Identity Authentication Service | 2024-10-19 → 2024-11-05 (+17d) | 2024-10-19 → 2024-11-05 (+17d) |  |  | 381d → 369d |  |
| 107 | **Required Configuration Before System Use - SAP S/4HANA Cloud** | 2024-10-15 → 2024-10-29 (+14d) | 2024-10-15 → 2024-10-29 (+14d) |  |  | 382d → 370d |  |
| 108 | Configure system | 2024-10-15 → 2024-10-29 (+14d) | 2024-10-15 → 2024-10-29 (+14d) |  |  | 382d → 370d |  |
| 109 | **Standard Integration Setup in the Quality/Test System** | 2024-10-16 → 2024-10-30 (+14d) | 2024-10-18 → 2024-11-04 (+17d) |  |  | 382d → 370d |  |
| 110 | Set Up Integration using Cloud Integration Automation Service (CIAS) | 2024-10-16 → 2024-10-30 (+14d) | 2024-10-16 → 2024-10-30 (+14d) |  |  | 382d → 370d |  |
| 111 | Set Up Employee Central Integration (JB1) | 2024-10-17 → 2024-11-02 (+16d) | 2024-10-17 → 2024-11-02 (+16d) |  |  | 382d → 370d |  |
| 112 | Set Up Integrations in the Quality/Test System | 2024-10-18 → 2024-11-04 (+17d) | 2024-10-18 → 2024-11-04 (+17d) |  |  | 382d → 370d |  |
| 113 | **System Integration Test** | 2024-10-12 → 2024-10-26 (+14d) | 2024-12-04 → 2024-12-17 (+13d) | 44d → 43d |  | 14d → 16d |  |
| 114 | **Integration test Plan** | 2024-10-12 → 2024-10-26 (+14d) | 2024-11-11 → 2024-11-22 (+11d) | 24d → 22d |  | 14d → 16d |  |

| ID | Task | Start | Finish | Duration | Total float |
| --- | --- | --- | --- | --- | --- |
| 115 | Identify scenerios for Integration test | 2024-11-09 → 2024-11-22 (+13d) | 2024-11-11 → 2024-11-22 (+11d) | 2d → 1d | 3d → 4d |
| 116 | Write scripts for Integration test | 2024-11-09 → 2024-11-22 (+13d) | 2024-11-11 → 2024-11-22 (+11d) | 2d → 1d | 3d → 4d |
| 117 | **Master data** | 2024-10-22 → 2024-11-02 (+11d) | 2024-11-07 → 2024-11-16 (+9d) |  | 367d → 359d |
| 118 | Receipt Master Data from PA | 2024-10-22 → 2024-11-02 (+11d) | 2024-11-04 → 2024-11-13 (+9d) |  | 367d → 359d |
| 119 | Upload Master data in QAS | 2024-11-05 → 2024-11-14 (+9d) | 2024-11-07 → 2024-11-16 (+9d) |  | 367d → 359d |
| 120 | **Identity and Access Management Planning and Design** | 2024-10-12 → 2024-10-26 (+14d) | 2024-11-06 → 2024-11-14 (+8d) | 20d → 15d | 14d → 16d |
| 121 | Finalize list of users | 2024-10-12 → 2024-10-26 (+14d) | 2024-10-29 → 2024-11-08 (+10d) | 15d → 10d | 14d → 16d |
| 122 | Provide & Check roles and authorization | 2024-10-30 → 2024-11-09 (+10d) | 2024-11-06 → 2024-11-14 (+8d) |  | 14d → 16d |
| 123 | **Conduct System integration test** | 2024-11-12 → 2024-11-23 (+11d) | 2024-12-04 → 2024-12-13 (+9d) | 20d → 18d | 3d → 4d |
| 124 | Perform Integration testing by Consultant | 2024-11-12 → 2024-11-23 (+11d) | 2024-11-19 → 2024-11-28 (+9d) | 7d → 5d | 3d → 4d |
| 125 | Perform User Acceptance test - CTM | 2024-11-20 → 2024-11-29 (+9d) | 2024-11-30 → 2024-12-10 (+10d) |  | 3d → 4d |
| 126 | Resolving the issues, if any | 2024-11-20 → 2024-11-29 (+9d) | 2024-11-30 → 2024-12-10 (+10d) |  | 3d → 4d |
| 127 | Retesting of scenarios | 2024-12-02 → 2024-12-11 (+9d) | 2024-12-04 → 2024-12-13 (+9d) |  | 3d → 4d |
| 128 | UAT (by CTM) signoff | 2024-12-04 → 2024-12-13 (+9d) | 2024-12-04 → 2024-12-13 (+9d) |  | 3d → 4d |
| 129 | **ABAP Development - SIT Critical** | 2024-10-26 → 2024-11-12 (+17d) | 2024-12-03 → 2024-12-17 (+14d) |  | 317d → 305d |
| 130 | Develop reports | 2024-10-26 → 2024-11-12 (+17d) | 2024-11-26 → 2024-12-10 (+14d) |  | 317d → 305d |
| 131 | Testing by consultant | 2024-10-30 → 2024-11-15 (+16d) | 2024-11-29 → 2024-12-13 (+14d) |  | 345d → 333d |
| 132 | Testing by CTM | 2024-11-05 → 2024-11-19 (+14d) | 2024-12-03 → 2024-12-17 (+14d) |  | 345d → 333d |
| 133 | Sign off Development | 2024-12-03 → 2024-12-17 (+14d) | 2024-12-03 → 2024-12-17 (+14d) |  | 345d → 333d |
| 134 | **Cutover Strategy** | 2024-12-05 → 2024-12-14 (+9d) | 2024-12-05 → 2024-12-14 (+9d) |  | 3d → 4d |
| 135 | Discussion on cutover strategy | 2024-12-05 → 2024-12-14 (+9d) | 2024-12-05 → 2024-12-14 (+9d) |  | 3d → 4d |
| 136 | Cutover & data responsibility Plan | 2024-12-05 → 2024-12-14 (+9d) | 2024-12-05 → 2024-12-14 (+9d) |  | 3d → 4d |
| 137 | Communication to Organisation for Cutover | 2024-12-05 → 2024-12-14 (+9d) | 2024-12-05 → 2024-12-14 (+9d) |  | 3d → 4d |
| 138 | **End user training plan** | 2024-11-16 → 2024-11-29 (+13d) | 2024-11-18 → 2024-11-30 (+12d) |  | 354d → 343d |
| 139 | Preparation of End User training plan | 2024-11-16 → 2024-11-29 (+13d) | 2024-11-18 → 2024-11-30 (+12d) |  | 354d → 343d |
| 140 | Communicate plan to PA | 2024-11-18 → 2024-11-30 (+12d) | 2024-11-18 → 2024-11-30 (+12d) |  | 354d → 343d |
| 141 | **Production System Request** | 2024-10-12 → 2024-10-26 (+14d) | 2024-10-14 → 2024-10-28 (+14d) |  | 384d → 372d |
| 142 | Request for Production System | 2024-10-12 → 2024-10-26 (+14d) | 2024-10-12 → 2024-10-26 (+14d) |  | 384d → 372d |
| 143 | Request Access to the SAP S/4HANA Cloud Release Assessment Tool. | 2024-10-14 → 2024-10-28 (+14d) | 2024-10-14 → 2024-10-28 (+14d) |  | 384d → 372d |
| 144 | **Production System Initial Access** | 2024-10-15 → 2024-10-29 (+14d) | 2024-10-16 → 2024-10-30 (+14d) |  | 384d → 372d |
| 145 | Receive Production System and Reset Password | 2024-10-15 → 2024-10-29 (+14d) | 2024-10-15 → 2024-10-29 (+14d) |  | 384d → 372d |
| 146 | Transport Initial Change Project from Q-System to P-System | 2024-10-16 → 2024-10-30 (+14d) | 2024-10-16 → 2024-10-30 (+14d) |  | 384d → 372d |
| 147 | Phase Closure & Signoff Phase deliverables | 2024-12-05 → 2024-12-14 (+9d) | 2024-12-05 → 2024-12-14 (+9d) |  | 343d → 335d |
| 148 | **Deliverables** | 2024-11-04 → 2024-11-16 (+12d) | 2024-12-05 → 2024-12-14 (+9d) | 28d → 25d | 343d → 335d |
| 149 | D: Test scripts | 2024-11-12 → 2024-11-23 (+11d) | 2024-11-12 → 2024-11-23 (+11d) |  | 363d → 353d |
| 150 | D: Unit test result document | 2024-11-04 → 2024-11-16 (+12d) | 2024-11-04 → 2024-11-16 (+12d) |  | 370d → 359d |
| 151 | D: Integration testing document | 2024-11-20 → 2024-11-29 (+9d) | 2024-11-20 → 2024-11-29 (+9d) |  | 356d → 348d |
| 152 | D: User Acceptance testing document | 2024-12-04 → 2024-12-13 (+9d) | 2024-12-04 → 2024-12-13 (+9d) |  | 344d → 336d |
| 153 | D: Final master data templates | 2024-12-05 → 2024-12-14 (+9d) | 2024-12-05 → 2024-12-14 (+9d) |  | 343d → 335d |
| 154 | D: Data migration strategy document | 2024-12-05 → 2024-12-14 (+9d) | 2024-12-05 → 2024-12-14 (+9d) |  | 343d → 335d |
| 155 | **Deploy** | 2024-11-19 → 2024-12-02 (+13d) | 2025-01-07 → 2025-01-20 (+13d) |  | 13d → 14d |
| 156 | **ABAP Developments Pre Go Live** | 2024-11-27 → 2024-12-11 (+14d) | 2025-01-06 → 2025-01-20 (+14d) |  | 317d → 305d |
| 157 | Develop reports | 2024-11-27 → 2024-12-11 (+14d) | 2024-12-28 → 2025-01-11 (+14d) |  | 317d → 305d |
| 158 | Testing by consultant | 2024-11-30 → 2024-12-14 (+14d) | 2025-01-01 → 2025-01-15 (+14d) |  | 317d → 305d |
| 159 | Testing by CTM | 2024-12-03 → 2024-12-17 (+14d) | 2025-01-03 → 2025-01-17 (+14d) |  | 317d → 305d |
| 160 | Sign off Development | 2025-01-04 → 2025-01-18 (+14d) | 2025-01-06 → 2025-01-20 (+14d) |  | 317d → 305d |
| 161 | **End User Training** | 2024-12-06 → 2024-12-16 (+10d) | 2024-12-17 → 2024-12-27 (+10d) |  | 332d → 324d |
| 162 | Prepare end user training manual | 2024-12-06 → 2024-12-16 (+10d) | 2024-12-07 → 2024-12-17 (+10d) |  | 332d → 324d |
| 163 | Conduct end user training | 2024-12-09 → 2024-12-18 (+9d) | 2024-12-13 → 2024-12-23 (+10d) |  | 332d → 324d |
| 164 | Conduct training to HODs/Management | 2024-12-14 → 2024-12-24 (+10d) | 2024-12-17 → 2024-12-27 (+10d) |  | 333d → 325d |
| 165 | **Production Environment Preparation** | 2024-12-05 → 2024-12-14 (+9d) | 2024-12-07 → 2024-12-17 (+10d) |  | 341d → 333d |
| 166 | Transport final configurations | 2024-12-05 → 2024-12-14 (+9d) | 2024-12-05 → 2024-12-14 (+9d) |  | 341d → 333d |
| 167 | Maintain number ranges | 2024-12-06 → 2024-12-16 (+10d) | 2024-12-06 → 2024-12-16 (+10d) |  | 341d → 333d |
| 168 | Maintain client specific data | 2024-12-07 → 2024-12-17 (+10d) | 2024-12-07 → 2024-12-17 (+10d) |  | 341d → 333d |
| 169 | **User creation** | 2024-11-19 → 2024-12-02 (+13d) | 2024-12-18 → 2024-12-28 (+10d) | 26d → 23d | 332d → 324d |
| 170 | Finalize list of users for production enviornment | 2024-11-19 → 2024-12-02 (+13d) | 2024-11-20 → 2024-12-03 (+13d) |  | 354d → 343d |
| 171 | Finalise Authorization Matrix | 2024-11-21 → 2024-12-04 (+13d) | 2024-11-22 → 2024-12-05 (+13d) |  | 354d → 343d |
| 172 | Check roles and authorization | 2024-12-14 → 2024-12-24 (+10d) | 2024-12-18 → 2024-12-28 (+10d) |  | 332d → 324d |
| 173 | **Data preparation and upload** | 2024-11-28 → 2024-12-07 (+9d) | 2025-01-06 → 2025-01-07 (+1d) | 33d → 26d | 5d → 9d |
| 174 | Receipt of master data | 2024-11-28 → 2024-12-07 (+9d) | 2024-12-20 → 2024-12-18 (-2d) | 20d → 10d | 5d → 9d |
| 175 | Validate & cleanse master data | 2024-12-21 → 2024-12-19 (-2d) | 2024-12-21 → 2024-12-19 (-2d) |  | 5d → 9d |
| 176 | Upload master data in Production | 2024-12-23 → 2024-12-20 (-3d) | 2024-12-27 → 2024-12-24 (-3d) |  | 5d → 9d |
| 177 | Confirm uploaded master data | 2024-12-28 → 2024-12-26 (-2d) | 2024-12-28 → 2024-12-26 (-2d) |  | 324d → 326d |
| 178 | Receipt of cutover data | 2024-12-06 → 2024-12-16 (+10d) | 2024-12-30 → 2024-12-31 (+1d) | 20d → 13d | 3d → 4d |
| 179 | Validate & cleanse cutover data | 2024-12-31 → 2025-01-01 (+1d) | 2025-01-06 → 2025-01-07 (+1d) |  | 317d → 316d |
| 180 | Upload cutover data in production | 2024-12-31 → 2025-01-01 (+1d) | 2025-01-06 → 2025-01-04 (-2d) | 6d → 4d | 3d → 4d |
| 181 | Check and validate uploaded data | 2025-01-06 → 2025-01-04 (-2d) | 2025-01-06 → 2025-01-04 (-2d) |  | 3d → 4d |
| 182 | **Deliverables** | 2024-11-21 → 2024-12-04 (+13d) | 2024-12-31 → 2024-12-28 (-3d) | 34d → 21d | 322d → 324d |
| 183 | D: End user training manual | 2024-12-09 → 2024-12-18 (+9d) | 2024-12-11 → 2024-12-20 (+9d) |  | 338d → 330d |
| 184 | D: Data migration plan & checklist | 2024-12-21 → 2024-12-19 (-2d) | 2024-12-24 → 2024-12-21 (-3d) |  | 327d → 329d |

| ID | Task | Start | Finish | Total float |
| --- | --- | --- | --- | --- |
| 185 | D: Master data upload programs | 2024-12-28 → 2024-12-26 (-2d) | 2024-12-31 → 2024-12-28 (-3d) | 322d → 324d |
| 186 | D: Sample data upload validation | 2024-12-28 → 2024-12-26 (-2d) | 2024-12-28 → 2024-12-26 (-2d) | 324d → 326d |
| 187 | D: Final SAP Authorization matrix | 2024-11-21 → 2024-12-04 (+13d) | 2024-11-21 → 2024-12-04 (+13d) | 355d → 344d |
| 188 | **Phase Closure & Sign Off Phase Deliverables** | 2025-01-07 → 2025-01-06 (-1d) | 2025-01-07 → 2025-01-06 (-1d) | 3d → 4d |
| 189 | Deploy signoff | 2025-01-07 → 2025-01-06 (-1d) | 2025-01-07 → 2025-01-06 (-1d) | 3d → 4d |
| 190 | Completion of Final Preparation (Deploy) Phase | 2025-01-07 → 2025-01-06 (-1d) | 2025-01-07 → 2025-01-06 (-1d) | 3d → 4d |
| 191 | Go Live | 2025-01-08 → 2025-01-07 (-1d) | 2025-01-08 → 2025-01-07 (-1d) | 3d → 4d |
| 192 | **Stabilization** | 2025-01-09 → 2025-01-08 (-1d) | 2025-02-08 → 2025-02-07 (-1d) | 3d → 4d |
| 193 | Stabilization | 2025-01-09 → 2025-01-08 (-1d) | 2025-02-08 → 2025-02-07 (-1d) | 3d → 4d |
| 194 | **Deliverables** | 2025-01-09 → 2025-01-08 (-1d) | 2025-02-08 → 2025-02-07 (-1d) | 288d → 289d |
| 195 | D: Issue list with resolution status | 2025-01-09 → 2025-01-08 (-1d) | 2025-02-08 → 2025-02-07 (-1d) | 288d → 289d |
| 196 | D: Configuration documents | 2025-01-09 → 2025-01-08 (-1d) | 2025-02-08 → 2025-02-07 (-1d) | 288d → 289d |
| 197 | D: FS & TS | 2025-01-09 → 2025-01-08 (-1d) | 2025-02-08 → 2025-02-07 (-1d) | 288d → 289d |
| 198 | D: Cre team training document | 2025-01-09 → 2025-01-08 (-1d) | 2025-02-08 → 2025-02-07 (-1d) | 288d → 289d |
| 199 | **Extended Support** | 2025-02-10 → 2025-02-08 (-2d) | 2025-03-08 → 2025-03-07 (-1d) | 3d → 4d |
| 200 | One month extended support | 2025-02-10 → 2025-02-08 (-2d) | 2025-03-08 → 2025-03-07 (-1d) | 3d → 4d |

## Version 3 (data date 2022-10-13, saved 2024-10-20, file TASK_00631268_1_20102024225734.mpp)

Note of the change: Add project files.

Last finish 2026-03-09 → 2025-02-12 (-390d). Complete tasks 38 → 36.

Added:

| ID | Task | Duration | Start | Finish | Predecessors |
| --- | --- | --- | --- | --- | --- |
| 50 | Integration with bank host to host (upto2) | 5d | 2024-10-21 | 2024-10-25 | 41 |
| 51 | Integration with HRMS (Payroll) | 5d | 2024-10-21 | 2024-10-25 | 41 |
| 52 | Integration with Cloud Steer CRM | 5d | 2024-10-21 | 2024-10-25 | 41 |
| 53 | Integration with DMS | 5d | 2024-10-21 | 2024-10-25 | 41 |
| 135 | **Third Party Interface** | 31d | 2024-11-18 | 2024-12-31 |  |
| 136 | Development | 25d | 2024-11-18 | 2024-12-20 | 83 |
| 137 | Testing by consultant | 25d | 2024-11-21 | 2024-12-26 | 136SS+3d |
| 138 | Testing by CTM | 25d | 2024-11-26 | 2024-12-31 | 137SS+3d |
| 139 | Sign off Development | 1d | 2024-12-31 | 2024-12-31 | 138FF |

Removed: 49 Integration with ASP/GSP; 50 Integration with bank host to host (upto 3); 51 Integration with Primavera; 52 Integration with third party payroll; 200 One month extended support; 201 Phase 2: One Year AMC; 202 AMC Support

Changed:

| ID | Task | Start | Finish | Duration | Complete | Total float | Predecessors | Other |
| --- | --- | --- | --- | --- | --- | --- | --- | --- |
| 1 | **SAP Implementation at NEO LIV** | 2024-09-02 A → 2024-09-05 A (+3d) | 2026-03-09 → 2025-02-12 (-390d) | 418d → 110d | 11% → 10% |  |  | was named SAP Implementation at PA; baseline start 2024-09-02 → 2024-09-05; baseline finish 2026-03-09 → 2025-01-31 |
| 2 | **Wave 1A: S4 HANA Implementation (Public Cloud)** | 2024-09-02 A → 2024-09-05 A (+3d) | 2025-03-07 → 2025-02-12 (-23d) | 153d → 110d | 16% → 10% | 265d → 0d |  | was named Phase 1: S4 HANA Implementation (Public Cloud); baseline start 2024-09-02 → 2024-09-05; baseline finish 2025-03-08 → 2025-01-31 |
| 3 | **Implementation** | 2024-09-02 A → 2024-09-05 A (+3d) | 2025-01-20 → 2025-01-10 (-10d) | 113d → 87d | 20% → 12% | 305d → 23d |  | baseline start 2024-09-02 → 2024-09-05; baseline finish 2025-01-07 → 2024-12-31 |
| 4 | **Prepare** | 2024-09-02 A → 2024-09-05 A (+3d) | 2024-09-10 A → 2024-09-23 A (+13d) | 7d → 12d |  |  |  | baseline start 2024-09-02 → 2024-09-05; baseline finish 2024-09-10 → 2024-09-11 |
| 5 | **Project Kick Off and On-Boarding** | 2024-09-02 A → 2024-09-05 A (+3d) | 2024-09-10 A → 2024-09-05 A (-5d) | 7d → 1d |  |  |  | baseline start 2024-09-02 → 2024-09-05; baseline finish 2024-09-09 → 2024-09-05 |
| 6 | On-board Project Team | 2024-09-02 A → 2024-09-05 A (+3d) | 2024-09-10 A → 2024-09-05 A (-5d) | 7d → 1d |  |  |  | constraint finish no earlier than 2024-09-09 → start no earlier than 2024-09-05; baseline start 2024-09-02 → 2024-09-05; baseline finish 2024-09-09 → 2024-09-05 |
| 7 | Conduct Kickoff Workshop |  |  |  |  |  | 6SS+3d → 6SS | was named Conduct project kickoff; constraint start no earlier than 2024-09-05 → none |
| 8 | **Project Plan** | 2024-09-02 A → 2024-09-05 A (+3d) | 2024-09-05 A → 2024-09-19 A (+14d) | 4d → 10d |  |  |  | baseline start 2024-09-02 → 2024-09-05; baseline finish 2024-09-05 → 2024-09-11 |
| 9 | Prepare & submit Initial project plan | 2024-09-02 A → 2024-09-05 A (+3d) | 2024-09-02 A → 2024-09-06 A (+4d) | 1d → 2d |  |  |  | baseline start 2024-09-02 → 2024-09-05; baseline finish 2024-09-02 → 2024-09-06 |
| 10 | Review project plan | 2024-09-03 A → 2024-09-09 A (+6d) | 2024-09-03 A → 2024-09-09 A (+6d) |  |  |  |  | baseline start 2024-09-03 → 2024-09-09; baseline finish 2024-09-03 → 2024-09-09 |
| 11 | Make necessary changes in the plan | 2024-09-04 A → 2024-09-10 A (+6d) | 2024-09-04 A → 2024-09-10 A (+6d) |  |  |  |  | baseline start 2024-09-04 → 2024-09-10; baseline finish 2024-09-04 → 2024-09-10 |
| 12 | Submit revised plan | 2024-09-04 A → 2024-09-10 A (+6d) | 2024-09-04 A → 2024-09-10 A (+6d) |  |  |  |  | baseline start 2024-09-04 → 2024-09-10; baseline finish 2024-09-04 → 2024-09-10 |
| 13 | Approval of project plan by NL | 2024-09-05 A → 2024-09-11 A (+6d) | 2024-09-05 A → 2024-09-19 A (+14d) | 1d → 6d |  |  |  | was named Approval of project plan by PA; baseline start 2024-09-05 → 2024-09-11; baseline finish 2024-09-05 → 2024-09-11 |
| 14 | **Project Governance** | 2024-09-06 A → 2024-09-09 A (+3d) |  | 2d → 1d |  |  |  |  |
| 15 | Establish Project Governance Mechanism | 2024-09-06 A → 2024-09-09 A (+3d) |  |  |  |  |  |  |
| 16 | Define Project Communications and Reporting | 2024-09-06 A → 2024-09-09 A (+3d) |  |  |  |  |  |  |
| 17 | **Project Standards, Infrastructure & Solution** |  | 2024-09-06 A → 2024-09-09 A (+3d) | 1d → 2d |  |  |  | baseline finish 2024-09-06 → 2024-09-09 |
| 18 | Set Up Project Team Logistics and Infrastructure |  | 2024-09-06 A → 2024-09-09 A (+3d) | 1d → 2d |  |  |  | baseline finish 2024-09-06 → 2024-09-09 |
| 19 | Create a Document Repository for the Implementation Project Team |  | 2024-09-06 A → 2024-09-09 A (+3d) | 1d → 2d |  |  |  | baseline finish 2024-09-06 → 2024-09-09 |
| 20 | **Fit-to-Standard Analysis Preparation** | 2024-09-09 A → 2024-09-10 A (+1d) | 2024-09-09 A → 2024-09-12 A (+3d) | 1d → 3d |  |  |  | baseline start 2024-09-09 → 2024-09-10; baseline finish 2024-09-09 → 2024-09-10 |
| 21 | Prepare for Fit-to-Standard Workshops | 2024-09-09 A → 2024-09-10 A (+1d) | 2024-09-09 A → 2024-09-12 A (+3d) | 1d → 3d |  |  |  | baseline start 2024-09-09 → 2024-09-10; baseline finish 2024-09-09 → 2024-09-10 |
| 22 | **Phase Closure and Sign-Off Phase Deliverables** | 2024-09-10 A → 2024-09-23 A (+13d) | 2024-09-10 A → 2024-09-23 A (+13d) |  |  |  |  | baseline start 2024-09-10 → 2024-09-11; baseline finish 2024-09-10 → 2024-09-11 |
| 23 | Prepare Phase Signoff | 2024-09-10 A → 2024-09-23 A (+13d) | 2024-09-10 A → 2024-09-23 A (+13d) | 0d → 1d |  |  |  | baseline start 2024-09-10 → 2024-09-11; baseline finish 2024-09-10 → 2024-09-11 |
| 24 | **Deliverables** | 2024-09-10 A → 2024-09-23 A (+13d) | 2024-09-10 A → 2024-09-23 A (+13d) |  |  |  |  | baseline start 2024-09-10 → 2024-09-11; baseline finish 2024-09-10 → 2024-09-11 |
| 25 | D: Baseline Project Plan | 2024-09-10 A → 2024-09-23 A (+13d) | 2024-09-10 A → 2024-09-23 A (+13d) |  |  |  |  | baseline start 2024-09-10 → 2024-09-11; baseline finish 2024-09-10 → 2024-09-11 |
| 26 | D: Project kickoff presentation | 2024-09-10 A → 2024-09-23 A (+13d) | 2024-09-10 A → 2024-09-23 A (+13d) |  |  |  |  | baseline start 2024-09-10 → 2024-09-11; baseline finish 2024-09-10 → 2024-09-11 |
| 27 | D: Training Plan | 2025-02-08 → 2024-09-23 A (-138d) | 2025-03-07 → 2024-09-23 A (-165d) | 24d → 1d | 0% → 100% | 4d → none | none → 23FF | was named Extended Support; constraint none → start no earlier than 2022-11-07; baseline start 2025-02-10 → 2024-09-11; baseline finish 2025-03-08 → 2024-09-11 |
| 28 | **Explore** | 2024-09-02 A → 2024-09-09 A (+7d) | 2024-10-26 → 2024-10-28 (+2d) | 43d → 34d | 65% → 52% | 375d → 74d |  | baseline start 2024-09-10 → 2024-09-09; baseline finish 2024-10-11 → 2024-10-16 |
| 29 | **Requirement gathering** | 2024-09-02 A → 2024-09-09 A (+7d) | 2024-09-17 A → 2024-09-12 A (-5d) | 12d → 4d |  |  |  | baseline start 2024-09-10 → 2024-09-09; baseline finish 2024-09-11 → 2024-09-12 |
| 30 | Review AS IS document | 2024-09-02 A → 2024-09-09 A (+7d) | 2024-09-17 A → 2024-09-10 A (-7d) | 6d → 2d |  |  | 21 → 7SS+2d | baseline start 2024-09-10 → 2024-09-09; baseline finish 2024-09-11 → 2024-09-10 |
| 31 | Update AS IS document as per discussion | 2024-09-02 A → 2024-09-11 A (+9d) | 2024-09-17 A → 2024-09-12 A (-5d) | 12d → 2d |  |  | 30SS → 30 | baseline start 2024-09-10 → 2024-09-11; baseline finish 2024-09-11 → 2024-09-12 |
| 32 | **Fit-to-Standard analysis** | 2024-09-17 A → 2024-09-16 A (-1d) | 2024-09-27 A → 2024-09-19 A (-8d) | 9d → 3d |  |  |  | baseline start 2024-09-12 → 2024-09-16; baseline finish 2024-09-16 → 2024-09-19 |
| 33 | Conduct workshop for all modules | 2024-09-17 A → 2024-09-16 A (-1d) | 2024-09-27 A → 2024-09-19 A (-8d) | 8d → 3d |  |  | 31 → 31FS+1d | baseline start 2024-09-12 → 2024-09-16; baseline finish 2024-09-16 → 2024-09-19 |
| 34 | **Fit to Standard analysis documentation** | 2024-09-16 A → 2024-09-20 A (+4d) | 2024-10-26 → 2024-10-22 (-4d) | 33d → 22d | 38% → 85% | 375d → 78d |  | baseline start 2024-09-17 → 2024-09-20; baseline finish 2024-10-11 → 2024-10-15 |
| 35 | Document Initial Configuration Settings for SAP Central Business Configuration | 2024-09-16 A → 2024-09-20 A (+4d) | 2024-09-16 A → 2024-09-23 A (+7d) | 1d → 2d |  |  |  | baseline start 2024-09-17 → 2024-09-20; baseline finish 2024-09-18 → 2024-09-23 |
| 36 | Document Scope via SAP Central Business Configuration | 2024-09-17 A → 2024-09-24 A (+7d) | 2024-09-19 A → 2024-09-25 A (+6d) | 3d → 2d |  |  |  | baseline start 2024-09-19 → 2024-09-24; baseline finish 2024-09-20 → 2024-09-25 |
| 37 | **Document and Maintain Business Process Flows** | 2024-09-20 A → 2024-09-24 A (+4d) | 2024-10-22 → 2024-10-21 (-1d) | 25d → 19d | 13% → 94% | 378d → 78d |  | baseline start 2024-09-17 → 2024-09-20; baseline finish 2024-10-04 → 2024-10-09 |
| 38 | Prepare BBP Document and KDS | 2024-09-20 A → 2024-09-24 A (+4d) | 2024-10-01 A → 2024-09-28 A (-3d) | 2.5d → 4d |  |  |  | was named Prepare fit-to-standard Document and KDS; baseline start 2024-09-17 → 2024-09-20; baseline finish 2024-09-23 → 2024-09-26 |
| 39 | Submition of BBP and KDS | 2024-09-23 A → 2024-09-30 A (+7d) | 2024-10-01 A → 2024-09-30 A (-1d) | 0d → 1d |  |  |  | was named Submition of Fit-to-standard and KDS; baseline start 2024-09-24 → 2024-09-27; baseline finish 2024-09-24 → 2024-09-27 |
| 40 | Review of BBP & KDS by CTM | 2024-09-25 A → 2024-10-04 A (+9d) | 2024-10-02 A → 2024-10-14 A (+12d) | 0d → 7d |  |  |  | was named Review of fit-to-standard & KDS by CTM; baseline start 2024-09-25 → 2024-09-30; baseline finish 2024-10-01 → 2024-10-07 |
| 41 | BBP Walkthrough | 2024-10-03 A → 2024-10-15 A (+12d) | 2024-10-21 → 2024-10-18 A (-3d) | 16d → 4d | 0% → 100% | 0d → none |  | was named Solution Walkthrough; constraint finish no earlier than 2024-10-21 → none; baseline start 2024-10-03 → 2024-10-08; baseline finish 2024-10-03 → 2024-10-08 |
| 42 | BBP Signff | 2024-10-22 → 2024-10-21 (-1d) | 2024-10-22 → 2024-10-21 (-1d) |  |  | 378d → 78d |  | was named Fit-to-Standard document Signoff; baseline start 2024-10-04 → 2024-10-09; baseline finish 2024-10-04 → 2024-10-09 |
| 43 | Document Configuration Values | 2024-10-22 → 2024-10-21 (-1d) | 2024-10-23 → 2024-10-22 (-1d) |  |  | 378d → 78d |  | baseline start 2024-10-04 → 2024-10-09; baseline finish 2024-10-05 → 2024-10-10 |
| 44 | **Document Master Data Requirements** | 2024-10-07 A → 2024-10-16 A (+9d) |  | 11d → 3d |  |  |  | was named Data migration requirements; baseline start 2024-10-07 → 2024-10-11; baseline finish 2024-10-09 → 2024-10-14 |
| 45 | Identify masterdata requirement | 2024-10-07 A → 2024-10-16 A (+9d) | 2024-10-07 A → 2024-10-17 A (+10d) |  |  |  |  | was named Identify master data requirement; baseline start 2024-10-07 → 2024-10-11; baseline finish 2024-10-07 → 2024-10-11 |
| 46 | Prepare and explain masterdata template | 2024-10-10 A → 2024-10-17 A (+7d) | 2024-10-18 A → 2024-10-17 A (-1d) | 8d → 1d |  |  | 45 → 45SS | was named Prepare and explain master data template; baseline start 2024-10-08 → 2024-10-11; baseline finish 2024-10-09 → 2024-10-11 |
| 47 | Circulate masterdata template | 2024-10-10 A → 2024-10-18 A (+8d) |  | 8d → 1d |  |  | 46FF → 46 | was named Circulate master data template; baseline start 2024-10-09 → 2024-10-14; baseline finish 2024-10-09 → 2024-10-14 |
| 48 | Confirm Backlog and prioritise (SIT/UAT, Golive, Post-Golive) | 2024-10-11 A → 2024-10-21 (+10d) | 2024-10-25 → 2024-10-21 (-4d) | 6d → 1d |  | 4d → 79d |  | constraint finish no earlier than 2024-10-25 → none; baseline start 2024-10-10 → 2024-10-15; baseline finish 2024-10-11 → 2024-10-15 |
| 49 | **Integration Planning and Design** | 2024-10-09 A → 2024-10-21 (+12d) | 2024-10-26 → 2024-10-25 (-1d) | 16d → 5d | 6% → 0% | 375d → 0d |  | baseline start 2024-10-04 → 2024-10-09; baseline finish 2024-10-09 → 2024-10-15 |
| 54 | **Getting Started with your SAP Implementation** | 2024-10-07 A → 2024-09-26 (-11d) | 2024-10-07 A → 2024-10-04 (-3d) | 1d → 6d | 100% → 0% | none → 90d |  | baseline start 2024-09-23 → 2024-09-26; baseline finish 2024-10-01 → 2024-10-04 |
| 55 | Review Overview Documentation | 2024-10-07 A → 2024-09-26 (-11d) | 2024-10-07 A → 2024-09-27 (-10d) | 1d → 2d | 100% → 0% | none → 90d |  | baseline start 2024-09-23 → 2024-09-26; baseline finish 2024-09-24 → 2024-09-27 |
| 56 | Organize Provisioning Emails | 2024-10-07 A → 2024-09-30 (-7d) | 2024-10-07 A → 2024-10-01 (-6d) | 1d → 2d | 100% → 0% | none → 90d |  | baseline start 2024-09-25 → 2024-09-30; baseline finish 2024-09-27 → 2024-10-01 |
| 57 | Ensure Project Team Members Access to the SAP Support Portal, SAP Best Practices Explorer, and SAP Customer Communities | 2024-10-07 A → 2024-10-03 (-4d) | 2024-10-07 A → 2024-10-04 (-3d) | 1d → 2d | 100% → 0% | none → 90d |  | baseline start 2024-09-30 → 2024-10-03; baseline finish 2024-10-01 → 2024-10-04 |
| 58 | **SAP Cloud ALM Onboarding** | 2024-09-03 A → 2024-10-07 A (+34d) | 2024-09-13 A → 2024-10-09 A (+26d) | 9d → 3d |  |  |  | baseline start 2024-10-03 → 2024-10-07; baseline finish 2024-10-04 → 2024-10-08 |
| 59 | Request SAP Cloud ALM Tenant | 2024-09-03 A → 2024-10-07 A (+34d) | 2024-09-13 A → 2024-10-08 A (+25d) | 9d → 2d |  |  |  | baseline start 2024-10-03 → 2024-10-07; baseline finish 2024-10-03 → 2024-10-07 |
| 60 | Access SAP Cloud ALM and Create Users | 2024-09-13 A → 2024-10-08 A (+25d) | 2024-09-13 A → 2024-10-09 A (+26d) |  |  |  |  | baseline start 2024-10-04 → 2024-10-08; baseline finish 2024-10-04 → 2024-10-08 |
| 61 | **Initial System Access for Central Business Configuration** | 2024-09-03 A → 2024-10-15 A (+42d) | 2024-09-19 A → 2024-10-17 A (+28d) | 13d → 3d |  |  |  | baseline start 2024-10-05 → 2024-10-09; baseline finish 2024-10-08 → 2024-10-11 |
| 62 | Access the SAP Central Business Configuration | 2024-09-03 A → 2024-10-15 A (+42d) | 2024-09-10 A → 2024-10-15 A (+35d) | 6d → 1d |  |  |  | baseline start 2024-10-05 → 2024-10-09; baseline finish 2024-10-05 → 2024-10-09 |
| 63 | Set Up Starter Project in SAP Central Business Configuration | 2024-09-11 A → 2024-10-16 A (+35d) | 2024-09-11 A → 2024-10-16 A (+35d) |  |  |  |  | baseline start 2024-10-07 → 2024-10-10; baseline finish 2024-10-07 → 2024-10-10 |
| 64 | Set Up SAP Central Business Configuration Integration | 2024-09-13 A → 2024-10-17 A (+34d) | 2024-09-19 A → 2024-10-17 A (+28d) | 5d → 1d |  |  |  | baseline start 2024-10-08 → 2024-10-11; baseline finish 2024-10-08 → 2024-10-11 |
| 65 | **Initial System Access for SAP S/4HANA Cloud** | 2024-09-03 A → 2024-10-17 A (+44d) | 2024-09-20 A → 2024-10-18 A (+28d) | 14d → 2d |  |  |  | baseline start 2024-09-12 → 2024-10-14; baseline finish 2024-09-16 → 2024-10-16 |
| 66 | Access Starter System and Reset Password | 2024-09-03 A → 2024-10-17 A (+44d) | 2024-09-10 A → 2024-10-18 A (+38d) | 6d → 1d |  |  | 30 → 64 | baseline start 2024-09-12 → 2024-10-14; baseline finish 2024-09-12 → 2024-10-14 |
| 67 | Create Users in the Starter System | 2024-09-10 A → 2024-10-17 A (+37d) | 2024-09-11 A → 2024-10-18 A (+37d) | 1d → 0d |  |  |  | baseline start 2024-09-13 → 2024-10-15; baseline finish 2024-09-13 → 2024-10-15 |
| 68 | Self-Activation of Project Team Members in the Identity Authentication Service | 2024-09-20 A → 2024-10-18 A (+28d) | 2024-09-20 A → 2024-10-18 A (+28d) | 1d → 0d |  |  |  | baseline start 2024-09-16 → 2024-10-16; baseline finish 2024-09-16 → 2024-10-16 |
| 69 | **Phase Closure and Sign-Off Phase Deliverables** | 2024-10-25 → 2024-10-28 (+3d) | 2024-10-25 → 2024-10-28 (+3d) |  |  | 16d → 10d |  | baseline start 2024-10-11 → 2024-10-16; baseline finish 2024-10-11 → 2024-10-16 |
| 70 | Explore Phase Signoff | 2024-10-25 → 2024-10-28 (+3d) | 2024-10-25 → 2024-10-28 (+3d) |  |  | 16d → 10d | 48FF → 53 | baseline start 2024-10-11 → 2024-10-16; baseline finish 2024-10-11 → 2024-10-16 |
| 71 | **Deliverables** | 2024-10-19 → 2024-10-21 (+2d) | 2024-10-23 → 2024-10-22 (-1d) | 4d → 2d |  | 378d → 78d |  | baseline start 2024-10-05 → 2024-10-10; baseline finish 2024-10-10 → 2024-10-15 |
| 72 | Fit to Standard documents with Process flow diagram, Gap Analysis | 2024-10-23 → 2024-10-22 (-1d) | 2024-10-23 → 2024-10-22 (-1d) |  |  | 378d → 78d |  | baseline start 2024-10-05 → 2024-10-10; baseline finish 2024-10-05 → 2024-10-10 |
| 73 | Core team training/ presentation | 2024-10-23 → 2024-10-22 (-1d) | 2024-10-23 → 2024-10-22 (-1d) |  |  | 378d → 78d |  | baseline start 2024-10-05 → 2024-10-10; baseline finish 2024-10-05 → 2024-10-10 |
| 74 | Initial Master data templates | 2024-10-19 → 2024-10-21 (+2d) | 2024-10-19 → 2024-10-21 (+2d) |  |  | 381d → 79d |  | baseline start 2024-10-10 → 2024-10-15; baseline finish 2024-10-10 → 2024-10-15 |

| ID | Task | Start | Finish | Duration | Total float | Predecessors | Other |
| --- | --- | --- | --- | --- | --- | --- | --- |
| 75 | **Realize** | 2024-10-26 → 2024-10-21 (-5d) | 2024-12-17 → 2024-12-31 (+14d) | 43d → 49d | 4d → 5d |  | baseline start 2024-10-12 → 2024-10-15; baseline finish 2024-12-05 → 2024-12-18 |
| 76 | **Requirement gathering sheet (RGS)** | 2024-10-26 → 2024-10-28 (+2d) | 2024-10-30 → 2024-11-04 (+5d) |  | 4d → 0d |  | baseline start 2024-10-12 → 2024-10-16; baseline finish 2024-10-16 → 2024-10-21 |
| 77 | Prepare RGS | 2024-10-26 → 2024-10-28 (+2d) | 2024-10-29 → 2024-10-30 (+1d) |  | 4d → 0d | 48 → 53 | baseline start 2024-10-12 → 2024-10-16; baseline finish 2024-10-15 → 2024-10-18 |
| 78 | Submit RGS | 2024-10-30 → 2024-11-04 (+5d) | 2024-10-30 → 2024-11-04 (+5d) |  | 372d → 0d |  | baseline start 2024-10-16 → 2024-10-21; baseline finish 2024-10-16 → 2024-10-21 |
| 79 | **Functional Specifications** | 2024-10-30 → 2024-11-05 (+6d) | 2024-11-07 → 2024-11-12 (+5d) |  | 4d → 0d |  | baseline start 2024-10-16 → 2024-10-22; baseline finish 2024-10-22 → 2024-10-29 |
| 80 | Prepare functional specfications | 2024-10-30 → 2024-11-05 (+6d) | 2024-11-05 → 2024-11-08 (+3d) |  | 4d → 0d | 77 → 78 | baseline start 2024-10-16 → 2024-10-22; baseline finish 2024-10-19 → 2024-10-25 |
| 81 | Finalize development tracker | 2024-11-06 → 2024-11-11 (+5d) | 2024-11-07 → 2024-11-12 (+5d) |  | 367d → 65d |  | baseline start 2024-10-21 → 2024-10-28; baseline finish 2024-10-22 → 2024-10-29 |
| 82 | **Solution Configuration** | 2024-11-06 → 2024-11-11 (+5d) | 2024-11-15 → 2024-11-22 (+7d) | 9d → 10d | 4d → 0d |  | baseline start 2024-10-21 → 2024-10-28; baseline finish 2024-11-02 → 2024-11-12 |
| 83 | Configure Processes and Functions in golden master (100) | 2024-11-06 → 2024-11-11 (+5d) | 2024-11-11 → 2024-11-15 (+4d) |  | 4d → 0d |  | baseline start 2024-10-21 → 2024-10-28; baseline finish 2024-10-25 → 2024-11-05 |
| 84 | Transfer of Configuration to Dev testing | 2024-11-12 → 2024-11-18 (+6d) | 2024-11-12 → 2024-11-18 (+6d) |  | 4d → 0d |  | baseline start 2024-10-26 → 2024-11-06; baseline finish 2024-10-26 → 2024-11-06 |
| 85 | Unit testing-1 (Consultant) | 2024-11-13 → 2024-11-19 (+6d) | 2024-11-14 → 2024-11-21 (+7d) | 2d → 3d | 4d → 0d |  | baseline start 2024-10-28 → 2024-11-07; baseline finish 2024-10-30 → 2024-11-11 |
| 86 | Document and Resolve Issues | 2024-11-13 → 2024-11-19 (+6d) | 2024-11-14 → 2024-11-21 (+7d) | 2d → 3d | 4d → 0d |  | baseline start 2024-10-28 → 2024-11-07; baseline finish 2024-10-30 → 2024-11-11 |
| 87 | Submit Unit Testing result & completion of baseline config | 2024-11-15 → 2024-11-22 (+7d) | 2024-11-15 → 2024-11-22 (+7d) |  | 4d → 0d |  | baseline start 2024-11-02 → 2024-11-12; baseline finish 2024-11-02 → 2024-11-12 |
| 88 | **Core team training & UT** | 2024-11-15 → 2024-11-25 (+10d) | 2024-11-28 → 2024-12-10 (+12d) |  | 4d → 0d |  | baseline start 2024-11-02 → 2024-11-13; baseline finish 2024-11-15 → 2024-11-28 |
| 89 | Plan for CTM training | 2024-11-15 → 2024-11-25 (+10d) | 2024-11-15 → 2024-11-25 (+10d) |  | 4d → 0d | 87FF → 87 | baseline start 2024-11-02 → 2024-11-13; baseline finish 2024-11-02 → 2024-11-13 |
| 90 | Making necessery training arrangement - PPT + tutorial | 2024-11-16 → 2024-11-26 (+10d) | 2024-11-18 → 2024-11-27 (+9d) |  | 4d → 0d |  | baseline start 2024-11-04 → 2024-11-14; baseline finish 2024-11-05 → 2024-11-15 |
| 91 | Conducting CTM Training (Module wise) | 2024-11-19 → 2024-11-28 (+9d) | 2024-11-21 → 2024-12-02 (+11d) |  | 4d → 0d |  | baseline start 2024-11-06 → 2024-11-18; baseline finish 2024-11-08 → 2024-11-20 |
| 92 | Unit Testing by Core team | 2024-11-22 → 2024-12-03 (+11d) | 2024-11-28 → 2024-12-10 (+12d) |  | 343d → 39d |  | baseline start 2024-11-09 → 2024-11-21; baseline finish 2024-11-15 → 2024-11-28 |
| 93 | **Quality System Request / Initial Setup** | 2024-10-26 → 2024-10-29 (+3d) | 2024-10-26 → 2024-10-29 (+3d) |  | 370d → 68d |  | baseline start 2024-10-12 → 2024-10-17; baseline finish 2024-10-12 → 2024-10-17 |
| 94 | Execute Initial Setup of the Quality System via SAP Central Business Configuration | 2024-10-26 → 2024-10-29 (+3d) | 2024-10-26 → 2024-10-29 (+3d) |  | 375d → 73d |  | baseline start 2024-10-12 → 2024-10-17; baseline finish 2024-10-12 → 2024-10-17 |
| 95 | Request Quality System via Manage Your Solution App | 2024-10-26 → 2024-10-29 (+3d) | 2024-10-26 → 2024-10-29 (+3d) |  | 370d → 68d |  | baseline start 2024-10-12 → 2024-10-17; baseline finish 2024-10-12 → 2024-10-17 |
| 96 | **Quality System Initial Access** | 2024-10-26 → 2024-10-29 (+3d) | 2024-11-05 → 2024-11-08 (+3d) |  | 369d → 67d |  | baseline start 2024-10-12 → 2024-10-17; baseline finish 2024-10-19 → 2024-10-25 |
| 97 | Receive Quality System and Reset Password | 2024-10-28 → 2024-10-30 (+2d) | 2024-10-28 → 2024-10-30 (+2d) |  | 370d → 68d |  | baseline start 2024-10-14 → 2024-10-18; baseline finish 2024-10-14 → 2024-10-18 |
| 98 | Create Preset Configuration User in the Quality System via Manage Your Solution App | 2024-10-29 → 2024-11-04 (+6d) | 2024-10-29 → 2024-11-04 (+6d) |  | 372d → 70d |  | baseline start 2024-10-15 → 2024-10-21; baseline finish 2024-10-15 → 2024-10-21 |
| 99 | Define Preset Parameters and Trigger System Activation via Manage Your Solution App | 2024-10-30 → 2024-11-05 (+6d) | 2024-10-30 → 2024-11-05 (+6d) |  | 372d → 70d |  | baseline start 2024-10-16 → 2024-10-22; baseline finish 2024-10-16 → 2024-10-22 |
| 100 | **Create Users in the Quality Server** | 2024-10-26 → 2024-10-29 (+3d) | 2024-11-04 → 2024-11-07 (+3d) |  | 369d → 67d |  | baseline start 2024-10-12 → 2024-10-17; baseline finish 2024-10-18 → 2024-10-24 |
| 101 | **Finalize list of users for QAS** | 2024-10-26 → 2024-10-29 (+3d) | 2024-11-04 → 2024-11-07 (+3d) |  | 369d → 67d |  | baseline start 2024-10-12 → 2024-10-17; baseline finish 2024-10-18 → 2024-10-24 |
| 102 | **Provide user authorization** | 2024-10-26 → 2024-10-29 (+3d) | 2024-11-04 → 2024-11-07 (+3d) |  | 369d → 67d |  | baseline start 2024-10-12 → 2024-10-17; baseline finish 2024-10-18 → 2024-10-24 |
| 103 | Finalize user authorization | 2024-10-26 → 2024-10-29 (+3d) | 2024-10-28 → 2024-10-30 (+2d) |  | 369d → 67d |  | baseline start 2024-10-12 → 2024-10-17; baseline finish 2024-10-14 → 2024-10-18 |
| 104 | Create roles and authorization | 2024-10-29 → 2024-11-04 (+6d) | 2024-10-29 → 2024-11-04 (+6d) |  | 369d → 67d |  | baseline start 2024-10-15 → 2024-10-21; baseline finish 2024-10-15 → 2024-10-21 |
| 105 | Testing of roles and authorization | 2024-10-30 → 2024-11-05 (+6d) | 2024-11-02 → 2024-11-06 (+4d) |  | 369d → 67d |  | baseline start 2024-10-16 → 2024-10-22; baseline finish 2024-10-17 → 2024-10-23 |
| 106 | Deployment of roles to users | 2024-11-04 → 2024-11-07 (+3d) | 2024-11-04 → 2024-11-07 (+3d) |  | 369d → 67d |  | baseline start 2024-10-18 → 2024-10-24; baseline finish 2024-10-18 → 2024-10-24 |
| 107 | Self-Activation of Project Team Members in the Identity Authentication Service | 2024-11-05 → 2024-11-08 (+3d) | 2024-11-05 → 2024-11-08 (+3d) |  | 369d → 67d |  | baseline start 2024-10-19 → 2024-10-25; baseline finish 2024-10-19 → 2024-10-25 |
| 108 | **Required Configuration Before System Use - SAP S/4HANA Cloud** | 2024-10-29 → 2024-11-04 (+6d) | 2024-10-29 → 2024-11-04 (+6d) |  | 370d → 68d |  | baseline start 2024-10-15 → 2024-10-21; baseline finish 2024-10-15 → 2024-10-21 |
| 109 | Configure system | 2024-10-29 → 2024-11-04 (+6d) | 2024-10-29 → 2024-11-04 (+6d) |  | 370d → 68d |  | baseline start 2024-10-15 → 2024-10-21; baseline finish 2024-10-15 → 2024-10-21 |
| 110 | **Standard Integration Setup in the Quality/Test System** | 2024-10-30 → 2024-11-05 (+6d) | 2024-11-04 → 2024-11-07 (+3d) |  | 370d → 68d |  | baseline start 2024-10-16 → 2024-10-22; baseline finish 2024-10-18 → 2024-10-24 |
| 111 | Set Up Integration using Cloud Integration Automation Service (CIAS) | 2024-10-30 → 2024-11-05 (+6d) | 2024-10-30 → 2024-11-05 (+6d) |  | 370d → 68d |  | baseline start 2024-10-16 → 2024-10-22; baseline finish 2024-10-16 → 2024-10-22 |
| 112 | Set Up Employee Central Integration (JB1) | 2024-11-02 → 2024-11-06 (+4d) | 2024-11-02 → 2024-11-06 (+4d) |  | 370d → 68d |  | baseline start 2024-10-17 → 2024-10-23; baseline finish 2024-10-17 → 2024-10-23 |
| 113 | Set Up Integrations in the Quality/Test System | 2024-11-04 → 2024-11-07 (+3d) | 2024-11-04 → 2024-11-07 (+3d) |  | 370d → 68d |  | baseline start 2024-10-18 → 2024-10-24; baseline finish 2024-10-18 → 2024-10-24 |
| 114 | **System Integration Test** | 2024-10-26 → 2024-10-21 (-5d) | 2024-12-17 → 2024-12-31 (+14d) | 43d → 49d |  |  | baseline start 2024-10-12 → 2024-10-15; baseline finish 2024-12-04 → 2024-12-18 |
| 115 | **Integration test Plan** | 2024-10-26 → 2024-10-21 (-5d) | 2024-11-22 → 2024-12-04 (+12d) | 22d → 31d |  |  | baseline start 2024-10-12 → 2024-10-15; baseline finish 2024-11-11 → 2024-11-22 |
| 116 | Identify scenerios for Integration test | 2024-11-22 → 2024-12-03 (+11d) | 2024-11-22 → 2024-12-04 (+12d) | 1d → 2d | 4d → 0d |  | baseline start 2024-11-09 → 2024-11-21; baseline finish 2024-11-11 → 2024-11-22 |
| 117 | Write scripts for Integration test | 2024-11-22 → 2024-12-03 (+11d) | 2024-11-22 → 2024-12-03 (+11d) |  | 4d → 0d |  | baseline start 2024-11-09 → 2024-11-21; baseline finish 2024-11-11 → 2024-11-21 |
| 118 | **Master data** | 2024-11-02 → 2024-10-21 (-12d) | 2024-11-16 → 2024-11-22 (+6d) | 13d → 23d | 359d → 57d |  | baseline start 2024-10-22 → 2024-10-15; baseline finish 2024-11-07 → 2024-11-18 |
| 119 | Receipt Master Data from NL | 2024-11-02 → 2024-10-21 (-12d) | 2024-11-13 → 2024-11-19 (+6d) | 10d → 20d | 359d → 57d | 47FS+10d → 47 | was named Receipt Master Data from PA; baseline start 2024-10-22 → 2024-10-15; baseline finish 2024-11-04 → 2024-11-13 |
| 120 | Upload Master data in QAS | 2024-11-14 → 2024-11-20 (+6d) | 2024-11-16 → 2024-11-22 (+6d) |  | 359d → 57d |  | baseline start 2024-11-05 → 2024-11-14; baseline finish 2024-11-07 → 2024-11-18 |
| 121 | **Identity and Access Management Planning and Design** | 2024-10-26 → 2024-10-29 (+3d) | 2024-11-14 → 2024-11-27 (+13d) | 15d → 20d | 16d → 10d |  | baseline start 2024-10-12 → 2024-10-17; baseline finish 2024-11-06 → 2024-11-15 |
| 122 | Finalize list of users | 2024-10-26 → 2024-10-29 (+3d) | 2024-11-08 → 2024-11-20 (+12d) | 10d → 15d | 16d → 10d |  | baseline start 2024-10-12 → 2024-10-17; baseline finish 2024-10-29 → 2024-11-08 |
| 123 | Provide & Check roles and authorization | 2024-11-09 → 2024-11-21 (+12d) | 2024-11-14 → 2024-11-27 (+13d) |  | 16d → 10d |  | baseline start 2024-10-30 → 2024-11-11; baseline finish 2024-11-06 → 2024-11-15 |
| 124 | **Conduct System integration test** | 2024-11-23 → 2024-12-04 (+11d) | 2024-12-13 → 2024-12-23 (+10d) | 18d → 14d | 4d → 0d |  | baseline start 2024-11-12 → 2024-11-22; baseline finish 2024-12-04 → 2024-12-11 |
| 125 | Perform Integration testing by Consultant | 2024-11-23 → 2024-12-04 (+11d) | 2024-11-28 → 2024-12-11 (+13d) | 5d → 6d | 4d → 0d |  | baseline start 2024-11-12 → 2024-11-22; baseline finish 2024-11-19 → 2024-11-29 |
| 126 | Perform User Acceptance test - CTM | 2024-11-29 → 2024-12-12 (+13d) | 2024-12-10 → 2024-12-19 (+9d) | 10d → 6d | 4d → 0d |  | baseline start 2024-11-20 → 2024-12-02; baseline finish 2024-11-30 → 2024-12-09 |
| 127 | Resolving the issues, if any | 2024-11-29 → 2024-12-12 (+13d) | 2024-12-10 → 2024-12-19 (+9d) | 10d → 6d | 4d → 0d |  | baseline start 2024-11-20 → 2024-12-02; baseline finish 2024-11-30 → 2024-12-09 |
| 128 | Retesting of scenarios | 2024-12-11 → 2024-12-20 (+9d) | 2024-12-13 → 2024-12-23 (+10d) | 3d → 2d | 4d → 33d |  | baseline start 2024-12-02 → 2024-12-10; baseline finish 2024-12-04 → 2024-12-11 |
| 129 | UAT (by CTM) signoff | 2024-12-13 → 2024-12-23 (+10d) | 2024-12-13 → 2024-12-23 (+10d) |  | 4d → 33d |  | baseline start 2024-12-04 → 2024-12-11; baseline finish 2024-12-04 → 2024-12-11 |
| 130 | **ABAP Development - SIT Critical** | 2024-11-12 → 2024-11-18 (+6d) | 2024-12-17 → 2024-12-31 (+14d) |  | 305d → 23d |  | baseline start 2024-10-26 → 2024-11-06; baseline finish 2024-12-03 → 2024-12-18 |
| 131 | Develop reports | 2024-11-12 → 2024-11-18 (+6d) | 2024-12-10 → 2024-12-20 (+10d) |  | 305d → 23d |  | baseline start 2024-10-26 → 2024-11-06; baseline finish 2024-11-26 → 2024-12-10 |
| 132 | Testing by consultant | 2024-11-15 → 2024-11-21 (+6d) | 2024-12-13 → 2024-12-26 (+13d) |  | 333d → 31d |  | baseline start 2024-10-30 → 2024-11-11; baseline finish 2024-11-29 → 2024-12-13 |
| 133 | Testing by CTM | 2024-11-19 → 2024-11-26 (+7d) | 2024-12-17 → 2024-12-31 (+14d) |  | 333d → 31d |  | baseline start 2024-11-05 → 2024-11-14; baseline finish 2024-12-03 → 2024-12-18 |
| 134 | Sign off Development | 2024-12-17 → 2024-12-31 (+14d) | 2024-12-17 → 2024-12-31 (+14d) |  | 333d → 31d |  | baseline start 2024-12-03 → 2024-12-18; baseline finish 2024-12-03 → 2024-12-18 |
| 140 | **Cutover Strategy** | 2024-12-14 → 2024-12-20 (+6d) | 2024-12-14 → 2024-12-24 (+10d) | 1d → 3d | 4d → 0d |  | baseline start 2024-12-05 → 2024-12-10; baseline finish 2024-12-05 → 2024-12-12 |
| 141 | Discussion on cutover strategy | 2024-12-14 → 2024-12-20 (+6d) | 2024-12-14 → 2024-12-23 (+9d) | 1d → 2d | 4d → 0d | 129 → 127 | baseline start 2024-12-05 → 2024-12-10; baseline finish 2024-12-05 → 2024-12-11 |
| 142 | Cutover & data responsibility Plan | 2024-12-14 → 2024-12-24 (+10d) | 2024-12-14 → 2024-12-24 (+10d) |  | 4d → 0d | 141FF → 141 | baseline start 2024-12-05 → 2024-12-12; baseline finish 2024-12-05 → 2024-12-12 |
| 143 | Communication to Organisation for Cutover | 2024-12-14 → 2024-12-24 (+10d) | 2024-12-14 → 2024-12-24 (+10d) |  | 4d → 0d |  | baseline start 2024-12-05 → 2024-12-12; baseline finish 2024-12-05 → 2024-12-12 |
| 144 | **End user training plan** | 2024-11-29 → 2024-12-11 (+12d) | 2024-11-30 → 2024-12-12 (+12d) |  | 343d → 39d |  | baseline start 2024-11-16 → 2024-11-29; baseline finish 2024-11-18 → 2024-12-02 |
| 145 | Preparation of End User training plan | 2024-11-29 → 2024-12-11 (+12d) | 2024-11-30 → 2024-12-12 (+12d) |  | 343d → 39d |  | baseline start 2024-11-16 → 2024-11-29; baseline finish 2024-11-18 → 2024-12-02 |
| 146 | Communicate plan to NL | 2024-11-30 → 2024-12-12 (+12d) | 2024-11-30 → 2024-12-12 (+12d) |  | 343d → 39d |  | was named Communicate plan to PA; baseline start 2024-11-18 → 2024-12-02; baseline finish 2024-11-18 → 2024-12-02 |
| 147 | **Production System Request** | 2024-10-26 → 2024-10-29 (+3d) | 2024-10-28 → 2024-10-30 (+2d) |  | 372d → 70d |  | baseline start 2024-10-12 → 2024-10-17; baseline finish 2024-10-14 → 2024-10-18 |
| 148 | Request for Production System | 2024-10-26 → 2024-10-29 (+3d) | 2024-10-26 → 2024-10-29 (+3d) |  | 372d → 70d |  | baseline start 2024-10-12 → 2024-10-17; baseline finish 2024-10-12 → 2024-10-17 |
| 149 | Request Access to the SAP S/4HANA Cloud Release Assessment Tool. | 2024-10-28 → 2024-10-30 (+2d) | 2024-10-28 → 2024-10-30 (+2d) |  | 372d → 70d |  | baseline start 2024-10-14 → 2024-10-18; baseline finish 2024-10-14 → 2024-10-18 |

| ID | Task | Start | Finish | Duration | Total float | Predecessors | Other |
| --- | --- | --- | --- | --- | --- | --- | --- |
| 150 | **Production System Initial Access** | 2024-10-29 → 2024-11-04 (+6d) | 2024-10-30 → 2024-11-05 (+6d) |  | 372d → 70d |  | baseline start 2024-10-15 → 2024-10-21; baseline finish 2024-10-16 → 2024-10-22 |
| 151 | Receive Production System and Reset Password | 2024-10-29 → 2024-11-04 (+6d) | 2024-10-29 → 2024-11-04 (+6d) |  | 372d → 70d |  | baseline start 2024-10-15 → 2024-10-21; baseline finish 2024-10-15 → 2024-10-21 |
| 152 | Transport Initial Change Project from Q-System to P-System | 2024-10-30 → 2024-11-05 (+6d) | 2024-10-30 → 2024-11-05 (+6d) |  | 372d → 70d |  | baseline start 2024-10-16 → 2024-10-22; baseline finish 2024-10-16 → 2024-10-22 |
| 153 | Phase Closure & Signoff Phase deliverables | 2024-12-14 → 2024-12-24 (+10d) | 2024-12-14 → 2024-12-24 (+10d) |  | 335d → 35d |  | baseline start 2024-12-05 → 2024-12-12; baseline finish 2024-12-05 → 2024-12-12 |
| 154 | **Deliverables** | 2024-11-16 → 2024-11-25 (+9d) | 2024-12-14 → 2024-12-24 (+10d) | 25d → 22d | 335d → 35d |  | baseline start 2024-11-04 → 2024-11-13; baseline finish 2024-12-05 → 2024-12-12 |
| 155 | D: Test scripts | 2024-11-23 → 2024-12-04 (+11d) | 2024-11-23 → 2024-12-04 (+11d) |  | 353d → 49d |  | baseline start 2024-11-12 → 2024-11-22; baseline finish 2024-11-12 → 2024-11-22 |
| 156 | D: Unit test result document | 2024-11-16 → 2024-11-25 (+9d) | 2024-11-16 → 2024-11-25 (+9d) |  | 359d → 56d |  | baseline start 2024-11-04 → 2024-11-13; baseline finish 2024-11-04 → 2024-11-13 |
| 157 | D: Integration testing document | 2024-11-29 → 2024-12-12 (+13d) | 2024-11-29 → 2024-12-12 (+13d) |  | 348d → 43d |  | baseline start 2024-11-20 → 2024-12-02; baseline finish 2024-11-20 → 2024-12-02 |
| 158 | D: User Acceptance testing document | 2024-12-13 → 2024-12-23 (+10d) | 2024-12-13 → 2024-12-23 (+10d) |  | 336d → 36d |  | baseline start 2024-12-04 → 2024-12-11; baseline finish 2024-12-04 → 2024-12-11 |
| 159 | D: Final master data templates | 2024-12-14 → 2024-12-24 (+10d) | 2024-12-14 → 2024-12-24 (+10d) |  | 335d → 35d |  | baseline start 2024-12-05 → 2024-12-12; baseline finish 2024-12-05 → 2024-12-12 |
| 160 | D: Data migration strategy document | 2024-12-14 → 2024-12-24 (+10d) | 2024-12-14 → 2024-12-24 (+10d) |  | 335d → 35d |  | baseline start 2024-12-05 → 2024-12-12; baseline finish 2024-12-05 → 2024-12-12 |
| 161 | **Deploy** | 2024-12-02 → 2024-10-21 (-42d) | 2025-01-20 → 2025-01-10 (-10d) | 42d → 57d | 14d → 5d |  | baseline start 2024-11-19 → 2024-10-15; baseline finish 2025-01-07 → 2024-12-31 |
| 162 | **ABAP Developments Pre Go Live** | 2024-12-11 → 2024-12-12 (+1d) | 2025-01-20 → 2025-01-10 (-10d) | 34d → 21d | 305d → 23d |  | baseline start 2024-11-27 → 2024-12-02; baseline finish 2025-01-06 → 2024-12-31 |
| 163 | Develop reports | 2024-12-11 → 2024-12-12 (+1d) | 2025-01-11 → 2025-01-02 (-9d) | 27d → 15d | 305d → 23d | 131 → 131FS-7d | baseline start 2024-11-27 → 2024-12-02; baseline finish 2024-12-28 → 2024-12-20 |
| 164 | Testing by consultant | 2024-12-14 → 2024-12-17 (+3d) | 2025-01-15 → 2025-01-07 (-8d) | 27d → 15d | 305d → 23d |  | baseline start 2024-11-30 → 2024-12-05; baseline finish 2025-01-01 → 2024-12-26 |
| 165 | Testing by CTM | 2024-12-17 → 2024-12-19 (+2d) | 2025-01-17 → 2025-01-09 (-8d) | 27d → 15d | 305d → 23d |  | baseline start 2024-12-03 → 2024-12-09; baseline finish 2025-01-03 → 2024-12-30 |
| 166 | Sign off Development | 2025-01-18 → 2025-01-10 (-8d) | 2025-01-20 → 2025-01-10 (-10d) | 2d → 1d | 305d → 23d |  | baseline start 2025-01-04 → 2024-12-31; baseline finish 2025-01-06 → 2024-12-31 |
| 167 | **End User Training** | 2024-12-16 → 2024-12-26 (+10d) | 2024-12-27 → 2025-01-08 (+12d) |  | 324d → 24d |  | baseline start 2024-12-06 → 2024-12-13; baseline finish 2024-12-17 → 2024-12-27 |
| 168 | Prepare end user training manual | 2024-12-16 → 2024-12-26 (+10d) | 2024-12-17 → 2024-12-27 (+10d) |  | 324d → 24d |  | baseline start 2024-12-06 → 2024-12-13; baseline finish 2024-12-07 → 2024-12-16 |
| 169 | Conduct end user training | 2024-12-18 → 2024-12-30 (+12d) | 2024-12-23 → 2025-01-03 (+11d) |  | 324d → 24d |  | baseline start 2024-12-09 → 2024-12-17; baseline finish 2024-12-13 → 2024-12-23 |
| 170 | Conduct training to HODs/Management | 2024-12-24 → 2025-01-06 (+13d) | 2024-12-27 → 2025-01-08 (+12d) |  | 325d → 25d |  | baseline start 2024-12-14 → 2024-12-24; baseline finish 2024-12-17 → 2024-12-27 |
| 171 | **Production Environment Preparation** | 2024-12-14 → 2024-12-24 (+10d) | 2024-12-17 → 2024-12-27 (+10d) |  | 333d → 33d |  | baseline start 2024-12-05 → 2024-12-12; baseline finish 2024-12-07 → 2024-12-16 |
| 172 | Transport final configurations | 2024-12-14 → 2024-12-24 (+10d) | 2024-12-14 → 2024-12-24 (+10d) |  | 333d → 33d |  | baseline start 2024-12-05 → 2024-12-12; baseline finish 2024-12-05 → 2024-12-12 |
| 173 | Maintain number ranges | 2024-12-16 → 2024-12-26 (+10d) | 2024-12-16 → 2024-12-26 (+10d) |  | 333d → 33d |  | baseline start 2024-12-06 → 2024-12-13; baseline finish 2024-12-06 → 2024-12-13 |
| 174 | Maintain client specific data | 2024-12-17 → 2024-12-27 (+10d) | 2024-12-17 → 2024-12-27 (+10d) |  | 333d → 33d |  | baseline start 2024-12-07 → 2024-12-16; baseline finish 2024-12-07 → 2024-12-16 |
| 175 | **User creation** | 2024-12-02 → 2024-12-13 (+11d) | 2024-12-28 → 2025-01-09 (+12d) | 23d → 19d | 324d → 24d |  | baseline start 2024-11-19 → 2024-12-03; baseline finish 2024-12-18 → 2024-12-30 |
| 176 | Finalize list of users for production enviornment | 2024-12-02 → 2024-12-13 (+11d) | 2024-12-03 → 2024-12-16 (+13d) |  | 343d → 39d |  | baseline start 2024-11-19 → 2024-12-03; baseline finish 2024-11-20 → 2024-12-04 |
| 177 | Finalise Authorization Matrix | 2024-12-04 → 2024-12-17 (+13d) | 2024-12-05 → 2024-12-18 (+13d) |  | 343d → 39d |  | baseline start 2024-11-21 → 2024-12-05; baseline finish 2024-11-22 → 2024-12-06 |
| 178 | Check roles and authorization | 2024-12-24 → 2025-01-06 (+13d) | 2024-12-28 → 2025-01-09 (+12d) |  | 324d → 24d |  | baseline start 2024-12-14 → 2024-12-24; baseline finish 2024-12-18 → 2024-12-30 |
| 179 | **Data preparation and upload** | 2024-12-07 → 2024-10-21 (-47d) |  | 26d → 54d | 9d → 5d |  | baseline start 2024-11-28 → 2024-10-15; baseline finish 2025-01-06 → 2024-12-26 |
| 180 | Receipt of master data | 2024-12-07 → 2024-10-21 (-47d) | 2024-12-18 → 2024-12-17 (-1d) | 10d → 40d | 9d → 5d | 47FS+40d → 47 | baseline start 2024-11-28 → 2024-10-15; baseline finish 2024-12-20 → 2024-12-11 |
| 181 | Validate & cleanse master data | 2024-12-19 → 2024-12-18 (-1d) |  | 1d → 2d | 9d → 5d |  | baseline start 2024-12-21 → 2024-12-12; baseline finish 2024-12-21 → 2024-12-13 |
| 182 | Upload master data in Production |  | 2024-12-24 → 2024-12-26 (+2d) |  | 9d → 5d |  | baseline start 2024-12-23 → 2024-12-16; baseline finish 2024-12-27 → 2024-12-19 |
| 183 | Confirm uploaded master data | 2024-12-26 → 2024-12-27 (+1d) | 2024-12-26 → 2024-12-27 (+1d) |  | 326d → 33d |  | baseline start 2024-12-28 → 2024-12-20; baseline finish 2024-12-28 → 2024-12-20 |
| 184 | Receipt of cutover data | 2024-12-16 → 2024-12-26 (+10d) | 2024-12-31 → 2025-01-02 (+2d) | 13d → 6d | 4d → 0d |  | baseline start 2024-12-06 → 2024-12-13; baseline finish 2024-12-30 → 2024-12-20 |
| 185 | Validate & cleanse cutover data | 2025-01-01 → 2024-12-26 (-6d) | 2025-01-07 → 2025-01-02 (-5d) |  | 316d → 29d | 184 → 143 | baseline start 2024-12-31 → 2024-12-13; baseline finish 2025-01-06 → 2024-12-20 |
| 186 | Upload cutover data in production | 2025-01-01 → 2025-01-03 (+2d) | 2025-01-04 → 2025-01-07 (+3d) | 4d → 3d | 4d → 0d |  | baseline start 2024-12-31 → 2024-12-23; baseline finish 2025-01-06 → 2024-12-26 |
| 187 | Check and validate uploaded data | 2025-01-04 → 2025-01-07 (+3d) | 2025-01-04 → 2025-01-07 (+3d) |  | 4d → 0d |  | baseline start 2025-01-06 → 2024-12-26; baseline finish 2025-01-06 → 2024-12-26 |
| 188 | **Deliverables** | 2024-12-04 → 2024-12-17 (+13d) | 2024-12-28 → 2025-01-01 (+4d) | 21d → 11d | 324d → 30d |  | baseline start 2024-11-21 → 2024-12-05; baseline finish 2024-12-31 → 2024-12-24 |
| 189 | D: End user training manual | 2024-12-18 → 2024-12-30 (+12d) | 2024-12-20 → 2025-01-01 (+12d) |  | 330d → 30d |  | baseline start 2024-12-09 → 2024-12-17; baseline finish 2024-12-11 → 2024-12-19 |
| 190 | D: Data migration plan & checklist | 2024-12-19 → 2024-12-18 (-1d) | 2024-12-21 → 2024-12-20 (-1d) |  | 329d → 37d |  | baseline start 2024-12-21 → 2024-12-12; baseline finish 2024-12-24 → 2024-12-16 |
| 191 | D: Master data upload programs | 2024-12-26 → 2024-12-27 (+1d) | 2024-12-28 → 2024-12-31 (+3d) |  | 324d → 31d |  | baseline start 2024-12-28 → 2024-12-20; baseline finish 2024-12-31 → 2024-12-24 |
| 192 | D: Sample data upload validation | 2024-12-26 → 2024-12-27 (+1d) | 2024-12-26 → 2024-12-27 (+1d) |  | 326d → 33d |  | baseline start 2024-12-28 → 2024-12-20; baseline finish 2024-12-28 → 2024-12-20 |
| 193 | D: Final SAP Authorization matrix | 2024-12-04 → 2024-12-17 (+13d) | 2024-12-04 → 2024-12-17 (+13d) |  | 344d → 40d |  | baseline start 2024-11-21 → 2024-12-05; baseline finish 2024-11-21 → 2024-12-05 |
| 194 | **Phase Closure & Sign Off Phase Deliverables** | 2025-01-06 → 2025-01-08 (+2d) | 2025-01-06 → 2025-01-09 (+3d) | 1d → 2d | 4d → 0d |  | baseline start 2025-01-07 → 2024-12-27; baseline finish 2025-01-07 → 2024-12-30 |
| 195 | Deploy signoff | 2025-01-06 → 2025-01-08 (+2d) | 2025-01-06 → 2025-01-08 (+2d) |  | 4d → 0d |  | baseline start 2025-01-07 → 2024-12-27; baseline finish 2025-01-07 → 2024-12-27 |
| 196 | Completion of Final Preparation (Deploy) Phase | 2025-01-06 → 2025-01-09 (+3d) | 2025-01-06 → 2025-01-09 (+3d) |  | 4d → 0d | 195FF → 195 | baseline start 2025-01-07 → 2024-12-30; baseline finish 2025-01-07 → 2024-12-30 |
| 197 | Go Live | 2025-01-07 → 2025-01-10 (+3d) | 2025-01-07 → 2025-01-10 (+3d) |  | 4d → 0d |  | baseline start 2025-01-08 → 2024-12-31; baseline finish 2025-01-08 → 2024-12-31 |
| 198 | **Stabilization** | 2025-01-08 → 2025-01-13 (+5d) | 2025-02-07 → 2025-02-12 (+5d) | 27d → 23d | 4d → 0d |  | baseline start 2025-01-09 → 2025-01-01; baseline finish 2025-02-08 → 2025-01-31 |
| 199 | Stabilization (Post Go live Support) | 2025-01-08 → 2025-01-13 (+5d) | 2025-02-07 → 2025-02-12 (+5d) | 27d → 23d | 4d → 0d |  | was named Stabilization; baseline start 2025-01-09 → 2025-01-01; baseline finish 2025-02-08 → 2025-01-31 |
| 200 | **Deliverables** | 2025-01-08 → 2025-01-13 (+5d) | 2025-02-07 → 2025-02-12 (+5d) | 27d → 23d | 289d → 0d |  | baseline start 2025-01-09 → 2025-01-01; baseline finish 2025-02-08 → 2025-01-31 |
| 201 | D: Issue list with resolution status | 2025-01-08 → 2025-01-13 (+5d) | 2025-02-07 → 2025-02-12 (+5d) | 27d → 23d | 289d → 0d |  | baseline start 2025-01-09 → 2025-01-01; baseline finish 2025-02-08 → 2025-01-31 |
| 202 | D: Configuration documents | 2025-01-08 → 2025-01-13 (+5d) | 2025-02-07 → 2025-02-12 (+5d) | 27d → 23d | 289d → 0d |  | baseline start 2025-01-09 → 2025-01-01; baseline finish 2025-02-08 → 2025-01-31 |
| 203 | D: FS & TS | 2025-01-08 → 2025-01-13 (+5d) | 2025-02-07 → 2025-02-12 (+5d) | 27d → 23d | 289d → 0d |  | baseline start 2025-01-09 → 2025-01-01; baseline finish 2025-02-08 → 2025-01-31 |
| 204 | D: Cre team training document | 2025-01-08 → 2025-01-13 (+5d) | 2025-02-07 → 2025-02-12 (+5d) | 27d → 23d | 289d → 0d |  | baseline start 2025-01-09 → 2025-01-01; baseline finish 2025-02-08 → 2025-01-31 |

## Version 4 (data date 2022-10-13, saved 2024-10-30, file TASK_00631275_1_03112024192136.mpp)

Note of the change: Add project files.

Last finish 2025-02-12 → 2026-03-09 (+390d). Complete tasks 36 → 43.

Added:

| ID | Task | Duration | Start | Finish | Predecessors | Constraint |
| --- | --- | --- | --- | --- | --- | --- |
| 49 | Integration with ASP/GSP | 1d | 2024-10-09 A | 2024-10-09 A | 40 |  |
| 50 | Integration with bank host to host (upto 3) | 5d | 2024-10-09 A | 2024-10-26 | 40 |  |
| 51 | Integration with Primavera | 4d | 2024-10-11 A | 2024-10-25 A | 40 |  |
| 52 | Integration with third party payroll | 5d | 2024-10-11 A | 2024-10-26 | 40 |  |
| 200 | One month extended support | 24d | 2025-02-12 | 2025-03-11 | 193 |  |
| 201 | **Phase 2: One Year AMC** | 261d | 2025-03-13 | 2026-03-09 |  |  |
| 202 | AMC Support | 261d | 2025-03-13 | 2026-03-09 | 200 | finish no earlier than 2026-03-09 |

Removed: 50 Integration with bank host to host (upto2); 51 Integration with HRMS (Payroll); 52 Integration with Cloud Steer CRM; 53 Integration with DMS; 135 Third Party Interface; 136 Development; 137 Testing by consultant; 138 Testing by CTM; 139 Sign off Development

Changed:

| ID | Task | Start | Finish | Duration | Complete | Total float | Predecessors | Other |
| --- | --- | --- | --- | --- | --- | --- | --- | --- |
| 1 | **SAP Implementation at PA** | 2024-09-05 A → 2024-09-02 A (-3d) | 2025-02-12 → 2026-03-09 (+390d) | 110d → 418d | 10% → 13% |  |  | was named SAP Implementation at NEO LIV; baseline start 2024-09-05 → 2024-09-02; baseline finish 2025-01-31 → 2026-03-09 |
| 2 | **Phase 1: S4 HANA Implementation (Public Cloud)** | 2024-09-05 A → 2024-09-02 A (-3d) | 2025-02-12 → 2025-03-11 (+27d) | 110d → 156d | 10% → 18% | 0d → 262d |  | was named Wave 1A: S4 HANA Implementation (Public Cloud); baseline start 2024-09-05 → 2024-09-02; baseline finish 2025-01-31 → 2025-03-08 |
| 3 | **Implementation** | 2024-09-05 A → 2024-09-02 A (-3d) | 2025-01-10 → 2025-01-27 (+17d) | 87d → 119d | 12% → 24% | 23d → 299d |  | baseline start 2024-09-05 → 2024-09-02; baseline finish 2024-12-31 → 2025-01-07 |
| 4 | **Prepare** | 2024-09-05 A → 2024-09-02 A (-3d) | 2024-09-23 A → 2024-09-10 A (-13d) | 12d → 7d |  |  |  | baseline start 2024-09-05 → 2024-09-02; baseline finish 2024-09-11 → 2024-09-10 |
| 5 | **Project Kick Off and On-Boarding** | 2024-09-05 A → 2024-09-02 A (-3d) | 2024-09-05 A → 2024-09-10 A (+5d) | 1d → 7d |  |  |  | baseline start 2024-09-05 → 2024-09-02; baseline finish 2024-09-05 → 2024-09-09 |
| 6 | On-board Project Team | 2024-09-05 A → 2024-09-02 A (-3d) | 2024-09-05 A → 2024-09-10 A (+5d) | 1d → 7d |  |  |  | constraint start no earlier than 2024-09-05 → finish no earlier than 2024-09-09; baseline start 2024-09-05 → 2024-09-02; baseline finish 2024-09-05 → 2024-09-09 |
| 7 | Conduct project kickoff |  |  |  |  |  | 6SS → 6SS+3d | was named Conduct Kickoff Workshop; constraint none → start no earlier than 2024-09-05 |
| 8 | **Project Plan** | 2024-09-05 A → 2024-09-02 A (-3d) | 2024-09-19 A → 2024-09-05 A (-14d) | 10d → 4d |  |  |  | baseline start 2024-09-05 → 2024-09-02; baseline finish 2024-09-11 → 2024-09-05 |
| 9 | Prepare & submit Initial project plan | 2024-09-05 A → 2024-09-02 A (-3d) | 2024-09-06 A → 2024-09-02 A (-4d) | 2d → 1d |  |  |  | baseline start 2024-09-05 → 2024-09-02; baseline finish 2024-09-06 → 2024-09-02 |
| 10 | Review project plan | 2024-09-09 A → 2024-09-03 A (-6d) | 2024-09-09 A → 2024-09-03 A (-6d) |  |  |  |  | baseline start 2024-09-09 → 2024-09-03; baseline finish 2024-09-09 → 2024-09-03 |
| 11 | Make necessary changes in the plan | 2024-09-10 A → 2024-09-04 A (-6d) | 2024-09-10 A → 2024-09-04 A (-6d) |  |  |  |  | baseline start 2024-09-10 → 2024-09-04; baseline finish 2024-09-10 → 2024-09-04 |
| 12 | Submit revised plan | 2024-09-10 A → 2024-09-04 A (-6d) | 2024-09-10 A → 2024-09-04 A (-6d) |  |  |  |  | baseline start 2024-09-10 → 2024-09-04; baseline finish 2024-09-10 → 2024-09-04 |
| 13 | Approval of project plan by PA | 2024-09-11 A → 2024-09-05 A (-6d) | 2024-09-19 A → 2024-09-05 A (-14d) | 6d → 1d |  |  |  | was named Approval of project plan by NL; baseline start 2024-09-11 → 2024-09-05; baseline finish 2024-09-11 → 2024-09-05 |
| 14 | **Project Governance** | 2024-09-09 A → 2024-09-06 A (-3d) |  | 1d → 2d |  |  |  |  |
| 15 | Establish Project Governance Mechanism | 2024-09-09 A → 2024-09-06 A (-3d) |  |  |  |  |  |  |
| 16 | Define Project Communications and Reporting | 2024-09-09 A → 2024-09-06 A (-3d) |  |  |  |  |  |  |
| 17 | **Project Standards, Infrastructure & Solution** |  | 2024-09-09 A → 2024-09-06 A (-3d) | 2d → 1d |  |  |  | baseline finish 2024-09-09 → 2024-09-06 |
| 18 | Set Up Project Team Logistics and Infrastructure |  | 2024-09-09 A → 2024-09-06 A (-3d) | 2d → 1d |  |  |  | baseline finish 2024-09-09 → 2024-09-06 |
| 19 | Create a Document Repository for the Implementation Project Team |  | 2024-09-09 A → 2024-09-06 A (-3d) | 2d → 1d |  |  |  | baseline finish 2024-09-09 → 2024-09-06 |
| 20 | **Fit-to-Standard Analysis Preparation** | 2024-09-10 A → 2024-09-09 A (-1d) | 2024-09-12 A → 2024-09-09 A (-3d) | 3d → 1d |  |  |  | baseline start 2024-09-10 → 2024-09-09; baseline finish 2024-09-10 → 2024-09-09 |
| 21 | Prepare for Fit-to-Standard Workshops | 2024-09-10 A → 2024-09-09 A (-1d) | 2024-09-12 A → 2024-09-09 A (-3d) | 3d → 1d |  |  |  | baseline start 2024-09-10 → 2024-09-09; baseline finish 2024-09-10 → 2024-09-09 |
| 22 | **Phase Closure and Sign-Off Phase Deliverables** | 2024-09-23 A → 2024-09-10 A (-13d) | 2024-09-23 A → 2024-09-10 A (-13d) |  |  |  |  | baseline start 2024-09-11 → 2024-09-10; baseline finish 2024-09-11 → 2024-09-10 |
| 23 | Prepare Phase Signoff | 2024-09-23 A → 2024-09-10 A (-13d) | 2024-09-23 A → 2024-09-10 A (-13d) | 1d → 0d |  |  |  | baseline start 2024-09-11 → 2024-09-10; baseline finish 2024-09-11 → 2024-09-10 |
| 24 | **Deliverables** | 2024-09-23 A → 2024-09-10 A (-13d) | 2024-09-23 A → 2024-09-10 A (-13d) |  |  |  |  | baseline start 2024-09-11 → 2024-09-10; baseline finish 2024-09-11 → 2024-09-10 |
| 25 | D: Baseline Project Plan | 2024-09-23 A → 2024-09-10 A (-13d) | 2024-09-23 A → 2024-09-10 A (-13d) |  |  |  |  | baseline start 2024-09-11 → 2024-09-10; baseline finish 2024-09-11 → 2024-09-10 |
| 26 | D: Project kickoff presentation | 2024-09-23 A → 2024-09-10 A (-13d) | 2024-09-23 A → 2024-09-10 A (-13d) |  |  |  |  | baseline start 2024-09-11 → 2024-09-10; baseline finish 2024-09-11 → 2024-09-10 |
| 27 | **Explore** | 2024-09-09 A → 2024-09-02 A (-7d) | 2024-10-28 → 2024-11-04 (+7d) | 34d → 48d | 52% → 71% | 74d → 370d |  | baseline start 2024-09-09 → 2024-09-10; baseline finish 2024-10-16 → 2024-10-11 |
| 28 | **Requirement gathering** | 2024-09-09 A → 2024-09-02 A (-7d) | 2024-09-12 A → 2024-09-17 A (+5d) | 4d → 12d |  |  |  | baseline start 2024-09-09 → 2024-09-10; baseline finish 2024-09-12 → 2024-09-11 |
| 29 | Review AS IS document | 2024-09-09 A → 2024-09-02 A (-7d) | 2024-09-10 A → 2024-09-17 A (+7d) | 2d → 6d |  |  | 7SS+2d → 21 | baseline start 2024-09-09 → 2024-09-10; baseline finish 2024-09-10 → 2024-09-11 |
| 30 | Update AS IS document as per discussion | 2024-09-11 A → 2024-09-02 A (-9d) | 2024-09-12 A → 2024-09-17 A (+5d) | 2d → 12d |  |  | 29 → 29SS | baseline start 2024-09-11 → 2024-09-10; baseline finish 2024-09-12 → 2024-09-11 |
| 31 | **Fit-to-Standard analysis** | 2024-09-16 A → 2024-09-17 A (+1d) | 2024-09-19 A → 2024-09-27 A (+8d) | 3d → 9d |  |  |  | baseline start 2024-09-16 → 2024-09-12; baseline finish 2024-09-19 → 2024-09-16 |
| 32 | Conduct workshop for all modules | 2024-09-16 A → 2024-09-17 A (+1d) | 2024-09-19 A → 2024-09-27 A (+8d) | 3d → 8d |  |  | 30FS+1d → 30 | baseline start 2024-09-16 → 2024-09-12; baseline finish 2024-09-19 → 2024-09-16 |
| 33 | **Fit to Standard analysis documentation** | 2024-09-20 A → 2024-09-16 A (-4d) | 2024-10-22 → 2024-11-04 (+13d) | 22d → 38d | 85% → 51% | 78d → 370d |  | baseline start 2024-09-20 → 2024-09-17; baseline finish 2024-10-15 → 2024-10-11 |
| 34 | Document Initial Configuration Settings for SAP Central Business Configuration | 2024-09-20 A → 2024-09-16 A (-4d) | 2024-09-23 A → 2024-09-16 A (-7d) | 2d → 1d |  |  |  | baseline start 2024-09-20 → 2024-09-17; baseline finish 2024-09-23 → 2024-09-18 |
| 35 | Document Scope via SAP Central Business Configuration | 2024-09-24 A → 2024-09-17 A (-7d) | 2024-09-25 A → 2024-09-19 A (-6d) | 2d → 3d |  |  |  | baseline start 2024-09-24 → 2024-09-19; baseline finish 2024-09-25 → 2024-09-20 |
| 36 | **Document and Maintain Business Process Flows** | 2024-09-24 A → 2024-09-20 A (-4d) | 2024-10-21 → 2024-11-04 (+14d) | 19d → 34d | 94% → 65% | 78d → 370d |  | baseline start 2024-09-20 → 2024-09-17; baseline finish 2024-10-09 → 2024-10-04 |
| 37 | Prepare fit-to-standard Document and KDS | 2024-09-24 A → 2024-09-20 A (-4d) | 2024-09-28 A → 2024-10-01 A (+3d) | 4d → 2.5d |  |  |  | was named Prepare BBP Document and KDS; baseline start 2024-09-20 → 2024-09-17; baseline finish 2024-09-26 → 2024-09-23 |
| 38 | Submition of Fit-to-standard and KDS | 2024-09-30 A → 2024-09-23 A (-7d) | 2024-09-30 A → 2024-10-01 A (+1d) | 1d → 0d |  |  |  | was named Submition of BBP and KDS; baseline start 2024-09-27 → 2024-09-24; baseline finish 2024-09-27 → 2024-09-24 |
| 39 | Review of fit-to-standard & KDS by CTM | 2024-10-04 A → 2024-09-25 A (-9d) | 2024-10-14 A → 2024-10-02 A (-12d) | 7d → 0d |  |  |  | was named Review of BBP & KDS by CTM; baseline start 2024-09-30 → 2024-09-25; baseline finish 2024-10-07 → 2024-10-01 |
| 40 | Solution Walkthrough | 2024-10-15 A → 2024-10-03 A (-12d) | 2024-10-18 A → 2024-10-21 A (+3d) | 4d → 16d |  |  |  | was named BBP Walkthrough; constraint none → finish no earlier than 2024-10-21; baseline start 2024-10-08 → 2024-10-03; baseline finish 2024-10-08 → 2024-10-03 |
| 41 | Fit-to-Standard document Signoff | 2024-10-21 → 2024-10-22 A (+1d) | 2024-10-21 → 2024-11-04 (+14d) | 1d → 10d |  | 78d → 372d |  | was named BBP Signff; constraint none → finish no earlier than 2024-11-04; baseline start 2024-10-09 → 2024-10-04; baseline finish 2024-10-09 → 2024-10-04 |
| 42 | Document Configuration Values | 2024-10-21 → 2024-10-22 A (+1d) | 2024-10-22 → 2024-11-04 (+13d) | 2d → 10d |  | 78d → 372d |  | constraint none → finish no earlier than 2024-11-04; baseline start 2024-10-09 → 2024-10-04; baseline finish 2024-10-10 → 2024-10-05 |
| 43 | **Data migration requirements** | 2024-10-16 A → 2024-10-07 A (-9d) |  | 3d → 11d |  |  |  | was named Document Master Data Requirements; baseline start 2024-10-11 → 2024-10-07; baseline finish 2024-10-14 → 2024-10-09 |
| 44 | Identify master data requirement | 2024-10-16 A → 2024-10-07 A (-9d) | 2024-10-17 A → 2024-10-07 A (-10d) |  |  |  |  | was named Identify masterdata requirement; baseline start 2024-10-11 → 2024-10-07; baseline finish 2024-10-11 → 2024-10-07 |
| 45 | Prepare and explain master data template | 2024-10-17 A → 2024-10-10 A (-7d) | 2024-10-17 A → 2024-10-18 A (+1d) | 1d → 8d |  |  | 44SS → 44 | was named Prepare and explain masterdata template; baseline start 2024-10-11 → 2024-10-08; baseline finish 2024-10-11 → 2024-10-09 |
| 46 | Circulate master data template | 2024-10-18 A → 2024-10-10 A (-8d) |  | 1d → 8d |  |  | 45 → 45FF | was named Circulate masterdata template; baseline start 2024-10-14 → 2024-10-09; baseline finish 2024-10-14 → 2024-10-09 |
| 47 | Confirm Backlog and prioritise (SIT/UAT, Golive, Post-Golive) | 2024-10-21 → 2024-10-11 A (-10d) | 2024-10-21 → 2024-11-04 (+14d) | 1d → 12d |  | 79d → 0d |  | constraint none → finish no earlier than 2024-11-04; baseline start 2024-10-15 → 2024-10-10; baseline finish 2024-10-15 → 2024-10-11 |
| 48 | **Integration Planning and Design** | 2024-10-21 → 2024-10-09 A (-12d) | 2024-10-25 → 2024-10-26 (+1d) | 5d → 16d | 0% → 33% | 0d → 375d |  | baseline start 2024-10-09 → 2024-10-04; baseline finish 2024-10-15 → 2024-10-09 |
| 53 | **Getting Started with your SAP Implementation** | 2024-09-26 → 2024-10-07 A (+11d) | 2024-10-04 → 2024-10-07 A (+3d) | 6d → 1d | 0% → 100% | 90d → none |  | baseline start 2024-09-26 → 2024-09-23; baseline finish 2024-10-04 → 2024-10-01 |
| 54 | Review Overview Documentation | 2024-09-26 → 2024-10-07 A (+11d) | 2024-09-27 → 2024-10-07 A (+10d) | 2d → 1d | 0% → 100% | 90d → none |  | baseline start 2024-09-26 → 2024-09-23; baseline finish 2024-09-27 → 2024-09-24 |
| 55 | Organize Provisioning Emails | 2024-09-30 → 2024-10-07 A (+7d) | 2024-10-01 → 2024-10-07 A (+6d) | 2d → 1d | 0% → 100% | 90d → none |  | baseline start 2024-09-30 → 2024-09-25; baseline finish 2024-10-01 → 2024-09-27 |
| 56 | Ensure Project Team Members Access to the SAP Support Portal, SAP Best Practices Explorer, and SAP Customer Communities | 2024-10-03 → 2024-10-07 A (+4d) | 2024-10-04 → 2024-10-07 A (+3d) | 2d → 1d | 0% → 100% | 90d → none |  | baseline start 2024-10-03 → 2024-09-30; baseline finish 2024-10-04 → 2024-10-01 |
| 57 | **SAP Cloud ALM Onboarding** | 2024-10-07 A → 2024-09-03 A (-34d) | 2024-10-09 A → 2024-09-13 A (-26d) | 3d → 9d |  |  |  | baseline start 2024-10-07 → 2024-10-03; baseline finish 2024-10-08 → 2024-10-04 |
| 58 | Request SAP Cloud ALM Tenant | 2024-10-07 A → 2024-09-03 A (-34d) | 2024-10-08 A → 2024-09-13 A (-25d) | 2d → 9d |  |  |  | baseline start 2024-10-07 → 2024-10-03; baseline finish 2024-10-07 → 2024-10-03 |
| 59 | Access SAP Cloud ALM and Create Users | 2024-10-08 A → 2024-09-13 A (-25d) | 2024-10-09 A → 2024-09-13 A (-26d) |  |  |  |  | baseline start 2024-10-08 → 2024-10-04; baseline finish 2024-10-08 → 2024-10-04 |
| 60 | **Initial System Access for Central Business Configuration** | 2024-10-15 A → 2024-09-03 A (-42d) | 2024-10-17 A → 2024-09-19 A (-28d) | 3d → 13d |  |  |  | baseline start 2024-10-09 → 2024-10-05; baseline finish 2024-10-11 → 2024-10-08 |
| 61 | Access the SAP Central Business Configuration | 2024-10-15 A → 2024-09-03 A (-42d) | 2024-10-15 A → 2024-09-10 A (-35d) | 1d → 6d |  |  |  | baseline start 2024-10-09 → 2024-10-05; baseline finish 2024-10-09 → 2024-10-05 |
| 62 | Set Up Starter Project in SAP Central Business Configuration | 2024-10-16 A → 2024-09-11 A (-35d) | 2024-10-16 A → 2024-09-11 A (-35d) |  |  |  |  | baseline start 2024-10-10 → 2024-10-07; baseline finish 2024-10-10 → 2024-10-07 |
| 63 | Set Up SAP Central Business Configuration Integration | 2024-10-17 A → 2024-09-13 A (-34d) | 2024-10-17 A → 2024-09-19 A (-28d) | 1d → 5d |  |  |  | baseline start 2024-10-11 → 2024-10-08; baseline finish 2024-10-11 → 2024-10-08 |
| 64 | **Initial System Access for SAP S/4HANA Cloud** | 2024-10-17 A → 2024-09-03 A (-44d) | 2024-10-18 A → 2024-09-20 A (-28d) | 2d → 14d |  |  |  | baseline start 2024-10-14 → 2024-09-12; baseline finish 2024-10-16 → 2024-09-16 |
| 65 | Access Starter System and Reset Password | 2024-10-17 A → 2024-09-03 A (-44d) | 2024-10-18 A → 2024-09-10 A (-38d) | 1d → 6d |  |  | 63 → 29 | baseline start 2024-10-14 → 2024-09-12; baseline finish 2024-10-14 → 2024-09-12 |
| 66 | Create Users in the Starter System | 2024-10-17 A → 2024-09-10 A (-37d) | 2024-10-18 A → 2024-09-11 A (-37d) | 0d → 1d |  |  |  | baseline start 2024-10-15 → 2024-09-13; baseline finish 2024-10-15 → 2024-09-13 |
| 67 | Self-Activation of Project Team Members in the Identity Authentication Service | 2024-10-18 A → 2024-09-20 A (-28d) | 2024-10-18 A → 2024-09-20 A (-28d) | 0d → 1d |  |  |  | baseline start 2024-10-16 → 2024-09-16; baseline finish 2024-10-16 → 2024-09-16 |
| 68 | **Phase Closure and Sign-Off Phase Deliverables** | 2024-10-28 → 2024-11-04 (+7d) | 2024-10-28 → 2024-11-04 (+7d) |  |  | 10d → 13d |  | baseline start 2024-10-16 → 2024-10-11; baseline finish 2024-10-16 → 2024-10-11 |
| 69 | Explore Phase Signoff | 2024-10-28 → 2024-11-04 (+7d) | 2024-10-28 → 2024-11-04 (+7d) |  |  | 10d → 12d | Integration with DMS → 47FF | baseline start 2024-10-16 → 2024-10-11; baseline finish 2024-10-16 → 2024-10-11 |
| 70 | **Deliverables** | 2024-10-21 → 2024-09-27 A (-24d) | 2024-10-22 → 2024-10-21 A (-1d) | 2d → 19d | 0% → 100% | 78d → none |  | baseline start 2024-10-10 → 2024-10-05; baseline finish 2024-10-15 → 2024-10-10 |
| 71 | Fit to Standard documents with Process flow diagram, Gap Analysis | 2024-10-22 → 2024-10-21 A (-1d) | 2024-10-22 → 2024-10-21 A (-1d) |  | 0% → 100% | 78d → none |  | baseline start 2024-10-10 → 2024-10-05; baseline finish 2024-10-10 → 2024-10-05 |
| 72 | Core team training/ presentation | 2024-10-22 → 2024-09-27 A (-25d) | 2024-10-22 → 2024-09-27 A (-25d) |  | 0% → 100% | 78d → none |  | baseline start 2024-10-10 → 2024-10-05; baseline finish 2024-10-10 → 2024-10-05 |
| 73 | Initial Master data templates | 2024-10-21 → 2024-10-18 A (-3d) | 2024-10-21 → 2024-10-18 A (-3d) | 1d → 0d | 0% → 100% | 79d → none |  | baseline start 2024-10-15 → 2024-10-10; baseline finish 2024-10-15 → 2024-10-10 |
| 74 | **Realize** | 2024-10-21 → 2024-10-29 A (+8d) | 2024-12-31 → 2024-12-24 (-7d) | 49d → 47d |  | 5d → 327d |  | baseline start 2024-10-15 → 2024-10-12; baseline finish 2024-12-18 → 2024-12-05 |

| ID | Task | Start | Finish | Duration | Total float | Predecessors | Other |
| --- | --- | --- | --- | --- | --- | --- | --- |
| 75 | **Requirement gathering sheet (RGS)** | 2024-10-28 → 2024-10-30 A (+2d) | 2024-11-04 → 2024-11-08 (+4d) | 4d → 7d | 0d → 366d |  | baseline start 2024-10-16 → 2024-10-12; baseline finish 2024-10-21 → 2024-10-16 |
| 76 | Prepare RGS | 2024-10-28 → 2024-10-30 A (+2d) | 2024-10-30 → 2024-11-07 (+8d) |  | 0d → -8d | Integration with DMS → 47 | baseline start 2024-10-16 → 2024-10-12; baseline finish 2024-10-18 → 2024-10-15 |
| 77 | Submit RGS | 2024-11-04 → 2024-11-08 (+4d) | 2024-11-04 → 2024-11-08 (+4d) |  | 0d → 368d |  | baseline start 2024-10-21 → 2024-10-16; baseline finish 2024-10-21 → 2024-10-16 |
| 78 | **Functional Specifications** | 2024-11-05 → 2024-10-30 (-6d) | 2024-11-12 → 2024-11-05 (-7d) | 6d → 4d | 0d → none |  | baseline start 2024-10-22 → 2024-10-16; baseline finish 2024-10-29 → 2024-10-22 |
| 79 | Prepare functional specfications | 2024-11-05 → 2024-11-08 (+3d) | 2024-11-08 → 2024-11-12 (+4d) |  | 0d → -8d | 77 → 76 | baseline start 2024-10-22 → 2024-10-16; baseline finish 2024-10-25 → 2024-10-19 |
| 80 | Finalize development tracker | 2024-11-11 → 2024-11-13 (+2d) | 2024-11-12 → 2024-11-14 (+2d) |  | 65d → -8d |  | baseline start 2024-10-28 → 2024-10-21; baseline finish 2024-10-29 → 2024-10-22 |
| 81 | **Solution Configuration** | 2024-11-11 → 2024-10-29 A (-13d) |  | 10d → 20d | 0d → 1d |  | baseline start 2024-10-28 → 2024-10-21; baseline finish 2024-11-12 → 2024-11-02 |
| 82 | Configure Processes and Functions in golden master (100) | 2024-11-11 → 2024-10-29 A (-13d) | 2024-11-15 → 2024-11-18 (+3d) |  | 0d → 1d |  | baseline start 2024-10-28 → 2024-10-21; baseline finish 2024-11-05 → 2024-10-25 |
| 83 | Transfer of Configuration to Dev testing | 2024-11-18 → 2024-11-19 (+1d) | 2024-11-18 → 2024-11-19 (+1d) |  | 0d → 1d |  | baseline start 2024-11-06 → 2024-10-26; baseline finish 2024-11-06 → 2024-10-26 |
| 84 | Unit testing-1 (Consultant) | 2024-11-19 → 2024-11-20 (+1d) |  | 3d → 2d | 0d → 1d |  | baseline start 2024-11-07 → 2024-10-28; baseline finish 2024-11-11 → 2024-10-30 |
| 85 | Document and Resolve Issues | 2024-11-19 → 2024-11-20 (+1d) |  | 3d → 2d | 0d → 1d |  | baseline start 2024-11-07 → 2024-10-28; baseline finish 2024-11-11 → 2024-10-30 |
| 86 | Submit Unit Testing result & completion of baseline config |  |  |  | 0d → 1d |  | baseline start 2024-11-12 → 2024-11-02; baseline finish 2024-11-12 → 2024-11-02 |
| 87 | **Core team training & UT** | 2024-11-25 → 2024-11-22 (-3d) | 2024-12-10 → 2024-12-05 (-5d) |  | 0d → 1d |  | baseline start 2024-11-13 → 2024-11-02; baseline finish 2024-11-28 → 2024-11-15 |
| 88 | Plan for CTM training | 2024-11-25 → 2024-11-22 (-3d) | 2024-11-25 → 2024-11-22 (-3d) |  | 0d → 1d | 86 → 86FF | baseline start 2024-11-13 → 2024-11-02; baseline finish 2024-11-13 → 2024-11-02 |
| 89 | Making necessery training arrangement - PPT + tutorial | 2024-11-26 → 2024-11-23 (-3d) | 2024-11-27 → 2024-11-25 (-2d) |  | 0d → 1d |  | baseline start 2024-11-14 → 2024-11-04; baseline finish 2024-11-15 → 2024-11-05 |
| 90 | Conducting CTM Training (Module wise) | 2024-11-28 → 2024-11-26 (-2d) | 2024-12-02 → 2024-11-28 (-4d) |  | 0d → 1d |  | baseline start 2024-11-18 → 2024-11-06; baseline finish 2024-11-20 → 2024-11-08 |
| 91 | Unit Testing by Core team | 2024-12-03 → 2024-11-29 (-4d) | 2024-12-10 → 2024-12-05 (-5d) |  | 39d → 339d |  | baseline start 2024-11-21 → 2024-11-09; baseline finish 2024-11-28 → 2024-11-15 |
| 92 | **Quality System Request / Initial Setup** | 2024-10-29 → 2024-11-05 (+7d) | 2024-10-29 → 2024-11-05 (+7d) |  | 68d → 364d |  | baseline start 2024-10-17 → 2024-10-12; baseline finish 2024-10-17 → 2024-10-12 |
| 93 | Execute Initial Setup of the Quality System via SAP Central Business Configuration | 2024-10-29 → 2024-11-05 (+7d) | 2024-10-29 → 2024-11-05 (+7d) |  | 73d → 371d |  | baseline start 2024-10-17 → 2024-10-12; baseline finish 2024-10-17 → 2024-10-12 |
| 94 | Request Quality System via Manage Your Solution App | 2024-10-29 → 2024-11-05 (+7d) | 2024-10-29 → 2024-11-05 (+7d) |  | 68d → 366d |  | baseline start 2024-10-17 → 2024-10-12; baseline finish 2024-10-17 → 2024-10-12 |
| 95 | **Quality System Initial Access** | 2024-10-29 → 2024-11-05 (+7d) | 2024-11-08 → 2024-11-11 (+3d) | 7d → 6d | 67d → 364d |  | baseline start 2024-10-17 → 2024-10-12; baseline finish 2024-10-25 → 2024-10-19 |
| 96 | Receive Quality System and Reset Password | 2024-10-30 → 2024-11-06 (+7d) | 2024-10-30 → 2024-11-06 (+7d) |  | 68d → 366d |  | baseline start 2024-10-18 → 2024-10-14; baseline finish 2024-10-18 → 2024-10-14 |
| 97 | Create Preset Configuration User in the Quality System via Manage Your Solution App | 2024-11-04 → 2024-11-07 (+3d) | 2024-11-04 → 2024-11-07 (+3d) |  | 70d → 368d |  | baseline start 2024-10-21 → 2024-10-15; baseline finish 2024-10-21 → 2024-10-15 |
| 98 | Define Preset Parameters and Trigger System Activation via Manage Your Solution App | 2024-11-05 → 2024-11-08 (+3d) | 2024-11-05 → 2024-11-08 (+3d) |  | 70d → 368d |  | baseline start 2024-10-22 → 2024-10-16; baseline finish 2024-10-22 → 2024-10-16 |
| 99 | **Create Users in the Quality Server** | 2024-10-29 → 2024-11-05 (+7d) | 2024-11-07 → 2024-11-09 (+2d) | 6d → 5d | 67d → 364d |  | baseline start 2024-10-17 → 2024-10-12; baseline finish 2024-10-24 → 2024-10-18 |
| 100 | **Finalize list of users for QAS** | 2024-10-29 → 2024-11-05 (+7d) | 2024-11-07 → 2024-11-09 (+2d) | 6d → 5d | 67d → 364d |  | baseline start 2024-10-17 → 2024-10-12; baseline finish 2024-10-24 → 2024-10-18 |
| 101 | **Provide user authorization** | 2024-10-29 → 2024-11-05 (+7d) | 2024-11-07 → 2024-11-09 (+2d) | 6d → 5d | 67d → 364d |  | baseline start 2024-10-17 → 2024-10-12; baseline finish 2024-10-24 → 2024-10-18 |
| 102 | Finalize user authorization | 2024-10-29 → 2024-11-05 (+7d) | 2024-10-30 → 2024-11-05 (+6d) | 2d → 1d | 67d → 364d |  | baseline start 2024-10-17 → 2024-10-12; baseline finish 2024-10-18 → 2024-10-14 |
| 103 | Create roles and authorization | 2024-11-04 → 2024-11-06 (+2d) | 2024-11-04 → 2024-11-06 (+2d) |  | 67d → 364d |  | baseline start 2024-10-21 → 2024-10-15; baseline finish 2024-10-21 → 2024-10-15 |
| 104 | Testing of roles and authorization | 2024-11-05 → 2024-11-07 (+2d) | 2024-11-06 → 2024-11-08 (+2d) |  | 67d → 364d |  | baseline start 2024-10-22 → 2024-10-16; baseline finish 2024-10-23 → 2024-10-17 |
| 105 | Deployment of roles to users | 2024-11-07 → 2024-11-09 (+2d) | 2024-11-07 → 2024-11-09 (+2d) |  | 67d → 364d |  | baseline start 2024-10-24 → 2024-10-18; baseline finish 2024-10-24 → 2024-10-18 |
| 106 | Self-Activation of Project Team Members in the Identity Authentication Service | 2024-11-08 → 2024-11-11 (+3d) | 2024-11-08 → 2024-11-11 (+3d) |  | 67d → 364d |  | baseline start 2024-10-25 → 2024-10-19; baseline finish 2024-10-25 → 2024-10-19 |
| 107 | **Required Configuration Before System Use - SAP S/4HANA Cloud** | 2024-11-04 → 2024-11-07 (+3d) | 2024-11-04 → 2024-11-07 (+3d) |  | 68d → 364d |  | baseline start 2024-10-21 → 2024-10-15; baseline finish 2024-10-21 → 2024-10-15 |
| 108 | Configure system | 2024-11-04 → 2024-11-07 (+3d) | 2024-11-04 → 2024-11-07 (+3d) |  | 68d → 366d |  | baseline start 2024-10-21 → 2024-10-15; baseline finish 2024-10-21 → 2024-10-15 |
| 109 | **Standard Integration Setup in the Quality/Test System** | 2024-11-05 → 2024-11-08 (+3d) | 2024-11-07 → 2024-11-11 (+4d) |  | 68d → 364d |  | baseline start 2024-10-22 → 2024-10-16; baseline finish 2024-10-24 → 2024-10-18 |
| 110 | Set Up Integration using Cloud Integration Automation Service (CIAS) | 2024-11-05 → 2024-11-08 (+3d) | 2024-11-05 → 2024-11-08 (+3d) |  | 68d → 366d |  | baseline start 2024-10-22 → 2024-10-16; baseline finish 2024-10-22 → 2024-10-16 |
| 111 | Set Up Employee Central Integration (JB1) | 2024-11-06 → 2024-11-09 (+3d) | 2024-11-06 → 2024-11-09 (+3d) |  | 68d → 366d |  | baseline start 2024-10-23 → 2024-10-17; baseline finish 2024-10-23 → 2024-10-17 |
| 112 | Set Up Integrations in the Quality/Test System | 2024-11-07 → 2024-11-11 (+4d) | 2024-11-07 → 2024-11-11 (+4d) |  | 68d → 366d |  | baseline start 2024-10-24 → 2024-10-18; baseline finish 2024-10-24 → 2024-10-18 |
| 113 | **System Integration Test** | 2024-10-21 → 2024-11-02 (+12d) | 2024-12-31 → 2024-12-24 (-7d) | 49d → 45d | 16d → 15d |  | baseline start 2024-10-15 → 2024-10-12; baseline finish 2024-12-18 → 2024-12-04 |
| 114 | **Integration test Plan** | 2024-10-21 → 2024-11-02 (+12d) | 2024-12-04 → 2024-11-29 (-5d) | 31d → 24d | 16d → 15d |  | baseline start 2024-10-15 → 2024-10-12; baseline finish 2024-11-22 → 2024-11-11 |
| 115 | Identify scenerios for Integration test | 2024-12-03 → 2024-11-29 (-4d) | 2024-12-04 → 2024-11-29 (-5d) | 2d → 1d | 0d → 1d |  | baseline start 2024-11-21 → 2024-11-09; baseline finish 2024-11-22 → 2024-11-11 |
| 116 | Write scripts for Integration test | 2024-12-03 → 2024-11-29 (-4d) | 2024-12-03 → 2024-11-29 (-4d) |  | 0d → 1d |  | baseline start 2024-11-21 → 2024-11-09; baseline finish 2024-11-21 → 2024-11-11 |
| 117 | **Master data** | 2024-10-21 → 2024-11-02 (+12d) | 2024-11-22 → 2024-11-16 (-6d) | 23d → 13d | 57d → 359d |  | baseline start 2024-10-15 → 2024-10-22; baseline finish 2024-11-18 → 2024-11-07 |
| 118 | Receipt Master Data from PA | 2024-10-21 → 2024-11-02 (+12d) | 2024-11-19 → 2024-11-13 (-6d) | 20d → 10d | 57d → 359d | 46 → 46FS+10d | was named Receipt Master Data from NL; baseline start 2024-10-15 → 2024-10-22; baseline finish 2024-11-13 → 2024-11-04 |
| 119 | Upload Master data in QAS | 2024-11-20 → 2024-11-14 (-6d) | 2024-11-22 → 2024-11-16 (-6d) |  | 57d → 359d |  | baseline start 2024-11-14 → 2024-11-05; baseline finish 2024-11-18 → 2024-11-07 |
| 120 | **Identity and Access Management Planning and Design** | 2024-10-29 → 2024-11-05 (+7d) | 2024-11-27 → 2024-11-21 (-6d) | 20d → 15d | 10d → 13d |  | baseline start 2024-10-17 → 2024-10-12; baseline finish 2024-11-15 → 2024-11-06 |
| 121 | Finalize list of users | 2024-10-29 → 2024-11-05 (+7d) | 2024-11-20 → 2024-11-15 (-5d) | 15d → 10d | 10d → 13d |  | baseline start 2024-10-17 → 2024-10-12; baseline finish 2024-11-08 → 2024-10-29 |
| 122 | Provide & Check roles and authorization | 2024-11-21 → 2024-11-16 (-5d) | 2024-11-27 → 2024-11-21 (-6d) |  | 10d → 13d |  | baseline start 2024-11-11 → 2024-10-30; baseline finish 2024-11-15 → 2024-11-06 |
| 123 | **Conduct System integration test** | 2024-12-04 → 2024-11-30 (-4d) | 2024-12-23 → 2024-12-20 (-3d) | 14d → 18d | 0d → 1d |  | baseline start 2024-11-22 → 2024-11-12; baseline finish 2024-12-11 → 2024-12-04 |
| 124 | Perform Integration testing by Consultant | 2024-12-04 → 2024-11-30 (-4d) | 2024-12-11 → 2024-12-05 (-6d) | 6d → 5d | 0d → 1d |  | baseline start 2024-11-22 → 2024-11-12; baseline finish 2024-11-29 → 2024-11-19 |
| 125 | Perform User Acceptance test - CTM | 2024-12-12 → 2024-12-06 (-6d) | 2024-12-19 → 2024-12-17 (-2d) | 6d → 10d | 0d → 1d |  | baseline start 2024-12-02 → 2024-11-20; baseline finish 2024-12-09 → 2024-11-30 |
| 126 | Resolving the issues, if any | 2024-12-12 → 2024-12-06 (-6d) | 2024-12-19 → 2024-12-17 (-2d) | 6d → 10d | 0d → 1d |  | baseline start 2024-12-02 → 2024-11-20; baseline finish 2024-12-09 → 2024-11-30 |
| 127 | Retesting of scenarios | 2024-12-20 → 2024-12-18 (-2d) | 2024-12-23 → 2024-12-20 (-3d) | 2d → 3d | 33d → 1d |  | baseline start 2024-12-10 → 2024-12-02; baseline finish 2024-12-11 → 2024-12-04 |
| 128 | UAT (by CTM) signoff | 2024-12-23 → 2024-12-20 (-3d) | 2024-12-23 → 2024-12-20 (-3d) |  | 33d → 1d |  | baseline start 2024-12-11 → 2024-12-04; baseline finish 2024-12-11 → 2024-12-04 |
| 129 | **ABAP Development - SIT Critical** | 2024-11-18 → 2024-11-19 (+1d) | 2024-12-31 → 2024-12-24 (-7d) |  | 23d → 299d |  | baseline start 2024-11-06 → 2024-10-26; baseline finish 2024-12-18 → 2024-12-03 |
| 130 | Develop reports | 2024-11-18 → 2024-11-19 (+1d) | 2024-12-20 → 2024-12-17 (-3d) |  | 23d → 301d |  | baseline start 2024-11-06 → 2024-10-26; baseline finish 2024-12-10 → 2024-11-26 |
| 131 | Testing by consultant | 2024-11-21 → 2024-11-22 (+1d) | 2024-12-26 → 2024-12-20 (-6d) |  | 31d → 329d |  | baseline start 2024-11-11 → 2024-10-30; baseline finish 2024-12-13 → 2024-11-29 |
| 132 | Testing by CTM |  | 2024-12-31 → 2024-12-24 (-7d) |  | 31d → 329d |  | baseline start 2024-11-14 → 2024-11-05; baseline finish 2024-12-18 → 2024-12-03 |
| 133 | Sign off Development | 2024-12-31 → 2024-12-24 (-7d) | 2024-12-31 → 2024-12-24 (-7d) |  | 31d → 329d |  | baseline start 2024-12-18 → 2024-12-03; baseline finish 2024-12-18 → 2024-12-03 |
| 134 | **Cutover Strategy** | 2024-12-20 → 2024-12-21 (+1d) | 2024-12-24 → 2024-12-21 (-3d) | 3d → 1d | 0d → 1d |  | baseline start 2024-12-10 → 2024-12-05; baseline finish 2024-12-12 → 2024-12-05 |
| 135 | Discussion on cutover strategy | 2024-12-20 → 2024-12-21 (+1d) | 2024-12-23 → 2024-12-21 (-2d) | 2d → 1d | 0d → 1d | 126 → 128 | baseline start 2024-12-10 → 2024-12-05; baseline finish 2024-12-11 → 2024-12-05 |
| 136 | Cutover & data responsibility Plan | 2024-12-24 → 2024-12-21 (-3d) | 2024-12-24 → 2024-12-21 (-3d) |  | 0d → 1d | 135 → 135FF | baseline start 2024-12-12 → 2024-12-05; baseline finish 2024-12-12 → 2024-12-05 |
| 137 | Communication to Organisation for Cutover | 2024-12-24 → 2024-12-21 (-3d) | 2024-12-24 → 2024-12-21 (-3d) |  | 0d → 1d |  | baseline start 2024-12-12 → 2024-12-05; baseline finish 2024-12-12 → 2024-12-05 |
| 138 | **End user training plan** | 2024-12-11 → 2024-12-06 (-5d) | 2024-12-12 → 2024-12-07 (-5d) |  | 39d → 337d |  | baseline start 2024-11-29 → 2024-11-16; baseline finish 2024-12-02 → 2024-11-18 |
| 139 | Preparation of End User training plan | 2024-12-11 → 2024-12-06 (-5d) | 2024-12-12 → 2024-12-07 (-5d) |  | 39d → 339d |  | baseline start 2024-11-29 → 2024-11-16; baseline finish 2024-12-02 → 2024-11-18 |
| 140 | Communicate plan to PA | 2024-12-12 → 2024-12-07 (-5d) | 2024-12-12 → 2024-12-07 (-5d) |  | 39d → 339d |  | was named Communicate plan to NL; baseline start 2024-12-02 → 2024-11-18; baseline finish 2024-12-02 → 2024-11-18 |
| 141 | **Production System Request** | 2024-10-29 → 2024-11-05 (+7d) | 2024-10-30 → 2024-11-06 (+7d) |  | 70d → 366d |  | baseline start 2024-10-17 → 2024-10-12; baseline finish 2024-10-18 → 2024-10-14 |
| 142 | Request for Production System | 2024-10-29 → 2024-11-05 (+7d) | 2024-10-29 → 2024-11-05 (+7d) |  | 70d → 366d |  | baseline start 2024-10-17 → 2024-10-12; baseline finish 2024-10-17 → 2024-10-12 |
| 143 | Request Access to the SAP S/4HANA Cloud Release Assessment Tool. | 2024-10-30 → 2024-11-06 (+7d) | 2024-10-30 → 2024-11-06 (+7d) |  | 70d → 366d |  | baseline start 2024-10-18 → 2024-10-14; baseline finish 2024-10-18 → 2024-10-14 |
| 144 | **Production System Initial Access** | 2024-11-04 → 2024-11-07 (+3d) | 2024-11-05 → 2024-11-08 (+3d) |  | 70d → 366d |  | baseline start 2024-10-21 → 2024-10-15; baseline finish 2024-10-22 → 2024-10-16 |

| ID | Task | Start | Finish | Duration | Complete | Total float | Predecessors | Other |
| --- | --- | --- | --- | --- | --- | --- | --- | --- |
| 145 | Receive Production System and Reset Password | 2024-11-04 → 2024-11-07 (+3d) | 2024-11-04 → 2024-11-07 (+3d) |  |  | 70d → 366d |  | baseline start 2024-10-21 → 2024-10-15; baseline finish 2024-10-21 → 2024-10-15 |
| 146 | Transport Initial Change Project from Q-System to P-System | 2024-11-05 → 2024-11-08 (+3d) | 2024-11-05 → 2024-11-08 (+3d) |  |  | 70d → 366d |  | baseline start 2024-10-22 → 2024-10-16; baseline finish 2024-10-22 → 2024-10-16 |
| 147 | Phase Closure & Signoff Phase deliverables | 2024-12-24 → 2024-12-21 (-3d) | 2024-12-24 → 2024-12-21 (-3d) |  |  | 35d → 329d |  | baseline start 2024-12-12 → 2024-12-05; baseline finish 2024-12-12 → 2024-12-05 |
| 148 | **Deliverables** | 2024-11-25 → 2024-11-23 (-2d) | 2024-12-24 → 2024-12-21 (-3d) | 22d → 25d |  | 35d → 329d |  | baseline start 2024-11-13 → 2024-11-04; baseline finish 2024-12-12 → 2024-12-05 |
| 149 | D: Test scripts | 2024-12-04 → 2024-11-30 (-4d) | 2024-12-04 → 2024-11-30 (-4d) |  |  | 49d → 347d |  | baseline start 2024-11-22 → 2024-11-12; baseline finish 2024-11-22 → 2024-11-12 |
| 150 | D: Unit test result document | 2024-11-25 → 2024-11-23 (-2d) | 2024-11-25 → 2024-11-23 (-2d) |  |  | 56d → 353d |  | baseline start 2024-11-13 → 2024-11-04; baseline finish 2024-11-13 → 2024-11-04 |
| 151 | D: Integration testing document | 2024-12-12 → 2024-12-06 (-6d) | 2024-12-12 → 2024-12-06 (-6d) |  |  | 43d → 342d |  | baseline start 2024-12-02 → 2024-11-20; baseline finish 2024-12-02 → 2024-11-20 |
| 152 | D: User Acceptance testing document | 2024-12-23 → 2024-12-20 (-3d) | 2024-12-23 → 2024-12-20 (-3d) |  |  | 36d → 330d |  | baseline start 2024-12-11 → 2024-12-04; baseline finish 2024-12-11 → 2024-12-04 |
| 153 | D: Final master data templates | 2024-12-24 → 2024-12-21 (-3d) | 2024-12-24 → 2024-12-21 (-3d) |  |  | 35d → 329d |  | baseline start 2024-12-12 → 2024-12-05; baseline finish 2024-12-12 → 2024-12-05 |
| 154 | D: Data migration strategy document | 2024-12-24 → 2024-12-21 (-3d) | 2024-12-24 → 2024-12-21 (-3d) |  |  | 35d → 329d |  | baseline start 2024-12-12 → 2024-12-05; baseline finish 2024-12-12 → 2024-12-05 |
| 155 | **Deploy** | 2024-10-21 → 2024-12-07 (+47d) | 2025-01-10 → 2025-01-27 (+17d) | 57d → 43d |  | 5d → 9d |  | baseline start 2024-10-15 → 2024-11-19; baseline finish 2024-12-31 → 2025-01-07 |
| 156 | **ABAP Developments Pre Go Live** | 2024-12-12 → 2024-12-18 (+6d) | 2025-01-10 → 2025-01-27 (+17d) | 21d → 34d |  | 23d → 299d |  | baseline start 2024-12-02 → 2024-11-27; baseline finish 2024-12-31 → 2025-01-06 |
| 157 | Develop reports | 2024-12-12 → 2024-12-18 (+6d) | 2025-01-02 → 2025-01-18 (+16d) | 15d → 27d |  | 23d → 299d | 130FS-7d → 130 | baseline start 2024-12-02 → 2024-11-27; baseline finish 2024-12-20 → 2024-12-28 |
| 158 | Testing by consultant | 2024-12-17 → 2024-12-21 (+4d) | 2025-01-07 → 2025-01-22 (+15d) | 15d → 27d |  | 23d → 299d |  | baseline start 2024-12-05 → 2024-11-30; baseline finish 2024-12-26 → 2025-01-01 |
| 159 | Testing by CTM | 2024-12-19 → 2024-12-24 (+5d) | 2025-01-09 → 2025-01-24 (+15d) | 15d → 27d |  | 23d → 299d |  | baseline start 2024-12-09 → 2024-12-03; baseline finish 2024-12-30 → 2025-01-03 |
| 160 | Sign off Development | 2025-01-10 → 2025-01-25 (+15d) | 2025-01-10 → 2025-01-27 (+17d) | 1d → 2d |  | 23d → 299d |  | baseline start 2024-12-31 → 2025-01-04; baseline finish 2024-12-31 → 2025-01-06 |
| 161 | **End User Training** | 2024-12-26 → 2024-12-23 (-3d) | 2025-01-08 → 2025-01-03 (-5d) |  |  | 24d → 318d |  | baseline start 2024-12-13 → 2024-12-06; baseline finish 2024-12-27 → 2024-12-17 |
| 162 | Prepare end user training manual | 2024-12-26 → 2024-12-23 (-3d) | 2024-12-27 → 2024-12-24 (-3d) |  |  | 24d → 318d |  | baseline start 2024-12-13 → 2024-12-06; baseline finish 2024-12-16 → 2024-12-07 |
| 163 | Conduct end user training | 2024-12-30 → 2024-12-26 (-4d) | 2025-01-03 → 2024-12-31 (-3d) |  |  | 24d → 318d |  | baseline start 2024-12-17 → 2024-12-09; baseline finish 2024-12-23 → 2024-12-13 |
| 164 | Conduct training to HODs/Management | 2025-01-06 → 2025-01-01 (-5d) | 2025-01-08 → 2025-01-03 (-5d) |  |  | 25d → 319d |  | baseline start 2024-12-24 → 2024-12-14; baseline finish 2024-12-27 → 2024-12-17 |
| 165 | **Production Environment Preparation** | 2024-12-24 → 2024-12-21 (-3d) | 2024-12-27 → 2024-12-24 (-3d) |  |  | 33d → 327d |  | baseline start 2024-12-12 → 2024-12-05; baseline finish 2024-12-16 → 2024-12-07 |
| 166 | Transport final configurations | 2024-12-24 → 2024-12-21 (-3d) | 2024-12-24 → 2024-12-21 (-3d) |  |  | 33d → 327d |  | baseline start 2024-12-12 → 2024-12-05; baseline finish 2024-12-12 → 2024-12-05 |
| 167 | Maintain number ranges | 2024-12-26 → 2024-12-23 (-3d) | 2024-12-26 → 2024-12-23 (-3d) |  |  | 33d → 327d |  | baseline start 2024-12-13 → 2024-12-06; baseline finish 2024-12-13 → 2024-12-06 |
| 168 | Maintain client specific data | 2024-12-27 → 2024-12-24 (-3d) | 2024-12-27 → 2024-12-24 (-3d) |  |  | 33d → 327d |  | baseline start 2024-12-16 → 2024-12-07; baseline finish 2024-12-16 → 2024-12-07 |
| 169 | **User creation** | 2024-12-13 → 2024-12-09 (-4d) | 2025-01-09 → 2025-01-04 (-5d) | 19d → 23d |  | 24d → 318d |  | baseline start 2024-12-03 → 2024-11-19; baseline finish 2024-12-30 → 2024-12-18 |
| 170 | Finalize list of users for production enviornment | 2024-12-13 → 2024-12-09 (-4d) | 2024-12-16 → 2024-12-10 (-6d) |  |  | 39d → 337d |  | baseline start 2024-12-03 → 2024-11-19; baseline finish 2024-12-04 → 2024-11-20 |
| 171 | Finalise Authorization Matrix | 2024-12-17 → 2024-12-11 (-6d) | 2024-12-18 → 2024-12-12 (-6d) |  |  | 39d → 337d |  | baseline start 2024-12-05 → 2024-11-21; baseline finish 2024-12-06 → 2024-11-22 |
| 172 | Check roles and authorization | 2025-01-06 → 2025-01-01 (-5d) | 2025-01-09 → 2025-01-04 (-5d) |  |  | 24d → 318d |  | baseline start 2024-12-24 → 2024-12-14; baseline finish 2024-12-30 → 2024-12-18 |
| 173 | **Data preparation and upload** | 2024-10-21 → 2024-12-07 (+47d) | 2025-01-07 → 2025-01-10 (+3d) | 54d → 29d |  | 5d → 9d |  | baseline start 2024-10-15 → 2024-11-28; baseline finish 2024-12-26 → 2025-01-06 |
| 174 | Receipt of master data | 2024-10-21 → 2024-12-07 (+47d) | 2024-12-17 → 2024-12-18 (+1d) | 40d → 10d |  | 5d → 9d | 46 → 46FS+40d | baseline start 2024-10-15 → 2024-11-28; baseline finish 2024-12-11 → 2024-12-20 |
| 175 | Validate & cleanse master data | 2024-12-18 → 2024-12-19 (+1d) |  | 2d → 1d |  | 5d → 9d |  | baseline start 2024-12-12 → 2024-12-21; baseline finish 2024-12-13 → 2024-12-21 |
| 176 | Upload master data in Production |  | 2024-12-26 → 2024-12-24 (-2d) |  |  | 5d → 9d |  | baseline start 2024-12-16 → 2024-12-23; baseline finish 2024-12-19 → 2024-12-27 |
| 177 | Confirm uploaded master data | 2024-12-27 → 2024-12-26 (-1d) | 2024-12-27 → 2024-12-26 (-1d) |  |  | 33d → 326d |  | baseline start 2024-12-20 → 2024-12-28; baseline finish 2024-12-20 → 2024-12-28 |
| 178 | Receipt of cutover data | 2024-12-26 → 2024-12-23 (-3d) | 2025-01-02 → 2025-01-03 (+1d) | 6d → 10d |  | 0d → 1d |  | baseline start 2024-12-13 → 2024-12-06; baseline finish 2024-12-20 → 2024-12-30 |
| 179 | Validate & cleanse cutover data | 2024-12-26 → 2025-01-04 (+9d) | 2025-01-02 → 2025-01-10 (+8d) |  |  | 29d → 313d | 137 → 178 | baseline start 2024-12-13 → 2024-12-31; baseline finish 2024-12-20 → 2025-01-06 |
| 180 | Upload cutover data in production | 2025-01-03 → 2025-01-04 (+1d) | 2025-01-07 → 2025-01-08 (+1d) | 3d → 4d |  | 0d → 1d |  | baseline start 2024-12-23 → 2024-12-31; baseline finish 2024-12-26 → 2025-01-06 |
| 181 | Check and validate uploaded data | 2025-01-07 → 2025-01-08 (+1d) | 2025-01-07 → 2025-01-08 (+1d) |  |  | 0d → 1d |  | baseline start 2024-12-26 → 2025-01-06; baseline finish 2024-12-26 → 2025-01-06 |
| 182 | **Deliverables** | 2024-12-17 → 2024-12-11 (-6d) | 2025-01-01 → 2024-12-28 (-4d) | 11d → 15d |  | 30d → 324d |  | baseline start 2024-12-05 → 2024-11-21; baseline finish 2024-12-24 → 2024-12-31 |
| 183 | D: End user training manual | 2024-12-30 → 2024-12-26 (-4d) | 2025-01-01 → 2024-12-28 (-4d) |  |  | 30d → 324d |  | baseline start 2024-12-17 → 2024-12-09; baseline finish 2024-12-19 → 2024-12-11 |
| 184 | D: Data migration plan & checklist | 2024-12-18 → 2024-12-19 (+1d) | 2024-12-20 → 2024-12-21 (+1d) |  |  | 37d → 329d |  | baseline start 2024-12-12 → 2024-12-21; baseline finish 2024-12-16 → 2024-12-24 |
| 185 | D: Master data upload programs | 2024-12-27 → 2024-12-26 (-1d) | 2024-12-31 → 2024-12-28 (-3d) |  |  | 31d → 324d |  | baseline start 2024-12-20 → 2024-12-28; baseline finish 2024-12-24 → 2024-12-31 |
| 186 | D: Sample data upload validation | 2024-12-27 → 2024-12-26 (-1d) | 2024-12-27 → 2024-12-26 (-1d) |  |  | 33d → 326d |  | baseline start 2024-12-20 → 2024-12-28; baseline finish 2024-12-20 → 2024-12-28 |
| 187 | D: Final SAP Authorization matrix | 2024-12-17 → 2024-12-11 (-6d) | 2024-12-17 → 2024-12-11 (-6d) |  |  | 40d → 338d |  | baseline start 2024-12-05 → 2024-11-21; baseline finish 2024-12-05 → 2024-11-21 |
| 188 | **Phase Closure & Sign Off Phase Deliverables** | 2025-01-08 → 2025-01-09 (+1d) |  | 2d → 1d |  | 0d → 1d |  | baseline start 2024-12-27 → 2025-01-07; baseline finish 2024-12-30 → 2025-01-07 |
| 189 | Deploy signoff | 2025-01-08 → 2025-01-09 (+1d) | 2025-01-08 → 2025-01-09 (+1d) |  |  | 0d → 1d |  | baseline start 2024-12-27 → 2025-01-07; baseline finish 2024-12-27 → 2025-01-07 |
| 190 | Completion of Final Preparation (Deploy) Phase |  |  |  |  | 0d → 1d | 189 → 189FF | baseline start 2024-12-30 → 2025-01-07; baseline finish 2024-12-30 → 2025-01-07 |
| 191 | Go Live |  |  |  |  | 0d → 1d |  | baseline start 2024-12-31 → 2025-01-08; baseline finish 2024-12-31 → 2025-01-08 |
| 192 | **Stabilization** | 2025-01-13 → 2025-01-11 (-2d) | 2025-02-12 → 2025-02-11 (-1d) | 23d → 27d |  | 0d → 1d |  | baseline start 2025-01-01 → 2025-01-09; baseline finish 2025-01-31 → 2025-02-08 |
| 193 | Stabilization | 2025-01-13 → 2025-01-11 (-2d) | 2025-02-12 → 2025-02-11 (-1d) | 23d → 27d |  | 0d → 1d |  | was named Stabilization (Post Go live Support); baseline start 2025-01-01 → 2025-01-09; baseline finish 2025-01-31 → 2025-02-08 |
| 194 | **Deliverables** | 2025-01-13 → 2025-01-11 (-2d) | 2025-02-12 → 2025-02-11 (-1d) | 23d → 27d |  | 0d → 286d |  | baseline start 2025-01-01 → 2025-01-09; baseline finish 2025-01-31 → 2025-02-08 |
| 195 | D: Issue list with resolution status | 2025-01-13 → 2025-01-11 (-2d) | 2025-02-12 → 2025-02-11 (-1d) | 23d → 27d |  | 0d → 286d |  | baseline start 2025-01-01 → 2025-01-09; baseline finish 2025-01-31 → 2025-02-08 |
| 196 | D: Configuration documents | 2025-01-13 → 2025-01-11 (-2d) | 2025-02-12 → 2025-02-11 (-1d) | 23d → 27d |  | 0d → 286d |  | baseline start 2025-01-01 → 2025-01-09; baseline finish 2025-01-31 → 2025-02-08 |
| 197 | D: FS & TS | 2025-01-13 → 2025-01-11 (-2d) | 2025-02-12 → 2025-02-11 (-1d) | 23d → 27d |  | 0d → 286d |  | baseline start 2025-01-01 → 2025-01-09; baseline finish 2025-01-31 → 2025-02-08 |
| 198 | D: Cre team training document | 2025-01-13 → 2025-01-11 (-2d) | 2025-02-12 → 2025-02-11 (-1d) | 23d → 27d |  | 0d → 286d |  | baseline start 2025-01-01 → 2025-01-09; baseline finish 2025-01-31 → 2025-02-08 |
| 199 | **Extended Support** | 2024-09-23 A → 2025-02-12 (+142d) | 2024-09-23 A → 2025-03-11 (+169d) | 1d → 24d | 100% → 0% | none → 1d | 23FF → none | was named D: Training Plan; constraint start no earlier than 2022-11-07 → none; baseline start 2024-09-11 → 2025-02-10; baseline finish 2024-09-11 → 2025-03-08 |

## Version 5 (data date 2022-10-13, saved 2024-11-04, file TASK_00631268_1_04112024135645.mpp)

Note of the change: Add project files.

Last finish 2026-03-09 → 2025-02-05 (-397d). Complete tasks 43 → 44.

Added:

| ID | Task | Duration | Start | Finish | Predecessors |
| --- | --- | --- | --- | --- | --- |
| 50 | Integration with bank host to host (upto2) | 5d | 2024-10-21 | 2024-10-25 | 41 |
| 51 | Integration with HRMS (Payroll) | 5d | 2024-10-21 | 2024-10-25 | 41 |
| 52 | Integration with Cloud Steer CRM | 5d | 2024-10-21 | 2024-10-25 | 41 |
| 53 | Integration with DMS | 5d | 2024-10-21 | 2024-10-25 | 41 |
| 135 | **Third Party Interface** | 31d | 2024-11-04 | 2024-12-16 |  |
| 136 | Development | 25d | 2024-11-04 | 2024-12-06 | 83 |
| 137 | Testing by consultant | 25d | 2024-11-07 | 2024-12-11 | 136SS+3d |
| 138 | Testing by CTM | 25d | 2024-11-12 | 2024-12-16 | 137SS+3d |
| 139 | Sign off Development | 1d | 2024-12-16 | 2024-12-16 | 138FF |

Removed: 49 Integration with ASP/GSP; 50 Integration with bank host to host (upto 3); 51 Integration with Primavera; 52 Integration with third party payroll; 200 One month extended support; 201 Phase 2: One Year AMC; 202 AMC Support

Changed:

| ID | Task | Start | Finish | Duration | Complete | Total float | Predecessors | Other |
| --- | --- | --- | --- | --- | --- | --- | --- | --- |
| 1 | **SAP Implementation at NEO LIV** | 2024-09-02 A → 2024-09-05 A (+3d) | 2026-03-09 → 2025-02-05 (-397d) | 418d → 105d | 13% → 11% |  |  | was named SAP Implementation at PA; baseline start 2024-09-02 → 2024-09-05; baseline finish 2026-03-09 → 2025-01-31 |
| 2 | **Wave 1A: S4 HANA Implementation (Public Cloud)** | 2024-09-02 A → 2024-09-05 A (+3d) | 2025-03-11 → 2025-02-05 (-34d) | 156d → 105d | 18% → 11% | 262d → 0d |  | was named Phase 1: S4 HANA Implementation (Public Cloud); baseline start 2024-09-02 → 2024-09-05; baseline finish 2025-03-08 → 2025-01-31 |
| 3 | **Implementation** | 2024-09-02 A → 2024-09-05 A (+3d) | 2025-01-27 → 2025-01-02 (-25d) | 119d → 81d | 24% → 13% | 299d → 24d |  | baseline start 2024-09-02 → 2024-09-05; baseline finish 2025-01-07 → 2024-12-31 |
| 4 | **Prepare** | 2024-09-02 A → 2024-09-05 A (+3d) | 2024-09-10 A → 2024-09-23 A (+13d) | 7d → 12d |  |  |  | baseline start 2024-09-02 → 2024-09-05; baseline finish 2024-09-10 → 2024-09-11 |
| 5 | **Project Kick Off and On-Boarding** | 2024-09-02 A → 2024-09-05 A (+3d) | 2024-09-10 A → 2024-09-05 A (-5d) | 7d → 1d |  |  |  | baseline start 2024-09-02 → 2024-09-05; baseline finish 2024-09-09 → 2024-09-05 |
| 6 | On-board Project Team | 2024-09-02 A → 2024-09-05 A (+3d) | 2024-09-10 A → 2024-09-05 A (-5d) | 7d → 1d |  |  |  | constraint finish no earlier than 2024-09-09 → start no earlier than 2024-09-05; baseline start 2024-09-02 → 2024-09-05; baseline finish 2024-09-09 → 2024-09-05 |
| 7 | Conduct Kickoff Workshop |  |  |  |  |  | 6SS+3d → 6SS | was named Conduct project kickoff; constraint start no earlier than 2024-09-05 → none |
| 8 | **Project Plan** | 2024-09-02 A → 2024-09-05 A (+3d) | 2024-09-05 A → 2024-09-19 A (+14d) | 4d → 10d |  |  |  | baseline start 2024-09-02 → 2024-09-05; baseline finish 2024-09-05 → 2024-09-11 |
| 9 | Prepare & submit Initial project plan | 2024-09-02 A → 2024-09-05 A (+3d) | 2024-09-02 A → 2024-09-06 A (+4d) | 1d → 2d |  |  |  | baseline start 2024-09-02 → 2024-09-05; baseline finish 2024-09-02 → 2024-09-06 |
| 10 | Review project plan | 2024-09-03 A → 2024-09-09 A (+6d) | 2024-09-03 A → 2024-09-09 A (+6d) |  |  |  |  | baseline start 2024-09-03 → 2024-09-09; baseline finish 2024-09-03 → 2024-09-09 |
| 11 | Make necessary changes in the plan | 2024-09-04 A → 2024-09-10 A (+6d) | 2024-09-04 A → 2024-09-10 A (+6d) |  |  |  |  | baseline start 2024-09-04 → 2024-09-10; baseline finish 2024-09-04 → 2024-09-10 |
| 12 | Submit revised plan | 2024-09-04 A → 2024-09-10 A (+6d) | 2024-09-04 A → 2024-09-10 A (+6d) |  |  |  |  | baseline start 2024-09-04 → 2024-09-10; baseline finish 2024-09-04 → 2024-09-10 |
| 13 | Approval of project plan by NL | 2024-09-05 A → 2024-09-11 A (+6d) | 2024-09-05 A → 2024-09-19 A (+14d) | 1d → 6d |  |  |  | was named Approval of project plan by PA; baseline start 2024-09-05 → 2024-09-11; baseline finish 2024-09-05 → 2024-09-11 |
| 14 | **Project Governance** | 2024-09-06 A → 2024-09-09 A (+3d) |  | 2d → 1d |  |  |  |  |
| 15 | Establish Project Governance Mechanism | 2024-09-06 A → 2024-09-09 A (+3d) |  |  |  |  |  |  |
| 16 | Define Project Communications and Reporting | 2024-09-06 A → 2024-09-09 A (+3d) |  |  |  |  |  |  |
| 17 | **Project Standards, Infrastructure & Solution** |  | 2024-09-06 A → 2024-09-09 A (+3d) | 1d → 2d |  |  |  | baseline finish 2024-09-06 → 2024-09-09 |
| 18 | Set Up Project Team Logistics and Infrastructure |  | 2024-09-06 A → 2024-09-09 A (+3d) | 1d → 2d |  |  |  | baseline finish 2024-09-06 → 2024-09-09 |
| 19 | Create a Document Repository for the Implementation Project Team |  | 2024-09-06 A → 2024-09-09 A (+3d) | 1d → 2d |  |  |  | baseline finish 2024-09-06 → 2024-09-09 |
| 20 | **Fit-to-Standard Analysis Preparation** | 2024-09-09 A → 2024-09-10 A (+1d) | 2024-09-09 A → 2024-09-12 A (+3d) | 1d → 3d |  |  |  | baseline start 2024-09-09 → 2024-09-10; baseline finish 2024-09-09 → 2024-09-10 |
| 21 | Prepare for Fit-to-Standard Workshops | 2024-09-09 A → 2024-09-10 A (+1d) | 2024-09-09 A → 2024-09-12 A (+3d) | 1d → 3d |  |  |  | baseline start 2024-09-09 → 2024-09-10; baseline finish 2024-09-09 → 2024-09-10 |
| 22 | **Phase Closure and Sign-Off Phase Deliverables** | 2024-09-10 A → 2024-09-23 A (+13d) | 2024-09-10 A → 2024-09-23 A (+13d) |  |  |  |  | baseline start 2024-09-10 → 2024-09-11; baseline finish 2024-09-10 → 2024-09-11 |
| 23 | Prepare Phase Signoff | 2024-09-10 A → 2024-09-23 A (+13d) | 2024-09-10 A → 2024-09-23 A (+13d) | 0d → 1d |  |  |  | baseline start 2024-09-10 → 2024-09-11; baseline finish 2024-09-10 → 2024-09-11 |
| 24 | **Deliverables** | 2024-09-10 A → 2024-09-23 A (+13d) | 2024-09-10 A → 2024-09-23 A (+13d) |  |  |  |  | baseline start 2024-09-10 → 2024-09-11; baseline finish 2024-09-10 → 2024-09-11 |
| 25 | D: Baseline Project Plan | 2024-09-10 A → 2024-09-23 A (+13d) | 2024-09-10 A → 2024-09-23 A (+13d) |  |  |  |  | baseline start 2024-09-10 → 2024-09-11; baseline finish 2024-09-10 → 2024-09-11 |
| 26 | D: Project kickoff presentation | 2024-09-10 A → 2024-09-23 A (+13d) | 2024-09-10 A → 2024-09-23 A (+13d) |  |  |  |  | baseline start 2024-09-10 → 2024-09-11; baseline finish 2024-09-10 → 2024-09-11 |
| 27 | D: Training Plan | 2025-02-12 → 2024-09-23 A (-142d) | 2025-03-11 → 2024-09-23 A (-169d) | 24d → 1d | 0% → 100% | 1d → none | none → 23FF | was named Extended Support; constraint none → start no earlier than 2022-11-07; baseline start 2025-02-10 → 2024-09-11; baseline finish 2025-03-08 → 2024-09-11 |
| 28 | **Explore** | 2024-09-02 A → 2024-09-09 A (+7d) | 2024-11-04 → 2024-10-25 (-10d) | 48d → 33d | 71% → 57% | 370d → 70d |  | baseline start 2024-09-10 → 2024-09-09; baseline finish 2024-10-11 → 2024-10-16 |
| 29 | **Requirement gathering** | 2024-09-02 A → 2024-09-09 A (+7d) | 2024-09-17 A → 2024-09-12 A (-5d) | 12d → 4d |  |  |  | baseline start 2024-09-10 → 2024-09-09; baseline finish 2024-09-11 → 2024-09-12 |
| 30 | Review AS IS document | 2024-09-02 A → 2024-09-09 A (+7d) | 2024-09-17 A → 2024-09-10 A (-7d) | 6d → 2d |  |  | 21 → 7SS+2d | baseline start 2024-09-10 → 2024-09-09; baseline finish 2024-09-11 → 2024-09-10 |
| 31 | Update AS IS document as per discussion | 2024-09-02 A → 2024-09-11 A (+9d) | 2024-09-17 A → 2024-09-12 A (-5d) | 12d → 2d |  |  | 30SS → 30 | baseline start 2024-09-10 → 2024-09-11; baseline finish 2024-09-11 → 2024-09-12 |
| 32 | **Fit-to-Standard analysis** | 2024-09-17 A → 2024-09-16 A (-1d) | 2024-09-27 A → 2024-09-19 A (-8d) | 9d → 3d |  |  |  | baseline start 2024-09-12 → 2024-09-16; baseline finish 2024-09-16 → 2024-09-19 |
| 33 | Conduct workshop for all modules | 2024-09-17 A → 2024-09-16 A (-1d) | 2024-09-27 A → 2024-09-19 A (-8d) | 8d → 3d |  |  | 31 → 31FS+1d | baseline start 2024-09-12 → 2024-09-16; baseline finish 2024-09-16 → 2024-09-19 |
| 34 | **Fit to Standard analysis documentation** | 2024-09-16 A → 2024-09-20 A (+4d) | 2024-11-04 → 2024-10-22 (-13d) | 38d → 22d | 51% → 85% | 370d → 73d |  | baseline start 2024-09-17 → 2024-09-20; baseline finish 2024-10-11 → 2024-10-15 |
| 35 | Document Initial Configuration Settings for SAP Central Business Configuration | 2024-09-16 A → 2024-09-20 A (+4d) | 2024-09-16 A → 2024-09-23 A (+7d) | 1d → 2d |  |  |  | baseline start 2024-09-17 → 2024-09-20; baseline finish 2024-09-18 → 2024-09-23 |
| 36 | Document Scope via SAP Central Business Configuration | 2024-09-17 A → 2024-09-24 A (+7d) | 2024-09-19 A → 2024-09-25 A (+6d) | 3d → 2d |  |  |  | baseline start 2024-09-19 → 2024-09-24; baseline finish 2024-09-20 → 2024-09-25 |
| 37 | **Document and Maintain Business Process Flows** | 2024-09-20 A → 2024-09-24 A (+4d) | 2024-11-04 → 2024-10-21 (-14d) | 34d → 19d | 65% → 94% | 370d → 74d |  | baseline start 2024-09-17 → 2024-09-20; baseline finish 2024-10-04 → 2024-10-09 |
| 38 | Prepare BBP Document and KDS | 2024-09-20 A → 2024-09-24 A (+4d) | 2024-10-01 A → 2024-09-28 A (-3d) | 2.5d → 4d |  |  |  | was named Prepare fit-to-standard Document and KDS; baseline start 2024-09-17 → 2024-09-20; baseline finish 2024-09-23 → 2024-09-26 |
| 39 | Submition of BBP and KDS | 2024-09-23 A → 2024-09-30 A (+7d) | 2024-10-01 A → 2024-09-30 A (-1d) | 0d → 1d |  |  |  | was named Submition of Fit-to-standard and KDS; baseline start 2024-09-24 → 2024-09-27; baseline finish 2024-09-24 → 2024-09-27 |
| 40 | Review of BBP & KDS by CTM | 2024-09-25 A → 2024-10-04 A (+9d) | 2024-10-02 A → 2024-10-14 A (+12d) | 0d → 7d |  |  |  | was named Review of fit-to-standard & KDS by CTM; baseline start 2024-09-25 → 2024-09-30; baseline finish 2024-10-01 → 2024-10-07 |
| 41 | BBP Walkthrough | 2024-10-03 A → 2024-10-15 A (+12d) | 2024-10-21 A → 2024-10-18 A (-3d) | 16d → 4d |  |  |  | was named Solution Walkthrough; constraint finish no earlier than 2024-10-21 → none; baseline start 2024-10-03 → 2024-10-08; baseline finish 2024-10-03 → 2024-10-08 |
| 42 | BBP Signff | 2024-10-22 A → 2024-10-21 (-1d) | 2024-11-04 → 2024-10-21 (-14d) | 10d → 1d |  | 372d → 78d |  | was named Fit-to-Standard document Signoff; constraint finish no earlier than 2024-11-04 → none; baseline start 2024-10-04 → 2024-10-09; baseline finish 2024-10-04 → 2024-10-09 |
| 43 | Document Configuration Values | 2024-10-22 A → 2024-10-21 (-1d) | 2024-11-04 → 2024-10-22 (-13d) | 10d → 2d |  | 372d → 78d |  | constraint finish no earlier than 2024-11-04 → none; baseline start 2024-10-04 → 2024-10-09; baseline finish 2024-10-05 → 2024-10-10 |
| 44 | **Document Master Data Requirements** | 2024-10-07 A → 2024-10-16 A (+9d) |  | 11d → 3d |  |  |  | was named Data migration requirements; baseline start 2024-10-07 → 2024-10-11; baseline finish 2024-10-09 → 2024-10-14 |
| 45 | Identify masterdata requirement | 2024-10-07 A → 2024-10-16 A (+9d) | 2024-10-07 A → 2024-10-17 A (+10d) |  |  |  |  | was named Identify master data requirement; baseline start 2024-10-07 → 2024-10-11; baseline finish 2024-10-07 → 2024-10-11 |
| 46 | Prepare and explain masterdata template | 2024-10-10 A → 2024-10-17 A (+7d) | 2024-10-18 A → 2024-10-17 A (-1d) | 8d → 1d |  |  | 45 → 45SS | was named Prepare and explain master data template; baseline start 2024-10-08 → 2024-10-11; baseline finish 2024-10-09 → 2024-10-11 |
| 47 | Circulate masterdata template | 2024-10-10 A → 2024-10-18 A (+8d) |  | 8d → 1d |  |  | 46FF → 46 | was named Circulate master data template; baseline start 2024-10-09 → 2024-10-14; baseline finish 2024-10-09 → 2024-10-14 |
| 48 | Confirm Backlog and prioritise (SIT/UAT, Golive, Post-Golive) | 2024-10-11 A → 2024-10-21 (+10d) | 2024-11-04 → 2024-10-21 (-14d) | 12d → 1d |  | 0d → 74d |  | constraint finish no earlier than 2024-11-04 → none; baseline start 2024-10-10 → 2024-10-15; baseline finish 2024-10-11 → 2024-10-15 |
| 49 | **Integration Planning and Design** | 2024-10-09 A → 2024-10-21 (+12d) | 2024-10-26 → 2024-10-25 (-1d) | 16d → 5d | 33% → 0% | 375d → 70d |  | baseline start 2024-10-04 → 2024-10-09; baseline finish 2024-10-09 → 2024-10-15 |
| 54 | **Getting Started with your SAP Implementation** | 2024-10-07 A → 2024-09-26 (-11d) | 2024-10-07 A → 2024-10-04 (-3d) | 1d → 6d | 100% → 0% | none → 85d |  | baseline start 2024-09-23 → 2024-09-26; baseline finish 2024-10-01 → 2024-10-04 |
| 55 | Review Overview Documentation | 2024-10-07 A → 2024-09-26 (-11d) | 2024-10-07 A → 2024-09-27 (-10d) | 1d → 2d | 100% → 0% | none → 90d |  | baseline start 2024-09-23 → 2024-09-26; baseline finish 2024-09-24 → 2024-09-27 |
| 56 | Organize Provisioning Emails | 2024-10-07 A → 2024-09-30 (-7d) | 2024-10-07 A → 2024-10-01 (-6d) | 1d → 2d | 100% → 0% | none → 90d |  | baseline start 2024-09-25 → 2024-09-30; baseline finish 2024-09-27 → 2024-10-01 |
| 57 | Ensure Project Team Members Access to the SAP Support Portal, SAP Best Practices Explorer, and SAP Customer Communities | 2024-10-07 A → 2024-10-03 (-4d) | 2024-10-07 A → 2024-10-04 (-3d) | 1d → 2d | 100% → 0% | none → 90d |  | baseline start 2024-09-30 → 2024-10-03; baseline finish 2024-10-01 → 2024-10-04 |
| 58 | **SAP Cloud ALM Onboarding** | 2024-09-03 A → 2024-10-07 A (+34d) | 2024-09-13 A → 2024-10-09 A (+26d) | 9d → 3d |  |  |  | baseline start 2024-10-03 → 2024-10-07; baseline finish 2024-10-04 → 2024-10-08 |
| 59 | Request SAP Cloud ALM Tenant | 2024-09-03 A → 2024-10-07 A (+34d) | 2024-09-13 A → 2024-10-08 A (+25d) | 9d → 2d |  |  |  | baseline start 2024-10-03 → 2024-10-07; baseline finish 2024-10-03 → 2024-10-07 |
| 60 | Access SAP Cloud ALM and Create Users | 2024-09-13 A → 2024-10-08 A (+25d) | 2024-09-13 A → 2024-10-09 A (+26d) |  |  |  |  | baseline start 2024-10-04 → 2024-10-08; baseline finish 2024-10-04 → 2024-10-08 |
| 61 | **Initial System Access for Central Business Configuration** | 2024-09-03 A → 2024-10-15 A (+42d) | 2024-09-19 A → 2024-10-17 A (+28d) | 13d → 3d |  |  |  | baseline start 2024-10-05 → 2024-10-09; baseline finish 2024-10-08 → 2024-10-11 |
| 62 | Access the SAP Central Business Configuration | 2024-09-03 A → 2024-10-15 A (+42d) | 2024-09-10 A → 2024-10-15 A (+35d) | 6d → 1d |  |  |  | baseline start 2024-10-05 → 2024-10-09; baseline finish 2024-10-05 → 2024-10-09 |
| 63 | Set Up Starter Project in SAP Central Business Configuration | 2024-09-11 A → 2024-10-16 A (+35d) | 2024-09-11 A → 2024-10-16 A (+35d) |  |  |  |  | baseline start 2024-10-07 → 2024-10-10; baseline finish 2024-10-07 → 2024-10-10 |
| 64 | Set Up SAP Central Business Configuration Integration | 2024-09-13 A → 2024-10-17 A (+34d) | 2024-09-19 A → 2024-10-17 A (+28d) | 5d → 1d |  |  |  | baseline start 2024-10-08 → 2024-10-11; baseline finish 2024-10-08 → 2024-10-11 |
| 65 | **Initial System Access for SAP S/4HANA Cloud** | 2024-09-03 A → 2024-10-17 A (+44d) | 2024-09-20 A → 2024-10-18 A (+28d) | 14d → 2d |  |  |  | baseline start 2024-09-12 → 2024-10-14; baseline finish 2024-09-16 → 2024-10-16 |
| 66 | Access Starter System and Reset Password | 2024-09-03 A → 2024-10-17 A (+44d) | 2024-09-10 A → 2024-10-18 A (+38d) | 6d → 1d |  |  | 30 → 64 | baseline start 2024-09-12 → 2024-10-14; baseline finish 2024-09-12 → 2024-10-14 |
| 67 | Create Users in the Starter System | 2024-09-10 A → 2024-10-17 A (+37d) | 2024-09-11 A → 2024-10-18 A (+37d) | 1d → 0d |  |  |  | baseline start 2024-09-13 → 2024-10-15; baseline finish 2024-09-13 → 2024-10-15 |
| 68 | Self-Activation of Project Team Members in the Identity Authentication Service | 2024-09-20 A → 2024-10-18 A (+28d) | 2024-09-20 A → 2024-10-18 A (+28d) | 1d → 0d |  |  |  | baseline start 2024-09-16 → 2024-10-16; baseline finish 2024-09-16 → 2024-10-16 |
| 69 | **Phase Closure and Sign-Off Phase Deliverables** | 2024-11-04 → 2024-10-25 A (-10d) | 2024-11-04 → 2024-10-25 A (-10d) | 1d → 0d | 0% → 100% | 13d → none |  | baseline start 2024-10-11 → 2024-10-16; baseline finish 2024-10-11 → 2024-10-16 |
| 70 | Explore Phase Signoff | 2024-11-04 → 2024-10-25 A (-10d) | 2024-11-04 → 2024-10-25 A (-10d) | 1d → 0d | 0% → 100% | 12d → none | 48FF → 53 | baseline start 2024-10-11 → 2024-10-16; baseline finish 2024-10-11 → 2024-10-16 |
| 71 | **Deliverables** | 2024-09-27 A → 2024-10-25 A (+28d) | 2024-10-21 A → 2024-10-25 A (+4d) | 19d → 1d |  |  |  | baseline start 2024-10-05 → 2024-10-10; baseline finish 2024-10-10 → 2024-10-15 |
| 72 | Fit to Standard documents with Process flow diagram, Gap Analysis | 2024-10-21 A → 2024-10-25 A (+4d) | 2024-10-21 A → 2024-10-25 A (+4d) |  |  |  |  | baseline start 2024-10-05 → 2024-10-10; baseline finish 2024-10-05 → 2024-10-10 |
| 73 | Core team training/ presentation | 2024-09-27 A → 2024-10-25 A (+28d) | 2024-09-27 A → 2024-10-25 A (+28d) |  |  |  |  | baseline start 2024-10-05 → 2024-10-10; baseline finish 2024-10-05 → 2024-10-10 |
| 74 | Initial Master data templates | 2024-10-18 A → 2024-10-25 A (+7d) | 2024-10-18 A → 2024-10-25 A (+7d) | 0d → 1d |  |  |  | baseline start 2024-10-10 → 2024-10-15; baseline finish 2024-10-10 → 2024-10-15 |

| ID | Task | Start | Finish | Duration | Complete | Total float | Predecessors | Other |
| --- | --- | --- | --- | --- | --- | --- | --- | --- |
| 75 | **Realize** | 2024-10-29 A → 2024-10-21 A (-8d) | 2024-12-24 → 2024-12-16 (-8d) | 47d → 39d | 0% → 1% | 327d → 36d |  | baseline start 2024-10-12 → 2024-10-15; baseline finish 2024-12-05 → 2024-12-18 |
| 76 | **Requirement gathering sheet (RGS)** | 2024-10-30 A → 2024-10-27 A (-3d) | 2024-11-08 → 2024-10-30 A (-9d) | 7d → 3d | 0% → 100% | 366d → none |  | baseline start 2024-10-12 → 2024-10-16; baseline finish 2024-10-16 → 2024-10-21 |
| 77 | Prepare RGS | 2024-10-30 A → 2024-10-27 A (-3d) | 2024-11-07 → 2024-10-30 A (-8d) |  | 0% → 100% | -8d → none | 48 → 53 | baseline start 2024-10-12 → 2024-10-16; baseline finish 2024-10-15 → 2024-10-18 |
| 78 | Submit RGS | 2024-11-08 → 2024-10-30 A (-9d) | 2024-11-08 → 2024-10-30 A (-9d) | 1d → 0d | 0% → 100% | 368d → none |  | baseline start 2024-10-16 → 2024-10-21; baseline finish 2024-10-16 → 2024-10-21 |
| 79 | **Functional Specifications** | 2024-10-30 → 2024-10-26 A (-4d) | 2024-11-05 → 2024-11-11 (+6d) | 4d → 9d |  | none → 61d |  | baseline start 2024-10-16 → 2024-10-22; baseline finish 2024-10-22 → 2024-10-29 |
| 80 | Prepare functional specfications | 2024-11-08 → 2024-10-31 A (-8d) | 2024-11-12 → 2024-11-07 (-5d) |  |  | -8d → 0d | 77 → 78 | baseline start 2024-10-16 → 2024-10-22; baseline finish 2024-10-19 → 2024-10-25 |
| 81 | Finalize development tracker | 2024-11-13 → 2024-10-26 A (-18d) | 2024-11-14 → 2024-11-11 (-3d) |  |  | -8d → 61d |  | baseline start 2024-10-21 → 2024-10-28; baseline finish 2024-10-22 → 2024-10-29 |
| 82 | **Solution Configuration** | 2024-10-29 A → 2024-10-25 A (-4d) | 2024-11-22 → 2024-11-07 (-15d) | 20d → 8d |  | 1d → 63d |  | baseline start 2024-10-21 → 2024-10-28; baseline finish 2024-11-02 → 2024-11-12 |
| 83 | Configure Processes and Functions in golden master (100) | 2024-10-29 A → 2024-10-25 A (-4d) | 2024-11-18 → 2024-10-31 A (-18d) | 5d → 0d | 0% → 100% | 1d → none |  | baseline start 2024-10-21 → 2024-10-28; baseline finish 2024-10-25 → 2024-11-05 |
| 84 | Transfer of Configuration to Dev testing | 2024-11-19 → 2024-10-31 A (-19d) | 2024-11-19 → 2024-10-31 A (-19d) | 1d → 0d | 0% → 100% | 1d → none |  | baseline start 2024-10-26 → 2024-11-06; baseline finish 2024-10-26 → 2024-11-06 |
| 85 | Unit testing-1 (Consultant) | 2024-11-20 → 2024-10-31 A (-20d) | 2024-11-21 → 2024-11-06 (-15d) | 2d → 3d |  | 1d → 64d |  | baseline start 2024-10-28 → 2024-11-07; baseline finish 2024-10-30 → 2024-11-11 |
| 86 | Document and Resolve Issues | 2024-11-20 → 2024-11-04 (-16d) | 2024-11-21 → 2024-11-06 (-15d) | 2d → 3d |  | 1d → 6d |  | baseline start 2024-10-28 → 2024-11-07; baseline finish 2024-10-30 → 2024-11-11 |
| 87 | Submit Unit Testing result & completion of baseline config | 2024-11-22 → 2024-11-07 (-15d) | 2024-11-22 → 2024-11-07 (-15d) |  |  | 1d → 6d |  | baseline start 2024-11-02 → 2024-11-12; baseline finish 2024-11-02 → 2024-11-12 |
| 88 | **Core team training & UT** | 2024-11-22 → 2024-11-08 (-14d) | 2024-12-05 → 2024-11-25 (-10d) |  |  | 1d → 6d |  | baseline start 2024-11-02 → 2024-11-13; baseline finish 2024-11-15 → 2024-11-28 |
| 89 | Plan for CTM training | 2024-11-22 → 2024-11-08 (-14d) | 2024-11-22 → 2024-11-08 (-14d) |  |  | 1d → 6d | 87FF → 87 | baseline start 2024-11-02 → 2024-11-13; baseline finish 2024-11-02 → 2024-11-13 |
| 90 | Making necessery training arrangement - PPT + tutorial | 2024-11-23 → 2024-11-11 (-12d) | 2024-11-25 → 2024-11-12 (-13d) |  |  | 1d → 6d |  | baseline start 2024-11-04 → 2024-11-14; baseline finish 2024-11-05 → 2024-11-15 |
| 91 | Conducting CTM Training (Module wise) | 2024-11-26 → 2024-11-13 (-13d) | 2024-11-28 → 2024-11-15 (-13d) |  |  | 1d → 6d |  | baseline start 2024-11-06 → 2024-11-18; baseline finish 2024-11-08 → 2024-11-20 |
| 92 | Unit Testing by Core team | 2024-11-29 → 2024-11-18 (-11d) | 2024-12-05 → 2024-11-25 (-10d) |  |  | 339d → 45d |  | baseline start 2024-11-09 → 2024-11-21; baseline finish 2024-11-15 → 2024-11-28 |
| 93 | **Quality System Request / Initial Setup** | 2024-11-05 → 2024-10-25 (-11d) | 2024-11-05 → 2024-10-25 (-11d) |  |  | 364d → 65d |  | baseline start 2024-10-12 → 2024-10-17; baseline finish 2024-10-12 → 2024-10-17 |
| 94 | Execute Initial Setup of the Quality System via SAP Central Business Configuration | 2024-11-05 → 2024-10-25 (-11d) | 2024-11-05 → 2024-10-25 (-11d) |  |  | 371d → 70d |  | baseline start 2024-10-12 → 2024-10-17; baseline finish 2024-10-12 → 2024-10-17 |
| 95 | Request Quality System via Manage Your Solution App | 2024-11-05 → 2024-10-25 (-11d) | 2024-11-05 → 2024-10-25 (-11d) |  |  | 366d → 65d |  | baseline start 2024-10-12 → 2024-10-17; baseline finish 2024-10-12 → 2024-10-17 |
| 96 | **Quality System Initial Access** | 2024-11-05 → 2024-10-25 (-11d) | 2024-11-11 → 2024-11-06 (-5d) | 6d → 7d |  | 364d → 64d |  | baseline start 2024-10-12 → 2024-10-17; baseline finish 2024-10-19 → 2024-10-25 |
| 97 | Receive Quality System and Reset Password | 2024-11-06 → 2024-10-28 (-9d) | 2024-11-06 → 2024-10-28 (-9d) |  |  | 366d → 65d |  | baseline start 2024-10-14 → 2024-10-18; baseline finish 2024-10-14 → 2024-10-18 |
| 98 | Create Preset Configuration User in the Quality System via Manage Your Solution App | 2024-11-07 → 2024-10-29 (-9d) | 2024-11-07 → 2024-10-29 (-9d) |  |  | 368d → 67d |  | baseline start 2024-10-15 → 2024-10-21; baseline finish 2024-10-15 → 2024-10-21 |
| 99 | Define Preset Parameters and Trigger System Activation via Manage Your Solution App | 2024-11-08 → 2024-10-30 (-9d) | 2024-11-08 → 2024-10-30 (-9d) |  |  | 368d → 67d |  | baseline start 2024-10-16 → 2024-10-22; baseline finish 2024-10-16 → 2024-10-22 |
| 100 | **Create Users in the Quality Server** | 2024-11-05 → 2024-10-25 (-11d) | 2024-11-09 → 2024-11-05 (-4d) | 5d → 6d |  | 364d → 64d |  | baseline start 2024-10-12 → 2024-10-17; baseline finish 2024-10-18 → 2024-10-24 |
| 101 | **Finalize list of users for QAS** | 2024-11-05 → 2024-10-25 (-11d) | 2024-11-09 → 2024-11-05 (-4d) | 5d → 6d |  | 364d → 64d |  | baseline start 2024-10-12 → 2024-10-17; baseline finish 2024-10-18 → 2024-10-24 |
| 102 | **Provide user authorization** | 2024-11-05 → 2024-10-25 (-11d) | 2024-11-09 → 2024-11-05 (-4d) | 5d → 6d |  | 364d → 64d |  | baseline start 2024-10-12 → 2024-10-17; baseline finish 2024-10-18 → 2024-10-24 |
| 103 | Finalize user authorization | 2024-11-05 → 2024-10-25 (-11d) | 2024-11-05 → 2024-10-28 (-8d) | 1d → 2d |  | 364d → 64d |  | baseline start 2024-10-12 → 2024-10-17; baseline finish 2024-10-14 → 2024-10-18 |
| 104 | Create roles and authorization | 2024-11-06 → 2024-10-29 (-8d) | 2024-11-06 → 2024-10-29 (-8d) |  |  | 364d → 64d |  | baseline start 2024-10-15 → 2024-10-21; baseline finish 2024-10-15 → 2024-10-21 |
| 105 | Testing of roles and authorization | 2024-11-07 → 2024-10-30 (-8d) | 2024-11-08 → 2024-11-04 (-4d) |  |  | 364d → 64d |  | baseline start 2024-10-16 → 2024-10-22; baseline finish 2024-10-17 → 2024-10-23 |
| 106 | Deployment of roles to users | 2024-11-09 → 2024-11-05 (-4d) | 2024-11-09 → 2024-11-05 (-4d) |  |  | 364d → 64d |  | baseline start 2024-10-18 → 2024-10-24; baseline finish 2024-10-18 → 2024-10-24 |
| 107 | Self-Activation of Project Team Members in the Identity Authentication Service | 2024-11-11 → 2024-11-06 (-5d) | 2024-11-11 → 2024-11-06 (-5d) |  |  | 364d → 64d |  | baseline start 2024-10-19 → 2024-10-25; baseline finish 2024-10-19 → 2024-10-25 |
| 108 | **Required Configuration Before System Use - SAP S/4HANA Cloud** | 2024-11-07 → 2024-10-29 (-9d) | 2024-11-07 → 2024-10-29 (-9d) |  |  | 364d → 65d |  | baseline start 2024-10-15 → 2024-10-21; baseline finish 2024-10-15 → 2024-10-21 |
| 109 | Configure system | 2024-11-07 → 2024-10-29 (-9d) | 2024-11-07 → 2024-10-29 (-9d) |  |  | 366d → 65d |  | baseline start 2024-10-15 → 2024-10-21; baseline finish 2024-10-15 → 2024-10-21 |
| 110 | **Standard Integration Setup in the Quality/Test System** | 2024-11-08 → 2024-10-30 (-9d) | 2024-11-11 → 2024-11-05 (-6d) |  |  | 364d → 65d |  | baseline start 2024-10-16 → 2024-10-22; baseline finish 2024-10-18 → 2024-10-24 |
| 111 | Set Up Integration using Cloud Integration Automation Service (CIAS) | 2024-11-08 → 2024-10-30 (-9d) | 2024-11-08 → 2024-10-30 (-9d) |  |  | 366d → 65d |  | baseline start 2024-10-16 → 2024-10-22; baseline finish 2024-10-16 → 2024-10-22 |
| 112 | Set Up Employee Central Integration (JB1) | 2024-11-09 → 2024-11-04 (-5d) | 2024-11-09 → 2024-11-04 (-5d) |  |  | 366d → 65d |  | baseline start 2024-10-17 → 2024-10-23; baseline finish 2024-10-17 → 2024-10-23 |
| 113 | Set Up Integrations in the Quality/Test System | 2024-11-11 → 2024-11-05 (-6d) | 2024-11-11 → 2024-11-05 (-6d) |  |  | 366d → 65d |  | baseline start 2024-10-18 → 2024-10-24; baseline finish 2024-10-18 → 2024-10-24 |
| 114 | **System Integration Test** | 2024-11-02 → 2024-10-21 (-12d) | 2024-12-24 → 2024-12-16 (-8d) | 45d → 39d |  | 15d → 11d |  | baseline start 2024-10-12 → 2024-10-15; baseline finish 2024-12-04 → 2024-12-18 |
| 115 | **Integration test Plan** | 2024-11-02 → 2024-10-21 (-12d) | 2024-11-29 → 2024-11-25 (-4d) |  |  | 15d → 11d |  | baseline start 2024-10-12 → 2024-10-15; baseline finish 2024-11-11 → 2024-11-22 |
| 116 | Identify scenerios for Integration test | 2024-11-29 → 2024-11-18 (-11d) | 2024-11-29 → 2024-11-19 (-10d) | 1d → 2d |  | 1d → 6d |  | baseline start 2024-11-09 → 2024-11-21; baseline finish 2024-11-11 → 2024-11-22 |
| 117 | Write scripts for Integration test | 2024-11-29 → 2024-11-18 (-11d) | 2024-11-29 → 2024-11-18 (-11d) |  |  | 1d → 6d |  | baseline start 2024-11-09 → 2024-11-21; baseline finish 2024-11-11 → 2024-11-21 |
| 118 | **Master data** | 2024-11-02 → 2024-10-21 (-12d) | 2024-11-16 → 2024-11-22 (+6d) | 13d → 23d |  | 359d → 52d |  | baseline start 2024-10-22 → 2024-10-15; baseline finish 2024-11-07 → 2024-11-18 |
| 119 | Receipt Master Data from NL | 2024-11-02 → 2024-10-21 (-12d) | 2024-11-13 → 2024-11-19 (+6d) | 10d → 20d |  | 359d → 52d | 47FS+10d → 47 | was named Receipt Master Data from PA; baseline start 2024-10-22 → 2024-10-15; baseline finish 2024-11-04 → 2024-11-13 |
| 120 | Upload Master data in QAS | 2024-11-14 → 2024-11-20 (+6d) | 2024-11-16 → 2024-11-22 (+6d) |  |  | 359d → 52d |  | baseline start 2024-11-05 → 2024-11-14; baseline finish 2024-11-07 → 2024-11-18 |
| 121 | **Identity and Access Management Planning and Design** | 2024-11-05 → 2024-10-25 (-11d) | 2024-11-21 → 2024-11-25 (+4d) | 15d → 20d |  | 13d → 7d |  | baseline start 2024-10-12 → 2024-10-17; baseline finish 2024-11-06 → 2024-11-15 |
| 122 | Finalize list of users | 2024-11-05 → 2024-10-25 (-11d) | 2024-11-15 → 2024-11-18 (+3d) | 10d → 15d |  | 13d → 7d |  | baseline start 2024-10-12 → 2024-10-17; baseline finish 2024-10-29 → 2024-11-08 |
| 123 | Provide & Check roles and authorization | 2024-11-16 → 2024-11-19 (+3d) | 2024-11-21 → 2024-11-25 (+4d) |  |  | 13d → 7d |  | baseline start 2024-10-30 → 2024-11-11; baseline finish 2024-11-06 → 2024-11-15 |
| 124 | **Conduct System integration test** | 2024-11-30 → 2024-11-19 (-11d) | 2024-12-20 → 2024-12-06 (-14d) | 18d → 14d |  | 1d → 6d |  | baseline start 2024-11-12 → 2024-11-22; baseline finish 2024-12-04 → 2024-12-11 |
| 125 | Perform Integration testing by Consultant | 2024-11-30 → 2024-11-19 (-11d) | 2024-12-05 → 2024-11-26 (-9d) | 5d → 6d |  | 1d → 6d |  | baseline start 2024-11-12 → 2024-11-22; baseline finish 2024-11-19 → 2024-11-29 |
| 126 | Perform User Acceptance test - CTM | 2024-12-06 → 2024-11-27 (-9d) | 2024-12-17 → 2024-12-04 (-13d) | 10d → 6d |  | 1d → 6d |  | baseline start 2024-11-20 → 2024-12-02; baseline finish 2024-11-30 → 2024-12-09 |
| 127 | Resolving the issues, if any | 2024-12-06 → 2024-11-27 (-9d) | 2024-12-17 → 2024-12-04 (-13d) | 10d → 6d |  | 1d → 6d |  | baseline start 2024-11-20 → 2024-12-02; baseline finish 2024-11-30 → 2024-12-09 |
| 128 | Retesting of scenarios | 2024-12-18 → 2024-12-05 (-13d) | 2024-12-20 → 2024-12-06 (-14d) | 3d → 2d |  | 1d → 39d |  | baseline start 2024-12-02 → 2024-12-10; baseline finish 2024-12-04 → 2024-12-11 |
| 129 | UAT (by CTM) signoff | 2024-12-20 → 2024-12-06 (-14d) | 2024-12-20 → 2024-12-06 (-14d) |  |  | 1d → 39d |  | baseline start 2024-12-04 → 2024-12-11; baseline finish 2024-12-04 → 2024-12-11 |
| 130 | **ABAP Development - SIT Critical** | 2024-11-19 → 2024-11-04 (-15d) | 2024-12-24 → 2024-12-16 (-8d) |  |  | 299d → 28d |  | baseline start 2024-10-26 → 2024-11-06; baseline finish 2024-12-03 → 2024-12-18 |
| 131 | Develop reports | 2024-11-19 → 2024-11-04 (-15d) | 2024-12-17 → 2024-12-06 (-11d) |  |  | 301d → 28d |  | baseline start 2024-10-26 → 2024-11-06; baseline finish 2024-11-26 → 2024-12-10 |
| 132 | Testing by consultant | 2024-11-22 → 2024-11-07 (-15d) | 2024-12-20 → 2024-12-11 (-9d) |  |  | 329d → 36d |  | baseline start 2024-10-30 → 2024-11-11; baseline finish 2024-11-29 → 2024-12-13 |
| 133 | Testing by CTM | 2024-11-26 → 2024-11-12 (-14d) | 2024-12-24 → 2024-12-16 (-8d) |  |  | 329d → 36d |  | baseline start 2024-11-05 → 2024-11-14; baseline finish 2024-12-03 → 2024-12-18 |
| 134 | Sign off Development | 2024-12-24 → 2024-12-16 (-8d) | 2024-12-24 → 2024-12-16 (-8d) |  |  | 329d → 36d |  | baseline start 2024-12-03 → 2024-12-18; baseline finish 2024-12-03 → 2024-12-18 |
| 140 | **Cutover Strategy** | 2024-12-21 → 2024-12-05 (-16d) | 2024-12-21 → 2024-12-09 (-12d) | 1d → 3d |  | 1d → 6d |  | baseline start 2024-12-05 → 2024-12-10; baseline finish 2024-12-05 → 2024-12-12 |
| 141 | Discussion on cutover strategy | 2024-12-21 → 2024-12-05 (-16d) | 2024-12-21 → 2024-12-06 (-15d) | 1d → 2d |  | 1d → 6d | 129 → 127 | baseline start 2024-12-05 → 2024-12-10; baseline finish 2024-12-05 → 2024-12-11 |
| 142 | Cutover & data responsibility Plan | 2024-12-21 → 2024-12-09 (-12d) | 2024-12-21 → 2024-12-09 (-12d) |  |  | 1d → 6d | 141FF → 141 | baseline start 2024-12-05 → 2024-12-12; baseline finish 2024-12-05 → 2024-12-12 |
| 143 | Communication to Organisation for Cutover | 2024-12-21 → 2024-12-09 (-12d) | 2024-12-21 → 2024-12-09 (-12d) |  |  | 1d → 6d |  | baseline start 2024-12-05 → 2024-12-12; baseline finish 2024-12-05 → 2024-12-12 |
| 144 | **End user training plan** | 2024-12-06 → 2024-11-26 (-10d) | 2024-12-07 → 2024-11-27 (-10d) |  |  | 337d → 45d |  | baseline start 2024-11-16 → 2024-11-29; baseline finish 2024-11-18 → 2024-12-02 |
| 145 | Preparation of End User training plan | 2024-12-06 → 2024-11-26 (-10d) | 2024-12-07 → 2024-11-27 (-10d) |  |  | 339d → 45d |  | baseline start 2024-11-16 → 2024-11-29; baseline finish 2024-11-18 → 2024-12-02 |
| 146 | Communicate plan to NL | 2024-12-07 → 2024-11-27 (-10d) | 2024-12-07 → 2024-11-27 (-10d) |  |  | 339d → 45d |  | was named Communicate plan to PA; baseline start 2024-11-18 → 2024-12-02; baseline finish 2024-11-18 → 2024-12-02 |
| 147 | **Production System Request** | 2024-11-05 → 2024-10-25 (-11d) | 2024-11-06 → 2024-10-28 (-9d) |  |  | 366d → 67d |  | baseline start 2024-10-12 → 2024-10-17; baseline finish 2024-10-14 → 2024-10-18 |
| 148 | Request for Production System | 2024-11-05 → 2024-10-25 (-11d) | 2024-11-05 → 2024-10-25 (-11d) |  |  | 366d → 67d |  | baseline start 2024-10-12 → 2024-10-17; baseline finish 2024-10-12 → 2024-10-17 |
| 149 | Request Access to the SAP S/4HANA Cloud Release Assessment Tool. | 2024-11-06 → 2024-10-28 (-9d) | 2024-11-06 → 2024-10-28 (-9d) |  |  | 366d → 67d |  | baseline start 2024-10-14 → 2024-10-18; baseline finish 2024-10-14 → 2024-10-18 |

| ID | Task | Start | Finish | Duration | Total float | Predecessors | Other |
| --- | --- | --- | --- | --- | --- | --- | --- |
| 150 | **Production System Initial Access** | 2024-11-07 → 2024-10-29 (-9d) | 2024-11-08 → 2024-10-30 (-9d) |  | 366d → 67d |  | baseline start 2024-10-15 → 2024-10-21; baseline finish 2024-10-16 → 2024-10-22 |
| 151 | Receive Production System and Reset Password | 2024-11-07 → 2024-10-29 (-9d) | 2024-11-07 → 2024-10-29 (-9d) |  | 366d → 67d |  | baseline start 2024-10-15 → 2024-10-21; baseline finish 2024-10-15 → 2024-10-21 |
| 152 | Transport Initial Change Project from Q-System to P-System | 2024-11-08 → 2024-10-30 (-9d) | 2024-11-08 → 2024-10-30 (-9d) |  | 366d → 67d |  | baseline start 2024-10-16 → 2024-10-22; baseline finish 2024-10-16 → 2024-10-22 |
| 153 | Phase Closure & Signoff Phase deliverables | 2024-12-21 → 2024-12-09 (-12d) | 2024-12-21 → 2024-12-09 (-12d) |  | 329d → 41d |  | baseline start 2024-12-05 → 2024-12-12; baseline finish 2024-12-05 → 2024-12-12 |
| 154 | **Deliverables** | 2024-11-23 → 2024-11-08 (-15d) | 2024-12-21 → 2024-12-09 (-12d) | 25d → 22d | 329d → 41d |  | baseline start 2024-11-04 → 2024-11-13; baseline finish 2024-12-05 → 2024-12-12 |
| 155 | D: Test scripts | 2024-11-30 → 2024-11-19 (-11d) | 2024-11-30 → 2024-11-19 (-11d) |  | 347d → 55d |  | baseline start 2024-11-12 → 2024-11-22; baseline finish 2024-11-12 → 2024-11-22 |
| 156 | D: Unit test result document | 2024-11-23 → 2024-11-08 (-15d) | 2024-11-23 → 2024-11-08 (-15d) |  | 353d → 62d |  | baseline start 2024-11-04 → 2024-11-13; baseline finish 2024-11-04 → 2024-11-13 |
| 157 | D: Integration testing document | 2024-12-06 → 2024-11-27 (-9d) | 2024-12-06 → 2024-11-27 (-9d) |  | 342d → 49d |  | baseline start 2024-11-20 → 2024-12-02; baseline finish 2024-11-20 → 2024-12-02 |
| 158 | D: User Acceptance testing document | 2024-12-20 → 2024-12-06 (-14d) | 2024-12-20 → 2024-12-06 (-14d) |  | 330d → 42d |  | baseline start 2024-12-04 → 2024-12-11; baseline finish 2024-12-04 → 2024-12-11 |
| 159 | D: Final master data templates | 2024-12-21 → 2024-12-09 (-12d) | 2024-12-21 → 2024-12-09 (-12d) |  | 329d → 41d |  | baseline start 2024-12-05 → 2024-12-12; baseline finish 2024-12-05 → 2024-12-12 |
| 160 | D: Data migration strategy document | 2024-12-21 → 2024-12-09 (-12d) | 2024-12-21 → 2024-12-09 (-12d) |  | 329d → 41d |  | baseline start 2024-12-05 → 2024-12-12; baseline finish 2024-12-05 → 2024-12-12 |
| 161 | **Deploy** | 2024-12-07 → 2024-10-21 (-47d) | 2025-01-27 → 2025-01-02 (-25d) | 43d → 51d | 9d → 0d |  | baseline start 2024-11-19 → 2024-10-15; baseline finish 2025-01-07 → 2024-12-31 |
| 162 | **ABAP Developments Pre Go Live** | 2024-12-18 → 2024-11-28 (-20d) | 2025-01-27 → 2024-12-27 (-31d) | 34d → 21d | 299d → 28d |  | baseline start 2024-11-27 → 2024-12-02; baseline finish 2025-01-06 → 2024-12-31 |
| 163 | Develop reports | 2024-12-18 → 2024-11-28 (-20d) | 2025-01-18 → 2024-12-18 (-31d) | 27d → 15d | 299d → 28d | 131 → 131FS-7d | baseline start 2024-11-27 → 2024-12-02; baseline finish 2024-12-28 → 2024-12-20 |
| 164 | Testing by consultant | 2024-12-21 → 2024-12-03 (-18d) | 2025-01-22 → 2024-12-23 (-30d) | 27d → 15d | 299d → 28d |  | baseline start 2024-11-30 → 2024-12-05; baseline finish 2025-01-01 → 2024-12-26 |
| 165 | Testing by CTM | 2024-12-24 → 2024-12-05 (-19d) | 2025-01-24 → 2024-12-26 (-29d) | 27d → 15d | 299d → 28d |  | baseline start 2024-12-03 → 2024-12-09; baseline finish 2025-01-03 → 2024-12-30 |
| 166 | Sign off Development | 2025-01-25 → 2024-12-27 (-29d) | 2025-01-27 → 2024-12-27 (-31d) | 2d → 1d | 299d → 28d |  | baseline start 2025-01-04 → 2024-12-31; baseline finish 2025-01-06 → 2024-12-31 |
| 167 | **End User Training** | 2024-12-23 → 2024-12-10 (-13d) | 2025-01-03 → 2024-12-23 (-11d) |  | 318d → 30d |  | baseline start 2024-12-06 → 2024-12-13; baseline finish 2024-12-17 → 2024-12-27 |
| 168 | Prepare end user training manual | 2024-12-23 → 2024-12-10 (-13d) | 2024-12-24 → 2024-12-11 (-13d) |  | 318d → 30d |  | baseline start 2024-12-06 → 2024-12-13; baseline finish 2024-12-07 → 2024-12-16 |
| 169 | Conduct end user training | 2024-12-26 → 2024-12-12 (-14d) | 2024-12-31 → 2024-12-18 (-13d) |  | 318d → 30d |  | baseline start 2024-12-09 → 2024-12-17; baseline finish 2024-12-13 → 2024-12-23 |
| 170 | Conduct training to HODs/Management | 2025-01-01 → 2024-12-19 (-13d) | 2025-01-03 → 2024-12-23 (-11d) |  | 319d → 31d |  | baseline start 2024-12-14 → 2024-12-24; baseline finish 2024-12-17 → 2024-12-27 |
| 171 | **Production Environment Preparation** | 2024-12-21 → 2024-12-09 (-12d) | 2024-12-24 → 2024-12-11 (-13d) |  | 327d → 39d |  | baseline start 2024-12-05 → 2024-12-12; baseline finish 2024-12-07 → 2024-12-16 |
| 172 | Transport final configurations | 2024-12-21 → 2024-12-09 (-12d) | 2024-12-21 → 2024-12-09 (-12d) |  | 327d → 39d |  | baseline start 2024-12-05 → 2024-12-12; baseline finish 2024-12-05 → 2024-12-12 |
| 173 | Maintain number ranges | 2024-12-23 → 2024-12-10 (-13d) | 2024-12-23 → 2024-12-10 (-13d) |  | 327d → 39d |  | baseline start 2024-12-06 → 2024-12-13; baseline finish 2024-12-06 → 2024-12-13 |
| 174 | Maintain client specific data | 2024-12-24 → 2024-12-11 (-13d) | 2024-12-24 → 2024-12-11 (-13d) |  | 327d → 39d |  | baseline start 2024-12-07 → 2024-12-16; baseline finish 2024-12-07 → 2024-12-16 |
| 175 | **User creation** | 2024-12-09 → 2024-11-28 (-11d) | 2025-01-04 → 2024-12-24 (-11d) | 23d → 19d | 318d → 30d |  | baseline start 2024-11-19 → 2024-12-03; baseline finish 2024-12-18 → 2024-12-30 |
| 176 | Finalize list of users for production enviornment | 2024-12-09 → 2024-11-28 (-11d) | 2024-12-10 → 2024-11-29 (-11d) |  | 337d → 45d |  | baseline start 2024-11-19 → 2024-12-03; baseline finish 2024-11-20 → 2024-12-04 |
| 177 | Finalise Authorization Matrix | 2024-12-11 → 2024-12-02 (-9d) | 2024-12-12 → 2024-12-03 (-9d) |  | 337d → 45d |  | baseline start 2024-11-21 → 2024-12-05; baseline finish 2024-11-22 → 2024-12-06 |
| 178 | Check roles and authorization | 2025-01-01 → 2024-12-19 (-13d) | 2025-01-04 → 2024-12-24 (-11d) |  | 318d → 30d |  | baseline start 2024-12-14 → 2024-12-24; baseline finish 2024-12-18 → 2024-12-30 |
| 179 | **Data preparation and upload** | 2024-12-07 → 2024-10-21 (-47d) | 2025-01-10 → 2024-12-31 (-10d) | 29d → 49d | 9d → 0d |  | baseline start 2024-11-28 → 2024-10-15; baseline finish 2025-01-06 → 2024-12-26 |
| 180 | Receipt of master data | 2024-12-07 → 2024-10-21 (-47d) | 2024-12-18 → 2024-12-17 (-1d) | 10d → 40d | 9d → 0d | 47FS+40d → 47 | baseline start 2024-11-28 → 2024-10-15; baseline finish 2024-12-20 → 2024-12-11 |
| 181 | Validate & cleanse master data | 2024-12-19 → 2024-12-18 (-1d) |  | 1d → 2d | 9d → 0d |  | baseline start 2024-12-21 → 2024-12-12; baseline finish 2024-12-21 → 2024-12-13 |
| 182 | Upload master data in Production |  | 2024-12-24 → 2024-12-26 (+2d) |  | 9d → 0d |  | baseline start 2024-12-23 → 2024-12-16; baseline finish 2024-12-27 → 2024-12-19 |
| 183 | Confirm uploaded master data | 2024-12-26 → 2024-12-27 (+1d) | 2024-12-26 → 2024-12-27 (+1d) |  | 326d → 28d |  | baseline start 2024-12-28 → 2024-12-20; baseline finish 2024-12-28 → 2024-12-20 |
| 184 | Receipt of cutover data | 2024-12-23 → 2024-12-10 (-13d) | 2025-01-03 → 2024-12-17 (-17d) | 10d → 6d | 1d → 6d |  | baseline start 2024-12-06 → 2024-12-13; baseline finish 2024-12-30 → 2024-12-20 |
| 185 | Validate & cleanse cutover data | 2025-01-04 → 2024-12-10 (-25d) | 2025-01-10 → 2024-12-17 (-24d) |  | 313d → 35d | 184 → 143 | baseline start 2024-12-31 → 2024-12-13; baseline finish 2025-01-06 → 2024-12-20 |
| 186 | Upload cutover data in production | 2025-01-04 → 2024-12-27 (-8d) | 2025-01-08 → 2024-12-31 (-8d) | 4d → 3d | 1d → 0d |  | baseline start 2024-12-31 → 2024-12-23; baseline finish 2025-01-06 → 2024-12-26 |
| 187 | Check and validate uploaded data | 2025-01-08 → 2024-12-31 (-8d) | 2025-01-08 → 2024-12-31 (-8d) |  | 1d → 0d |  | baseline start 2025-01-06 → 2024-12-26; baseline finish 2025-01-06 → 2024-12-26 |
| 188 | **Deliverables** | 2024-12-11 → 2024-12-02 (-9d) | 2024-12-28 → 2024-12-31 (+3d) | 15d → 21d | 324d → 26d |  | baseline start 2024-11-21 → 2024-12-05; baseline finish 2024-12-31 → 2024-12-24 |
| 189 | D: End user training manual | 2024-12-26 → 2024-12-12 (-14d) | 2024-12-28 → 2024-12-16 (-12d) |  | 324d → 36d |  | baseline start 2024-12-09 → 2024-12-17; baseline finish 2024-12-11 → 2024-12-19 |
| 190 | D: Data migration plan & checklist | 2024-12-19 → 2024-12-18 (-1d) | 2024-12-21 → 2024-12-20 (-1d) |  | 329d → 32d |  | baseline start 2024-12-21 → 2024-12-12; baseline finish 2024-12-24 → 2024-12-16 |
| 191 | D: Master data upload programs | 2024-12-26 → 2024-12-27 (+1d) | 2024-12-28 → 2024-12-31 (+3d) |  | 324d → 26d |  | baseline start 2024-12-28 → 2024-12-20; baseline finish 2024-12-31 → 2024-12-24 |
| 192 | D: Sample data upload validation | 2024-12-26 → 2024-12-27 (+1d) | 2024-12-26 → 2024-12-27 (+1d) |  | 326d → 28d |  | baseline start 2024-12-28 → 2024-12-20; baseline finish 2024-12-28 → 2024-12-20 |
| 193 | D: Final SAP Authorization matrix | 2024-12-11 → 2024-12-02 (-9d) | 2024-12-11 → 2024-12-02 (-9d) |  | 338d → 46d |  | baseline start 2024-11-21 → 2024-12-05; baseline finish 2024-11-21 → 2024-12-05 |
| 194 | **Phase Closure & Sign Off Phase Deliverables** | 2025-01-09 → 2025-01-01 (-8d) | 2025-01-09 → 2025-01-02 (-7d) | 1d → 2d | 1d → 0d |  | baseline start 2025-01-07 → 2024-12-27; baseline finish 2025-01-07 → 2024-12-30 |
| 195 | Deploy signoff | 2025-01-09 → 2025-01-01 (-8d) | 2025-01-09 → 2025-01-01 (-8d) |  | 1d → 0d |  | baseline start 2025-01-07 → 2024-12-27; baseline finish 2025-01-07 → 2024-12-27 |
| 196 | Completion of Final Preparation (Deploy) Phase | 2025-01-09 → 2025-01-02 (-7d) | 2025-01-09 → 2025-01-02 (-7d) |  | 1d → 0d | 195FF → 195 | baseline start 2025-01-07 → 2024-12-30; baseline finish 2025-01-07 → 2024-12-30 |
| 197 | Go Live | 2025-01-10 → 2025-01-03 (-7d) | 2025-01-10 → 2025-01-03 (-7d) |  | 1d → 0d |  | baseline start 2025-01-08 → 2024-12-31; baseline finish 2025-01-08 → 2024-12-31 |
| 198 | **Stabilization** | 2025-01-11 → 2025-01-06 (-5d) | 2025-02-11 → 2025-02-05 (-6d) | 27d → 23d | 1d → 0d |  | baseline start 2025-01-09 → 2025-01-01; baseline finish 2025-02-08 → 2025-01-31 |
| 199 | Stabilization (Post Go live Support) | 2025-01-11 → 2025-01-06 (-5d) | 2025-02-11 → 2025-02-05 (-6d) | 27d → 23d | 1d → 0d |  | was named Stabilization; baseline start 2025-01-09 → 2025-01-01; baseline finish 2025-02-08 → 2025-01-31 |
| 200 | **Deliverables** | 2025-01-11 → 2025-01-06 (-5d) | 2025-02-11 → 2025-02-05 (-6d) | 27d → 23d | 286d → 0d |  | baseline start 2025-01-09 → 2025-01-01; baseline finish 2025-02-08 → 2025-01-31 |
| 201 | D: Issue list with resolution status | 2025-01-11 → 2025-01-06 (-5d) | 2025-02-11 → 2025-02-05 (-6d) | 27d → 23d | 286d → 0d |  | baseline start 2025-01-09 → 2025-01-01; baseline finish 2025-02-08 → 2025-01-31 |
| 202 | D: Configuration documents | 2025-01-11 → 2025-01-06 (-5d) | 2025-02-11 → 2025-02-05 (-6d) | 27d → 23d | 286d → 0d |  | baseline start 2025-01-09 → 2025-01-01; baseline finish 2025-02-08 → 2025-01-31 |
| 203 | D: FS & TS | 2025-01-11 → 2025-01-06 (-5d) | 2025-02-11 → 2025-02-05 (-6d) | 27d → 23d | 286d → 0d |  | baseline start 2025-01-09 → 2025-01-01; baseline finish 2025-02-08 → 2025-01-31 |
| 204 | D: Cre team training document | 2025-01-11 → 2025-01-06 (-5d) | 2025-02-11 → 2025-02-05 (-6d) | 27d → 23d | 286d → 0d |  | baseline start 2025-01-09 → 2025-01-01; baseline finish 2025-02-08 → 2025-01-31 |

## Version 6 (data date 2022-10-13, saved 2024-11-16, file TASK_00631275_1_16112024171705.mpp)

Note of the change: Add project files.

Last finish 2025-02-05 → 2026-04-01 (+420d). Complete tasks 44 → 48.

Added:

| ID | Task | Duration | Start | Finish | Predecessors | Constraint |
| --- | --- | --- | --- | --- | --- | --- |
| 49 | Integration with ASP/GSP | 1d | 2024-10-09 A | 2024-10-09 A | 40 |  |
| 50 | Integration with bank host to host (upto 3) | 1d | 2024-10-09 A | 2024-10-09 A | 40 | as late as possible |
| 51 | Integration with Primavera | 4d | 2024-10-11 A | 2024-10-25 A | 40 |  |
| 52 | Integration with third party payroll | 17d | 2024-10-11 A | 2024-11-12 A | 40 | finish no earlier than 2024-11-12 |
| 200 | One month extended support | 24d | 2025-03-04 | 2025-04-01 | 193 |  |
| 201 | **Phase 2: One Year AMC** | 261d | 2025-04-01 | 2026-04-01 |  |  |
| 202 | AMC Support | 261d | 2025-04-01 | 2026-04-01 | 200 | finish no earlier than 2026-03-09 |

Removed: 50 Integration with bank host to host (upto2); 51 Integration with HRMS (Payroll); 52 Integration with Cloud Steer CRM; 53 Integration with DMS; 135 Third Party Interface; 136 Development; 137 Testing by consultant; 138 Testing by CTM; 139 Sign off Development

Changed:

| ID | Task | Start | Finish | Duration | Complete | Total float | Predecessors | Other |
| --- | --- | --- | --- | --- | --- | --- | --- | --- |
| 1 | **SAP Implementation at PA** | 2024-09-05 A → 2024-09-02 A (-3d) | 2025-02-05 → 2026-04-01 (+420d) | 105d → 434.8d | 11% → 20% |  |  | was named SAP Implementation at NEO LIV; baseline start 2024-09-05 → 2024-09-02; baseline finish 2025-01-31 → 2026-03-09 |
| 2 | **Phase 1: S4 HANA Implementation (Public Cloud)** | 2024-09-05 A → 2024-09-02 A (-3d) | 2025-02-05 → 2025-04-01 (+55d) | 105d → 173.8d | 11% → 28% | 0d → 261d |  | was named Wave 1A: S4 HANA Implementation (Public Cloud); baseline start 2024-09-05 → 2024-09-02; baseline finish 2025-01-31 → 2025-03-08 |
| 3 | **Implementation** | 2024-09-05 A → 2024-09-02 A (-3d) | 2025-01-02 → 2025-01-31 (+29d) | 81d → 122.8d | 13% → 36% | 24d → 312d |  | baseline start 2024-09-05 → 2024-09-02; baseline finish 2024-12-31 → 2025-01-07 |
| 4 | **Prepare** | 2024-09-05 A → 2024-09-02 A (-3d) | 2024-09-23 A → 2024-09-10 A (-13d) | 12d → 7d |  |  |  | baseline start 2024-09-05 → 2024-09-02; baseline finish 2024-09-11 → 2024-09-10 |
| 5 | **Project Kick Off and On-Boarding** | 2024-09-05 A → 2024-09-02 A (-3d) | 2024-09-05 A → 2024-09-10 A (+5d) | 1d → 7d |  |  |  | baseline start 2024-09-05 → 2024-09-02; baseline finish 2024-09-05 → 2024-09-09 |
| 6 | On-board Project Team | 2024-09-05 A → 2024-09-02 A (-3d) | 2024-09-05 A → 2024-09-10 A (+5d) | 1d → 7d |  |  |  | constraint start no earlier than 2024-09-05 → finish no earlier than 2024-09-09; baseline start 2024-09-05 → 2024-09-02; baseline finish 2024-09-05 → 2024-09-09 |
| 7 | Conduct project kickoff |  |  |  |  |  | 6SS → 6SS+3d | was named Conduct Kickoff Workshop; constraint none → start no earlier than 2024-09-05 |
| 8 | **Project Plan** | 2024-09-05 A → 2024-09-02 A (-3d) | 2024-09-19 A → 2024-09-05 A (-14d) | 10d → 4d |  |  |  | baseline start 2024-09-05 → 2024-09-02; baseline finish 2024-09-11 → 2024-09-05 |
| 9 | Prepare & submit Initial project plan | 2024-09-05 A → 2024-09-02 A (-3d) | 2024-09-06 A → 2024-09-02 A (-4d) | 2d → 1d |  |  |  | baseline start 2024-09-05 → 2024-09-02; baseline finish 2024-09-06 → 2024-09-02 |
| 10 | Review project plan | 2024-09-09 A → 2024-09-03 A (-6d) | 2024-09-09 A → 2024-09-03 A (-6d) |  |  |  |  | baseline start 2024-09-09 → 2024-09-03; baseline finish 2024-09-09 → 2024-09-03 |
| 11 | Make necessary changes in the plan | 2024-09-10 A → 2024-09-04 A (-6d) | 2024-09-10 A → 2024-09-04 A (-6d) |  |  |  |  | baseline start 2024-09-10 → 2024-09-04; baseline finish 2024-09-10 → 2024-09-04 |
| 12 | Submit revised plan | 2024-09-10 A → 2024-09-04 A (-6d) | 2024-09-10 A → 2024-09-04 A (-6d) |  |  |  |  | baseline start 2024-09-10 → 2024-09-04; baseline finish 2024-09-10 → 2024-09-04 |
| 13 | Approval of project plan by PA | 2024-09-11 A → 2024-09-05 A (-6d) | 2024-09-19 A → 2024-09-05 A (-14d) | 6d → 1d |  |  |  | was named Approval of project plan by NL; baseline start 2024-09-11 → 2024-09-05; baseline finish 2024-09-11 → 2024-09-05 |
| 14 | **Project Governance** | 2024-09-09 A → 2024-09-06 A (-3d) |  | 1d → 2d |  |  |  |  |
| 15 | Establish Project Governance Mechanism | 2024-09-09 A → 2024-09-06 A (-3d) |  |  |  |  |  |  |
| 16 | Define Project Communications and Reporting | 2024-09-09 A → 2024-09-06 A (-3d) |  |  |  |  |  |  |
| 17 | **Project Standards, Infrastructure & Solution** |  | 2024-09-09 A → 2024-09-06 A (-3d) | 2d → 1d |  |  |  | baseline finish 2024-09-09 → 2024-09-06 |
| 18 | Set Up Project Team Logistics and Infrastructure |  | 2024-09-09 A → 2024-09-06 A (-3d) | 2d → 1d |  |  |  | baseline finish 2024-09-09 → 2024-09-06 |
| 19 | Create a Document Repository for the Implementation Project Team |  | 2024-09-09 A → 2024-09-06 A (-3d) | 2d → 1d |  |  |  | baseline finish 2024-09-09 → 2024-09-06 |
| 20 | **Fit-to-Standard Analysis Preparation** | 2024-09-10 A → 2024-09-09 A (-1d) | 2024-09-12 A → 2024-09-09 A (-3d) | 3d → 1d |  |  |  | baseline start 2024-09-10 → 2024-09-09; baseline finish 2024-09-10 → 2024-09-09 |
| 21 | Prepare for Fit-to-Standard Workshops | 2024-09-10 A → 2024-09-09 A (-1d) | 2024-09-12 A → 2024-09-09 A (-3d) | 3d → 1d |  |  |  | baseline start 2024-09-10 → 2024-09-09; baseline finish 2024-09-10 → 2024-09-09 |
| 22 | **Phase Closure and Sign-Off Phase Deliverables** | 2024-09-23 A → 2024-09-10 A (-13d) | 2024-09-23 A → 2024-09-10 A (-13d) |  |  |  |  | baseline start 2024-09-11 → 2024-09-10; baseline finish 2024-09-11 → 2024-09-10 |
| 23 | Prepare Phase Signoff | 2024-09-23 A → 2024-09-10 A (-13d) | 2024-09-23 A → 2024-09-10 A (-13d) | 1d → 0d |  |  |  | baseline start 2024-09-11 → 2024-09-10; baseline finish 2024-09-11 → 2024-09-10 |
| 24 | **Deliverables** | 2024-09-23 A → 2024-09-10 A (-13d) | 2024-09-23 A → 2024-09-10 A (-13d) |  |  |  |  | baseline start 2024-09-11 → 2024-09-10; baseline finish 2024-09-11 → 2024-09-10 |
| 25 | D: Baseline Project Plan | 2024-09-23 A → 2024-09-10 A (-13d) | 2024-09-23 A → 2024-09-10 A (-13d) |  |  |  |  | baseline start 2024-09-11 → 2024-09-10; baseline finish 2024-09-11 → 2024-09-10 |
| 26 | D: Project kickoff presentation | 2024-09-23 A → 2024-09-10 A (-13d) | 2024-09-23 A → 2024-09-10 A (-13d) |  |  |  |  | baseline start 2024-09-11 → 2024-09-10; baseline finish 2024-09-11 → 2024-09-10 |
| 27 | **Explore** | 2024-09-09 A → 2024-09-02 A (-7d) | 2024-10-25 → 2024-11-13 (+19d) | 33d → 56d | 57% → 99% | 70d → 378.8d |  | baseline start 2024-09-09 → 2024-09-10; baseline finish 2024-10-16 → 2024-10-11 |
| 28 | **Requirement gathering** | 2024-09-09 A → 2024-09-02 A (-7d) | 2024-09-12 A → 2024-09-17 A (+5d) | 4d → 12d |  |  |  | baseline start 2024-09-09 → 2024-09-10; baseline finish 2024-09-12 → 2024-09-11 |
| 29 | Review AS IS document | 2024-09-09 A → 2024-09-02 A (-7d) | 2024-09-10 A → 2024-09-17 A (+7d) | 2d → 6d |  |  | 7SS+2d → 21 | baseline start 2024-09-09 → 2024-09-10; baseline finish 2024-09-10 → 2024-09-11 |
| 30 | Update AS IS document as per discussion | 2024-09-11 A → 2024-09-02 A (-9d) | 2024-09-12 A → 2024-09-17 A (+5d) | 2d → 12d |  |  | 29 → 29SS | baseline start 2024-09-11 → 2024-09-10; baseline finish 2024-09-12 → 2024-09-11 |
| 31 | **Fit-to-Standard analysis** | 2024-09-16 A → 2024-09-17 A (+1d) | 2024-09-19 A → 2024-09-27 A (+8d) | 3d → 9d |  |  |  | baseline start 2024-09-16 → 2024-09-12; baseline finish 2024-09-19 → 2024-09-16 |
| 32 | Conduct workshop for all modules | 2024-09-16 A → 2024-09-17 A (+1d) | 2024-09-19 A → 2024-09-27 A (+8d) | 3d → 8d |  |  | 30FS+1d → 30 | baseline start 2024-09-16 → 2024-09-12; baseline finish 2024-09-19 → 2024-09-16 |
| 33 | **Fit to Standard analysis documentation** | 2024-09-20 A → 2024-09-16 A (-4d) | 2024-10-22 → 2024-11-12 (+21d) | 22d → 45d | 85% → 98% | 73d → 379.8d |  | baseline start 2024-09-20 → 2024-09-17; baseline finish 2024-10-15 → 2024-10-11 |
| 34 | Document Initial Configuration Settings for SAP Central Business Configuration | 2024-09-20 A → 2024-09-16 A (-4d) | 2024-09-23 A → 2024-09-16 A (-7d) | 2d → 1d |  |  |  | baseline start 2024-09-20 → 2024-09-17; baseline finish 2024-09-23 → 2024-09-18 |
| 35 | Document Scope via SAP Central Business Configuration | 2024-09-24 A → 2024-09-17 A (-7d) | 2024-09-25 A → 2024-09-19 A (-6d) | 2d → 3d |  |  |  | baseline start 2024-09-24 → 2024-09-19; baseline finish 2024-09-25 → 2024-09-20 |
| 36 | **Document and Maintain Business Process Flows** | 2024-09-24 A → 2024-09-20 A (-4d) | 2024-10-21 → 2024-11-07 A (+17d) | 19d → 37d | 94% → 100% | 74d → none |  | baseline start 2024-09-20 → 2024-09-17; baseline finish 2024-10-09 → 2024-10-04 |
| 37 | Prepare fit-to-standard Document and KDS | 2024-09-24 A → 2024-09-20 A (-4d) | 2024-09-28 A → 2024-10-01 A (+3d) | 4d → 2.5d |  |  |  | was named Prepare BBP Document and KDS; baseline start 2024-09-20 → 2024-09-17; baseline finish 2024-09-26 → 2024-09-23 |
| 38 | Submition of Fit-to-standard and KDS | 2024-09-30 A → 2024-09-23 A (-7d) | 2024-09-30 A → 2024-10-01 A (+1d) | 1d → 0d |  |  |  | was named Submition of BBP and KDS; baseline start 2024-09-27 → 2024-09-24; baseline finish 2024-09-27 → 2024-09-24 |
| 39 | Review of fit-to-standard & KDS by CTM | 2024-10-04 A → 2024-09-25 A (-9d) | 2024-10-14 A → 2024-10-02 A (-12d) | 7d → 0d |  |  |  | was named Review of BBP & KDS by CTM; baseline start 2024-09-30 → 2024-09-25; baseline finish 2024-10-07 → 2024-10-01 |
| 40 | Solution Walkthrough | 2024-10-15 A → 2024-10-03 A (-12d) | 2024-10-18 A → 2024-10-21 A (+3d) | 4d → 16d |  |  |  | was named BBP Walkthrough; constraint none → finish no earlier than 2024-10-21; baseline start 2024-10-08 → 2024-10-03; baseline finish 2024-10-08 → 2024-10-03 |
| 41 | Fit-to-Standard document Signoff | 2024-10-21 → 2024-10-22 A (+1d) | 2024-10-21 → 2024-11-07 A (+17d) | 1d → 13d | 0% → 100% | 78d → none |  | was named BBP Signff; constraint none → finish no earlier than 2024-11-04; baseline start 2024-10-09 → 2024-10-04; baseline finish 2024-10-09 → 2024-10-04 |
| 42 | Document Configuration Values | 2024-10-21 → 2024-10-14 A (-7d) | 2024-10-22 → 2024-11-08 (+17d) | 2d → 14d | 0% → 85% | 78d → 382.8d |  | constraint none → finish no earlier than 2024-11-08; baseline start 2024-10-09 → 2024-10-04; baseline finish 2024-10-10 → 2024-10-05 |
| 43 | **Data migration requirements** | 2024-10-16 A → 2024-10-07 A (-9d) | 2024-10-18 A → 2024-10-22 A (+4d) | 3d → 14d |  |  |  | was named Document Master Data Requirements; baseline start 2024-10-11 → 2024-10-07; baseline finish 2024-10-14 → 2024-10-09 |
| 44 | Identify master data requirement | 2024-10-16 A → 2024-10-07 A (-9d) | 2024-10-17 A → 2024-10-07 A (-10d) |  |  |  |  | was named Identify masterdata requirement; baseline start 2024-10-11 → 2024-10-07; baseline finish 2024-10-11 → 2024-10-07 |
| 45 | Prepare and explain master data template | 2024-10-17 A → 2024-10-10 A (-7d) | 2024-10-17 A → 2024-10-22 A (+5d) | 1d → 11d |  |  | 44SS → 44 | was named Prepare and explain masterdata template; constraint none → as late as possible; baseline start 2024-10-11 → 2024-10-08; baseline finish 2024-10-11 → 2024-10-09 |
| 46 | Circulate master data template | 2024-10-18 A → 2024-10-10 A (-8d) | 2024-10-18 A → 2024-10-22 A (+4d) | 1d → 8d |  |  | 45 → 45FF | was named Circulate masterdata template; baseline start 2024-10-14 → 2024-10-09; baseline finish 2024-10-14 → 2024-10-09 |
| 47 | Confirm Backlog and prioritise (SIT/UAT, Golive, Post-Golive) | 2024-10-21 → 2024-10-11 A (-10d) | 2024-10-21 → 2024-11-12 A (+22d) | 1d → 10d | 0% → 100% | 74d → none |  | constraint none → as late as possible; baseline start 2024-10-15 → 2024-10-10; baseline finish 2024-10-15 → 2024-10-11 |
| 48 | **Integration Planning and Design** | 2024-10-21 → 2024-10-09 A (-12d) | 2024-10-25 → 2024-11-12 A (+18d) | 5d → 28d | 0% → 100% | 70d → none |  | baseline start 2024-10-09 → 2024-10-04; baseline finish 2024-10-15 → 2024-10-09 |
| 53 | **Getting Started with your SAP Implementation** | 2024-09-26 → 2024-10-07 A (+11d) | 2024-10-04 → 2024-10-07 A (+3d) | 6d → 1d | 0% → 100% | 85d → none |  | baseline start 2024-09-26 → 2024-09-23; baseline finish 2024-10-04 → 2024-10-01 |
| 54 | Review Overview Documentation | 2024-09-26 → 2024-10-07 A (+11d) | 2024-09-27 → 2024-10-07 A (+10d) | 2d → 1d | 0% → 100% | 90d → none |  | baseline start 2024-09-26 → 2024-09-23; baseline finish 2024-09-27 → 2024-09-24 |
| 55 | Organize Provisioning Emails | 2024-09-30 → 2024-10-07 A (+7d) | 2024-10-01 → 2024-10-07 A (+6d) | 2d → 1d | 0% → 100% | 90d → none |  | baseline start 2024-09-30 → 2024-09-25; baseline finish 2024-10-01 → 2024-09-27 |
| 56 | Ensure Project Team Members Access to the SAP Support Portal, SAP Best Practices Explorer, and SAP Customer Communities | 2024-10-03 → 2024-10-07 A (+4d) | 2024-10-04 → 2024-10-07 A (+3d) | 2d → 1d | 0% → 100% | 90d → none |  | baseline start 2024-10-03 → 2024-09-30; baseline finish 2024-10-04 → 2024-10-01 |
| 57 | **SAP Cloud ALM Onboarding** | 2024-10-07 A → 2024-09-03 A (-34d) | 2024-10-09 A → 2024-09-13 A (-26d) | 3d → 9d |  |  |  | baseline start 2024-10-07 → 2024-10-03; baseline finish 2024-10-08 → 2024-10-04 |
| 58 | Request SAP Cloud ALM Tenant | 2024-10-07 A → 2024-09-03 A (-34d) | 2024-10-08 A → 2024-09-13 A (-25d) | 2d → 9d |  |  |  | baseline start 2024-10-07 → 2024-10-03; baseline finish 2024-10-07 → 2024-10-03 |
| 59 | Access SAP Cloud ALM and Create Users | 2024-10-08 A → 2024-09-13 A (-25d) | 2024-10-09 A → 2024-09-13 A (-26d) |  |  |  |  | baseline start 2024-10-08 → 2024-10-04; baseline finish 2024-10-08 → 2024-10-04 |
| 60 | **Initial System Access for Central Business Configuration** | 2024-10-15 A → 2024-09-03 A (-42d) | 2024-10-17 A → 2024-09-19 A (-28d) | 3d → 13d |  |  |  | baseline start 2024-10-09 → 2024-10-05; baseline finish 2024-10-11 → 2024-10-08 |
| 61 | Access the SAP Central Business Configuration | 2024-10-15 A → 2024-09-03 A (-42d) | 2024-10-15 A → 2024-09-10 A (-35d) | 1d → 6d |  |  |  | baseline start 2024-10-09 → 2024-10-05; baseline finish 2024-10-09 → 2024-10-05 |
| 62 | Set Up Starter Project in SAP Central Business Configuration | 2024-10-16 A → 2024-09-11 A (-35d) | 2024-10-16 A → 2024-09-11 A (-35d) |  |  |  |  | baseline start 2024-10-10 → 2024-10-07; baseline finish 2024-10-10 → 2024-10-07 |
| 63 | Set Up SAP Central Business Configuration Integration | 2024-10-17 A → 2024-09-13 A (-34d) | 2024-10-17 A → 2024-09-19 A (-28d) | 1d → 5d |  |  |  | baseline start 2024-10-11 → 2024-10-08; baseline finish 2024-10-11 → 2024-10-08 |
| 64 | **Initial System Access for SAP S/4HANA Cloud** | 2024-10-17 A → 2024-09-03 A (-44d) | 2024-10-18 A → 2024-09-20 A (-28d) | 2d → 14d |  |  |  | baseline start 2024-10-14 → 2024-09-12; baseline finish 2024-10-16 → 2024-09-16 |
| 65 | Access Starter System and Reset Password | 2024-10-17 A → 2024-09-03 A (-44d) | 2024-10-18 A → 2024-09-10 A (-38d) | 1d → 6d |  |  | 63 → 29 | baseline start 2024-10-14 → 2024-09-12; baseline finish 2024-10-14 → 2024-09-12 |
| 66 | Create Users in the Starter System | 2024-10-17 A → 2024-09-10 A (-37d) | 2024-10-18 A → 2024-09-11 A (-37d) | 0d → 1d |  |  |  | baseline start 2024-10-15 → 2024-09-13; baseline finish 2024-10-15 → 2024-09-13 |
| 67 | Self-Activation of Project Team Members in the Identity Authentication Service | 2024-10-18 A → 2024-09-20 A (-28d) | 2024-10-18 A → 2024-09-20 A (-28d) | 0d → 1d |  |  |  | baseline start 2024-10-16 → 2024-09-16; baseline finish 2024-10-16 → 2024-09-16 |
| 68 | **Phase Closure and Sign-Off Phase Deliverables** | 2024-10-25 A → 2024-11-12 A (+18d) | 2024-10-25 A → 2024-11-13 A (+19d) | 0d → 2d |  |  |  | baseline start 2024-10-16 → 2024-10-11; baseline finish 2024-10-16 → 2024-10-11 |
| 69 | Explore Phase Signoff | 2024-10-25 A → 2024-11-12 A (+18d) | 2024-10-25 A → 2024-11-13 A (+19d) | 0d → 2d |  |  | Integration with DMS → 47FF | baseline start 2024-10-16 → 2024-10-11; baseline finish 2024-10-16 → 2024-10-11 |
| 70 | **Deliverables** | 2024-10-25 A → 2024-09-27 A (-28d) | 2024-10-25 A → 2024-10-21 A (-4d) | 1d → 19d |  |  |  | baseline start 2024-10-10 → 2024-10-05; baseline finish 2024-10-15 → 2024-10-10 |
| 71 | Fit to Standard documents with Process flow diagram, Gap Analysis | 2024-10-25 A → 2024-10-21 A (-4d) | 2024-10-25 A → 2024-10-21 A (-4d) |  |  |  |  | baseline start 2024-10-10 → 2024-10-05; baseline finish 2024-10-10 → 2024-10-05 |
| 72 | Core team training/ presentation | 2024-10-25 A → 2024-09-27 A (-28d) | 2024-10-25 A → 2024-09-27 A (-28d) |  |  |  |  | baseline start 2024-10-10 → 2024-10-05; baseline finish 2024-10-10 → 2024-10-05 |
| 73 | Initial Master data templates | 2024-10-25 A → 2024-10-18 A (-7d) | 2024-10-25 A → 2024-10-18 A (-7d) | 1d → 0d |  |  |  | baseline start 2024-10-15 → 2024-10-10; baseline finish 2024-10-15 → 2024-10-10 |
| 74 | **Realize** | 2024-10-21 A → 2024-10-29 A (+8d) | 2024-12-16 → 2024-12-31 (+15d) | 39d → 51.9d |  | 36d → 338.9d |  | baseline start 2024-10-15 → 2024-10-12; baseline finish 2024-12-18 → 2024-12-05 |

| ID | Task | Start | Finish | Duration | Complete | Total float | Predecessors | Other |
| --- | --- | --- | --- | --- | --- | --- | --- | --- |
| 75 | **Requirement gathering sheet (RGS)** | 2024-10-27 A → 2024-10-29 A (+2d) | 2024-10-30 A → 2024-11-19 (+20d) | 3d → 16.75d | 100% → 27% | none → 374.05d |  | baseline start 2024-10-16 → 2024-10-12; baseline finish 2024-10-21 → 2024-10-16 |
| 76 | Prepare RGS | 2024-10-27 A → 2024-10-29 A (+2d) | 2024-10-30 A → 2024-11-18 (+19d) | 3d → 4.9d | 100% → 28% | none → 0d | Integration with DMS → 47 | constraint none → finish no earlier than 2024-11-18; baseline start 2024-10-16 → 2024-10-12; baseline finish 2024-10-18 → 2024-10-15 |
| 77 | Submit RGS |  | 2024-10-30 A → 2024-11-19 (+20d) | 0d → 1d | 100% → 25% | none → 374.05d |  | constraint none → finish no earlier than 2024-11-18; baseline start 2024-10-21 → 2024-10-16; baseline finish 2024-10-21 → 2024-10-16 |
| 78 | **Functional Specifications** | 2024-10-26 A → 2024-11-19 (+24d) | 2024-11-11 → 2024-11-25 (+14d) | 9d → 6d |  | 61d → 0d |  | baseline start 2024-10-22 → 2024-10-16; baseline finish 2024-10-29 → 2024-10-22 |
| 79 | Prepare functional specfications | 2024-10-31 A → 2024-11-19 (+19d) | 2024-11-07 → 2024-11-22 (+15d) |  |  |  | 77 → 76 | baseline start 2024-10-22 → 2024-10-16; baseline finish 2024-10-25 → 2024-10-19 |
| 80 | Finalize development tracker | 2024-10-26 A → 2024-11-23 (+28d) | 2024-11-11 → 2024-11-25 (+14d) |  |  | 61d → 368.8d |  | baseline start 2024-10-28 → 2024-10-21; baseline finish 2024-10-29 → 2024-10-22 |
| 81 | **Solution Configuration** | 2024-10-25 A → 2024-10-29 A (+4d) | 2024-11-07 → 2024-11-28 (+21d) | 8d → 24.9d |  | 63d → 0d |  | baseline start 2024-10-28 → 2024-10-21; baseline finish 2024-11-12 → 2024-11-02 |
| 82 | Configure Processes and Functions in golden master (100) | 2024-10-25 A → 2024-10-29 A (+4d) | 2024-10-31 A → 2024-11-23 (+23d) | 0d → 1d | 100% → 0% | none → 0d |  | constraint none → finish no earlier than 2024-11-12; baseline start 2024-10-28 → 2024-10-21; baseline finish 2024-11-05 → 2024-10-25 |
| 83 | Transfer of Configuration to Dev testing | 2024-10-31 A → 2024-11-25 (+25d) | 2024-10-31 A → 2024-11-25 (+25d) | 0d → 0.9d | 100% → 0% | none → 0d |  | constraint none → finish no earlier than 2024-11-22; baseline start 2024-11-06 → 2024-10-26; baseline finish 2024-11-06 → 2024-10-26 |
| 84 | Unit testing-1 (Consultant) | 2024-10-31 A → 2024-11-25 (+25d) | 2024-11-06 → 2024-11-27 (+21d) | 3d → 2d |  | 64d → 0d |  | baseline start 2024-11-07 → 2024-10-28; baseline finish 2024-11-11 → 2024-10-30 |
| 85 | Document and Resolve Issues | 2024-11-04 → 2024-11-25 (+21d) | 2024-11-06 → 2024-11-27 (+21d) | 3d → 2d |  | 6d → 0d |  | baseline start 2024-11-07 → 2024-10-28; baseline finish 2024-11-11 → 2024-10-30 |
| 86 | Submit Unit Testing result & completion of baseline config | 2024-11-07 → 2024-11-27 (+20d) | 2024-11-07 → 2024-11-28 (+21d) |  |  | 6d → 0d |  | baseline start 2024-11-12 → 2024-11-02; baseline finish 2024-11-12 → 2024-11-02 |
| 87 | **Core team training & UT** | 2024-11-08 → 2024-11-27 (+19d) | 2024-11-25 → 2024-12-11 (+16d) |  |  | 6d → 0d |  | baseline start 2024-11-13 → 2024-11-02; baseline finish 2024-11-28 → 2024-11-15 |
| 88 | Plan for CTM training | 2024-11-08 → 2024-11-27 (+19d) | 2024-11-08 → 2024-11-28 (+20d) |  |  | 6d → 0d | 86 → 86FF | baseline start 2024-11-13 → 2024-11-02; baseline finish 2024-11-13 → 2024-11-02 |
| 89 | Making necessery training arrangement - PPT + tutorial | 2024-11-11 → 2024-11-28 (+17d) | 2024-11-12 → 2024-11-30 (+18d) |  |  | 6d → 0d |  | baseline start 2024-11-14 → 2024-11-04; baseline finish 2024-11-15 → 2024-11-05 |
| 90 | Conducting CTM Training (Module wise) | 2024-11-13 → 2024-11-30 (+17d) | 2024-11-15 → 2024-12-04 (+19d) |  |  | 6d → 0d |  | baseline start 2024-11-18 → 2024-11-06; baseline finish 2024-11-20 → 2024-11-08 |
| 91 | Unit Testing by Core team | 2024-11-18 → 2024-12-04 (+16d) | 2024-11-25 → 2024-12-11 (+16d) |  |  | 45d → 348.9d |  | baseline start 2024-11-21 → 2024-11-09; baseline finish 2024-11-28 → 2024-11-15 |
| 92 | **Quality System Request / Initial Setup** | 2024-10-25 → 2024-11-14 (+20d) | 2024-10-25 → 2024-11-14 (+20d) |  |  | 65d → 372.8d |  | baseline start 2024-10-17 → 2024-10-12; baseline finish 2024-10-17 → 2024-10-12 |
| 93 | Execute Initial Setup of the Quality System via SAP Central Business Configuration | 2024-10-25 → 2024-11-14 (+20d) | 2024-10-25 → 2024-11-14 (+20d) |  |  | 70d → 377.8d |  | baseline start 2024-10-17 → 2024-10-12; baseline finish 2024-10-17 → 2024-10-12 |
| 94 | Request Quality System via Manage Your Solution App | 2024-10-25 → 2024-11-14 (+20d) | 2024-10-25 → 2024-11-14 (+20d) |  |  | 65d → 372.8d |  | baseline start 2024-10-17 → 2024-10-12; baseline finish 2024-10-17 → 2024-10-12 |
| 95 | **Quality System Initial Access** | 2024-10-25 → 2024-11-14 (+20d) | 2024-11-06 → 2024-11-20 (+14d) | 7d → 6d |  | 64d → 372.8d |  | baseline start 2024-10-17 → 2024-10-12; baseline finish 2024-10-25 → 2024-10-19 |
| 96 | Receive Quality System and Reset Password | 2024-10-28 → 2024-11-15 (+18d) | 2024-10-28 → 2024-11-15 (+18d) |  |  | 65d → 372.8d |  | baseline start 2024-10-18 → 2024-10-14; baseline finish 2024-10-18 → 2024-10-14 |
| 97 | Create Preset Configuration User in the Quality System via Manage Your Solution App | 2024-10-29 → 2024-11-16 (+18d) | 2024-10-29 → 2024-11-16 (+18d) |  |  | 67d → 374.8d |  | baseline start 2024-10-21 → 2024-10-15; baseline finish 2024-10-21 → 2024-10-15 |
| 98 | Define Preset Parameters and Trigger System Activation via Manage Your Solution App | 2024-10-30 → 2024-11-18 (+19d) | 2024-10-30 → 2024-11-18 (+19d) |  |  | 67d → 374.8d |  | baseline start 2024-10-22 → 2024-10-16; baseline finish 2024-10-22 → 2024-10-16 |
| 99 | **Create Users in the Quality Server** | 2024-10-25 → 2024-11-14 (+20d) | 2024-11-05 → 2024-11-19 (+14d) | 6d → 5d |  | 64d → 372.8d |  | baseline start 2024-10-17 → 2024-10-12; baseline finish 2024-10-24 → 2024-10-18 |
| 100 | **Finalize list of users for QAS** | 2024-10-25 → 2024-11-14 (+20d) | 2024-11-05 → 2024-11-19 (+14d) | 6d → 5d |  | 64d → 372.8d |  | baseline start 2024-10-17 → 2024-10-12; baseline finish 2024-10-24 → 2024-10-18 |
| 101 | **Provide user authorization** | 2024-10-25 → 2024-11-14 (+20d) | 2024-11-05 → 2024-11-19 (+14d) | 6d → 5d |  | 64d → 372.8d |  | baseline start 2024-10-17 → 2024-10-12; baseline finish 2024-10-24 → 2024-10-18 |
| 102 | Finalize user authorization | 2024-10-25 → 2024-11-14 (+20d) | 2024-10-28 → 2024-11-14 (+17d) | 2d → 1d |  | 64d → 372.8d |  | baseline start 2024-10-17 → 2024-10-12; baseline finish 2024-10-18 → 2024-10-14 |
| 103 | Create roles and authorization | 2024-10-29 → 2024-11-15 (+17d) | 2024-10-29 → 2024-11-15 (+17d) |  |  | 64d → 372.8d |  | baseline start 2024-10-21 → 2024-10-15; baseline finish 2024-10-21 → 2024-10-15 |
| 104 | Testing of roles and authorization | 2024-10-30 → 2024-11-16 (+17d) | 2024-11-04 → 2024-11-18 (+14d) |  |  | 64d → 372.8d |  | baseline start 2024-10-22 → 2024-10-16; baseline finish 2024-10-23 → 2024-10-17 |
| 105 | Deployment of roles to users | 2024-11-05 → 2024-11-19 (+14d) | 2024-11-05 → 2024-11-19 (+14d) |  |  | 64d → 372.8d |  | baseline start 2024-10-24 → 2024-10-18; baseline finish 2024-10-24 → 2024-10-18 |
| 106 | Self-Activation of Project Team Members in the Identity Authentication Service | 2024-11-06 → 2024-11-20 (+14d) | 2024-11-06 → 2024-11-20 (+14d) |  |  | 64d → 372.8d |  | baseline start 2024-10-25 → 2024-10-19; baseline finish 2024-10-25 → 2024-10-19 |
| 107 | **Required Configuration Before System Use - SAP S/4HANA Cloud** | 2024-10-29 → 2024-11-16 (+18d) | 2024-10-29 → 2024-11-16 (+18d) |  |  | 65d → 372.8d |  | baseline start 2024-10-21 → 2024-10-15; baseline finish 2024-10-21 → 2024-10-15 |
| 108 | Configure system | 2024-10-29 → 2024-11-16 (+18d) | 2024-10-29 → 2024-11-16 (+18d) |  |  | 65d → 372.8d |  | baseline start 2024-10-21 → 2024-10-15; baseline finish 2024-10-21 → 2024-10-15 |
| 109 | **Standard Integration Setup in the Quality/Test System** | 2024-10-30 → 2024-11-18 (+19d) | 2024-11-05 → 2024-11-20 (+15d) |  |  | 65d → 372.8d |  | baseline start 2024-10-22 → 2024-10-16; baseline finish 2024-10-24 → 2024-10-18 |
| 110 | Set Up Integration using Cloud Integration Automation Service (CIAS) | 2024-10-30 → 2024-11-18 (+19d) | 2024-10-30 → 2024-11-18 (+19d) |  |  | 65d → 372.8d |  | baseline start 2024-10-22 → 2024-10-16; baseline finish 2024-10-22 → 2024-10-16 |
| 111 | Set Up Employee Central Integration (JB1) | 2024-11-04 → 2024-11-19 (+15d) | 2024-11-04 → 2024-11-19 (+15d) |  |  | 65d → 372.8d |  | baseline start 2024-10-23 → 2024-10-17; baseline finish 2024-10-23 → 2024-10-17 |
| 112 | Set Up Integrations in the Quality/Test System | 2024-11-05 → 2024-11-20 (+15d) | 2024-11-05 → 2024-11-20 (+15d) |  |  | 65d → 372.8d |  | baseline start 2024-10-24 → 2024-10-18; baseline finish 2024-10-24 → 2024-10-18 |
| 113 | **System Integration Test** | 2024-10-21 → 2024-11-15 (+25d) | 2024-12-16 → 2024-12-30 (+14d) | 39d → 37.9d |  | 11d → 14.9d |  | baseline start 2024-10-15 → 2024-10-12; baseline finish 2024-12-18 → 2024-12-04 |
| 114 | **Integration test Plan** | 2024-10-21 → 2024-11-15 (+25d) | 2024-11-25 → 2024-12-05 (+10d) | 24d → 17.9d |  | 11d → 14.9d |  | baseline start 2024-10-15 → 2024-10-12; baseline finish 2024-11-22 → 2024-11-11 |
| 115 | Identify scenerios for Integration test | 2024-11-18 → 2024-12-04 (+16d) | 2024-11-19 → 2024-12-05 (+16d) | 2d → 1d |  | 6d → 0d |  | baseline start 2024-11-21 → 2024-11-09; baseline finish 2024-11-22 → 2024-11-11 |
| 116 | Write scripts for Integration test | 2024-11-18 → 2024-12-04 (+16d) | 2024-11-18 → 2024-12-05 (+17d) |  |  | 6d → 0d |  | baseline start 2024-11-21 → 2024-11-09; baseline finish 2024-11-21 → 2024-11-11 |
| 117 | **Master data** | 2024-10-21 → 2024-11-21 (+31d) | 2024-11-22 → 2024-12-03 (+11d) | 23d → 11d |  | 52d → 361.8d |  | baseline start 2024-10-15 → 2024-10-22; baseline finish 2024-11-18 → 2024-11-07 |
| 118 | Receipt Master Data from PA | 2024-10-21 → 2024-11-21 (+31d) | 2024-11-19 → 2024-11-29 (+10d) | 20d → 8d |  | 52d → 361.8d | 46 → 46FS+10d | was named Receipt Master Data from NL; constraint none → finish no earlier than 2024-11-29; baseline start 2024-10-15 → 2024-10-22; baseline finish 2024-11-13 → 2024-11-04 |
| 119 | Upload Master data in QAS | 2024-11-20 → 2024-11-30 (+10d) | 2024-11-22 → 2024-12-03 (+11d) |  |  | 52d → 361.8d |  | baseline start 2024-11-14 → 2024-11-05; baseline finish 2024-11-18 → 2024-11-07 |
| 120 | **Identity and Access Management Planning and Design** | 2024-10-25 → 2024-11-15 (+21d) | 2024-11-25 → 2024-11-26 (+1d) | 20d → 10d |  | 7d → 14.9d |  | baseline start 2024-10-17 → 2024-10-12; baseline finish 2024-11-15 → 2024-11-06 |
| 121 | Finalize list of users | 2024-10-25 → 2024-11-15 (+21d) | 2024-11-18 → 2024-11-20 (+2d) | 15d → 5d |  | 7d → 14.9d |  | constraint none → finish no earlier than 2024-11-20; baseline start 2024-10-17 → 2024-10-12; baseline finish 2024-11-08 → 2024-10-29 |
| 122 | Provide & Check roles and authorization | 2024-11-19 → 2024-11-21 (+2d) | 2024-11-25 → 2024-11-26 (+1d) |  |  | 7d → 14.9d |  | baseline start 2024-11-11 → 2024-10-30; baseline finish 2024-11-15 → 2024-11-06 |
| 123 | **Conduct System integration test** | 2024-11-19 → 2024-12-05 (+16d) | 2024-12-06 → 2024-12-30 (+24d) | 14d → 20d |  | 6d → 0d |  | baseline start 2024-11-22 → 2024-11-12; baseline finish 2024-12-11 → 2024-12-04 |
| 124 | Perform Integration testing by Consultant | 2024-11-19 → 2024-12-05 (+16d) | 2024-11-26 → 2024-12-13 (+17d) | 6d → 7d |  | 6d → 0d |  | baseline start 2024-11-22 → 2024-11-12; baseline finish 2024-11-29 → 2024-11-19 |
| 125 | Perform User Acceptance test - CTM | 2024-11-27 → 2024-12-13 (+16d) | 2024-12-04 → 2024-12-26 (+22d) | 6d → 10d |  | 6d → 0d |  | baseline start 2024-12-02 → 2024-11-20; baseline finish 2024-12-09 → 2024-11-30 |
| 126 | Resolving the issues, if any | 2024-11-27 → 2024-12-13 (+16d) | 2024-12-04 → 2024-12-26 (+22d) | 6d → 10d |  | 6d → 0d |  | baseline start 2024-12-02 → 2024-11-20; baseline finish 2024-12-09 → 2024-11-30 |
| 127 | Retesting of scenarios | 2024-12-05 → 2024-12-26 (+21d) | 2024-12-06 → 2024-12-30 (+24d) | 2d → 3d |  | 39d → 0d |  | baseline start 2024-12-10 → 2024-12-02; baseline finish 2024-12-11 → 2024-12-04 |
| 128 | UAT (by CTM) signoff | 2024-12-06 → 2024-12-28 (+22d) | 2024-12-06 → 2024-12-30 (+24d) |  |  | 39d → 0d |  | baseline start 2024-12-11 → 2024-12-04; baseline finish 2024-12-11 → 2024-12-04 |
| 129 | **ABAP Development - SIT Critical** | 2024-11-04 → 2024-11-25 (+21d) | 2024-12-16 → 2024-12-27 (+11d) | 31d → 28d |  | 28d → 7.9d |  | baseline start 2024-11-06 → 2024-10-26; baseline finish 2024-12-18 → 2024-12-03 |
| 130 | Develop reports | 2024-11-04 → 2024-11-25 (+21d) | 2024-12-06 → 2024-12-19 (+13d) | 25d → 22d |  | 28d → 7.9d |  | baseline start 2024-11-06 → 2024-10-26; baseline finish 2024-12-10 → 2024-11-26 |
| 131 | Testing by consultant | 2024-11-07 → 2024-11-28 (+21d) | 2024-12-11 → 2024-12-20 (+9d) | 25d → 20d |  | 36d → 341.8d |  | baseline start 2024-11-11 → 2024-10-30; baseline finish 2024-12-13 → 2024-11-29 |
| 132 | Testing by CTM | 2024-11-12 → 2024-12-02 (+20d) | 2024-12-16 → 2024-12-27 (+11d) | 25d → 22d |  | 36d → 341.8d |  | baseline start 2024-11-14 → 2024-11-05; baseline finish 2024-12-18 → 2024-12-03 |
| 133 | Sign off Development | 2024-12-16 → 2024-12-27 (+11d) | 2024-12-16 → 2024-12-27 (+11d) |  |  | 36d → 341.8d |  | baseline start 2024-12-18 → 2024-12-03; baseline finish 2024-12-18 → 2024-12-03 |
| 134 | **Cutover Strategy** | 2024-12-05 → 2024-12-30 (+25d) | 2024-12-09 → 2024-12-31 (+22d) | 3d → 1d |  | 6d → 0d |  | baseline start 2024-12-10 → 2024-12-05; baseline finish 2024-12-12 → 2024-12-05 |
| 135 | Discussion on cutover strategy | 2024-12-05 → 2024-12-30 (+25d) | 2024-12-06 → 2024-12-31 (+25d) | 2d → 1d |  | 6d → 0d | 126 → 128 | baseline start 2024-12-10 → 2024-12-05; baseline finish 2024-12-11 → 2024-12-05 |
| 136 | Cutover & data responsibility Plan | 2024-12-09 → 2024-12-30 (+21d) | 2024-12-09 → 2024-12-31 (+22d) |  |  | 6d → 0d | 135 → 135FF | baseline start 2024-12-12 → 2024-12-05; baseline finish 2024-12-12 → 2024-12-05 |
| 137 | Communication to Organisation for Cutover | 2024-12-09 → 2024-12-30 (+21d) | 2024-12-09 → 2024-12-31 (+22d) |  |  | 6d → 0d |  | baseline start 2024-12-12 → 2024-12-05; baseline finish 2024-12-12 → 2024-12-05 |
| 138 | **End user training plan** | 2024-11-26 → 2024-12-11 (+15d) | 2024-11-27 → 2024-12-13 (+16d) |  |  | 45d → 348.9d |  | baseline start 2024-11-29 → 2024-11-16; baseline finish 2024-12-02 → 2024-11-18 |
| 139 | Preparation of End User training plan | 2024-11-26 → 2024-12-11 (+15d) | 2024-11-27 → 2024-12-13 (+16d) |  |  | 45d → 348.9d |  | baseline start 2024-11-29 → 2024-11-16; baseline finish 2024-12-02 → 2024-11-18 |
| 140 | Communicate plan to PA | 2024-11-27 → 2024-12-12 (+15d) | 2024-11-27 → 2024-12-13 (+16d) |  |  | 45d → 348.9d |  | was named Communicate plan to NL; baseline start 2024-12-02 → 2024-11-18; baseline finish 2024-12-02 → 2024-11-18 |
| 141 | **Production System Request** | 2024-10-25 → 2024-11-14 (+20d) | 2024-10-28 → 2024-11-15 (+18d) |  |  | 67d → 374.8d |  | baseline start 2024-10-17 → 2024-10-12; baseline finish 2024-10-18 → 2024-10-14 |
| 142 | Request for Production System | 2024-10-25 → 2024-11-14 (+20d) | 2024-10-25 → 2024-11-14 (+20d) |  |  | 67d → 374.8d |  | baseline start 2024-10-17 → 2024-10-12; baseline finish 2024-10-17 → 2024-10-12 |
| 143 | Request Access to the SAP S/4HANA Cloud Release Assessment Tool. | 2024-10-28 → 2024-11-15 (+18d) | 2024-10-28 → 2024-11-15 (+18d) |  |  | 67d → 374.8d |  | baseline start 2024-10-18 → 2024-10-14; baseline finish 2024-10-18 → 2024-10-14 |
| 144 | **Production System Initial Access** | 2024-10-29 → 2024-11-16 (+18d) | 2024-10-30 → 2024-11-18 (+19d) |  |  | 67d → 374.8d |  | baseline start 2024-10-21 → 2024-10-15; baseline finish 2024-10-22 → 2024-10-16 |

| ID | Task | Start | Finish | Duration | Complete | Total float | Predecessors | Other |
| --- | --- | --- | --- | --- | --- | --- | --- | --- |
| 145 | Receive Production System and Reset Password | 2024-10-29 → 2024-11-16 (+18d) | 2024-10-29 → 2024-11-16 (+18d) |  |  | 67d → 374.8d |  | baseline start 2024-10-21 → 2024-10-15; baseline finish 2024-10-21 → 2024-10-15 |
| 146 | Transport Initial Change Project from Q-System to P-System | 2024-10-30 → 2024-11-18 (+19d) | 2024-10-30 → 2024-11-18 (+19d) |  |  | 67d → 374.8d |  | baseline start 2024-10-22 → 2024-10-16; baseline finish 2024-10-22 → 2024-10-16 |
| 147 | Phase Closure & Signoff Phase deliverables | 2024-12-09 → 2024-12-30 (+21d) | 2024-12-09 → 2024-12-31 (+22d) |  |  | 41d → 338.9d |  | baseline start 2024-12-12 → 2024-12-05; baseline finish 2024-12-12 → 2024-12-05 |
| 148 | **Deliverables** | 2024-11-08 → 2024-11-28 (+20d) | 2024-12-09 → 2024-12-31 (+22d) | 22d → 27d |  | 41d → 338.9d |  | baseline start 2024-11-13 → 2024-11-04; baseline finish 2024-12-12 → 2024-12-05 |
| 149 | D: Test scripts | 2024-11-19 → 2024-12-05 (+16d) | 2024-11-19 → 2024-12-06 (+17d) |  |  | 55d → 358.9d |  | baseline start 2024-11-22 → 2024-11-12; baseline finish 2024-11-22 → 2024-11-12 |
| 150 | D: Unit test result document | 2024-11-08 → 2024-11-28 (+20d) | 2024-11-08 → 2024-11-29 (+21d) |  |  | 62d → 364.9d |  | baseline start 2024-11-13 → 2024-11-04; baseline finish 2024-11-13 → 2024-11-04 |
| 151 | D: Integration testing document | 2024-11-27 → 2024-12-13 (+16d) | 2024-11-27 → 2024-12-14 (+17d) |  |  | 49d → 351.9d |  | baseline start 2024-12-02 → 2024-11-20; baseline finish 2024-12-02 → 2024-11-20 |
| 152 | D: User Acceptance testing document | 2024-12-06 → 2024-12-28 (+22d) | 2024-12-06 → 2024-12-30 (+24d) |  |  | 42d → 339.9d |  | baseline start 2024-12-11 → 2024-12-04; baseline finish 2024-12-11 → 2024-12-04 |
| 153 | D: Final master data templates | 2024-12-09 → 2024-12-30 (+21d) | 2024-12-09 → 2024-12-31 (+22d) |  |  | 41d → 338.9d |  | baseline start 2024-12-12 → 2024-12-05; baseline finish 2024-12-12 → 2024-12-05 |
| 154 | D: Data migration strategy document | 2024-12-09 → 2024-12-30 (+21d) | 2024-12-09 → 2024-12-31 (+22d) |  |  | 41d → 338.9d |  | baseline start 2024-12-12 → 2024-12-05; baseline finish 2024-12-12 → 2024-12-05 |
| 155 | **Deploy** | 2024-10-21 → 2024-12-11 (+51d) | 2025-01-02 → 2025-01-31 (+29d) | 51d → 43.8d |  | 0d → 15.9d |  | baseline start 2024-10-15 → 2024-11-19; baseline finish 2024-12-31 → 2025-01-07 |
| 156 | **ABAP Developments Pre Go Live** | 2024-11-28 → 2024-12-20 (+22d) | 2024-12-27 → 2025-01-21 (+25d) | 21d → 27d |  | 28d → 7.9d |  | baseline start 2024-12-02 → 2024-11-27; baseline finish 2024-12-31 → 2025-01-06 |
| 157 | Develop reports | 2024-11-28 → 2024-12-20 (+22d) | 2024-12-18 → 2025-01-13 (+26d) | 15d → 20d |  | 28d → 7.9d | 130FS-7d → 130 | baseline start 2024-12-02 → 2024-11-27; baseline finish 2024-12-20 → 2024-12-28 |
| 158 | Testing by consultant | 2024-12-03 → 2024-12-24 (+21d) | 2024-12-23 → 2025-01-16 (+24d) | 15d → 20d |  | 28d → 7.9d |  | baseline start 2024-12-05 → 2024-11-30; baseline finish 2024-12-26 → 2025-01-01 |
| 159 | Testing by CTM | 2024-12-05 → 2024-12-27 (+22d) | 2024-12-26 → 2025-01-18 (+23d) | 15d → 20d |  | 28d → 7.9d |  | baseline start 2024-12-09 → 2024-12-03; baseline finish 2024-12-30 → 2025-01-03 |
| 160 | Sign off Development | 2024-12-27 → 2025-01-20 (+24d) | 2024-12-27 → 2025-01-21 (+25d) | 1d → 2d |  | 28d → 7.9d |  | baseline start 2024-12-31 → 2025-01-04; baseline finish 2024-12-31 → 2025-01-06 |
| 161 | **End User Training** | 2024-12-10 → 2024-12-31 (+21d) | 2024-12-23 → 2025-01-11 (+19d) |  |  | 30d → 327.9d |  | baseline start 2024-12-13 → 2024-12-06; baseline finish 2024-12-27 → 2024-12-17 |
| 162 | Prepare end user training manual | 2024-12-10 → 2024-12-31 (+21d) | 2024-12-11 → 2025-01-02 (+22d) |  |  | 30d → 327.9d |  | baseline start 2024-12-13 → 2024-12-06; baseline finish 2024-12-16 → 2024-12-07 |
| 163 | Conduct end user training | 2024-12-12 → 2025-01-02 (+21d) | 2024-12-18 → 2025-01-08 (+21d) |  |  | 30d → 327.9d |  | baseline start 2024-12-17 → 2024-12-09; baseline finish 2024-12-23 → 2024-12-13 |
| 164 | Conduct training to HODs/Management | 2024-12-19 → 2025-01-08 (+20d) | 2024-12-23 → 2025-01-11 (+19d) |  |  | 31d → 328.9d |  | baseline start 2024-12-24 → 2024-12-14; baseline finish 2024-12-27 → 2024-12-17 |
| 165 | **Production Environment Preparation** | 2024-12-09 → 2024-12-30 (+21d) | 2024-12-11 → 2025-01-02 (+22d) |  |  | 39d → 336.9d |  | baseline start 2024-12-12 → 2024-12-05; baseline finish 2024-12-16 → 2024-12-07 |
| 166 | Transport final configurations | 2024-12-09 → 2024-12-30 (+21d) | 2024-12-09 → 2024-12-31 (+22d) |  |  | 39d → 336.9d |  | baseline start 2024-12-12 → 2024-12-05; baseline finish 2024-12-12 → 2024-12-05 |
| 167 | Maintain number ranges | 2024-12-10 → 2024-12-31 (+21d) | 2024-12-10 → 2025-01-01 (+22d) |  |  | 39d → 336.9d |  | baseline start 2024-12-13 → 2024-12-06; baseline finish 2024-12-13 → 2024-12-06 |
| 168 | Maintain client specific data | 2024-12-11 → 2025-01-01 (+21d) | 2024-12-11 → 2025-01-02 (+22d) |  |  | 39d → 336.9d |  | baseline start 2024-12-16 → 2024-12-07; baseline finish 2024-12-16 → 2024-12-07 |
| 169 | **User creation** | 2024-11-28 → 2024-12-13 (+15d) | 2024-12-24 → 2025-01-13 (+20d) | 19d → 25d |  | 30d → 327.9d |  | baseline start 2024-12-03 → 2024-11-19; baseline finish 2024-12-30 → 2024-12-18 |
| 170 | Finalize list of users for production enviornment | 2024-11-28 → 2024-12-13 (+15d) | 2024-11-29 → 2024-12-16 (+17d) |  |  | 45d → 348.9d |  | baseline start 2024-12-03 → 2024-11-19; baseline finish 2024-12-04 → 2024-11-20 |
| 171 | Finalise Authorization Matrix | 2024-12-02 → 2024-12-16 (+14d) | 2024-12-03 → 2024-12-18 (+15d) |  |  | 45d → 348.9d |  | baseline start 2024-12-05 → 2024-11-21; baseline finish 2024-12-06 → 2024-11-22 |
| 172 | Check roles and authorization | 2024-12-19 → 2025-01-08 (+20d) | 2024-12-24 → 2025-01-13 (+20d) |  |  | 30d → 327.9d |  | baseline start 2024-12-24 → 2024-12-14; baseline finish 2024-12-30 → 2024-12-18 |
| 173 | **Data preparation and upload** | 2024-10-21 → 2024-12-11 (+51d) | 2024-12-31 → 2025-01-30 (+30d) | 49d → 42.9d |  | 0d → 16.9d |  | baseline start 2024-10-15 → 2024-11-28; baseline finish 2024-12-26 → 2025-01-06 |
| 174 | Receipt of master data | 2024-10-21 → 2024-12-11 (+51d) | 2024-12-17 → 2024-12-21 (+4d) | 40d → 10d |  | 0d → 21.9d | 46 → 46FS+40d | baseline start 2024-10-15 → 2024-11-28; baseline finish 2024-12-11 → 2024-12-20 |
| 175 | Validate & cleanse master data | 2024-12-18 → 2024-12-23 (+5d) | 2024-12-19 → 2024-12-23 (+4d) | 2d → 1d |  | 0d → 21.9d |  | baseline start 2024-12-12 → 2024-12-21; baseline finish 2024-12-13 → 2024-12-21 |
| 176 | Upload master data in Production | 2024-12-20 → 2024-12-24 (+4d) | 2024-12-26 → 2024-12-28 (+2d) |  |  | 0d → 21.9d |  | baseline start 2024-12-16 → 2024-12-23; baseline finish 2024-12-19 → 2024-12-27 |
| 177 | Confirm uploaded master data | 2024-12-27 → 2024-12-30 (+3d) | 2024-12-27 → 2024-12-30 (+3d) |  |  | 28d → 339.8d |  | baseline start 2024-12-20 → 2024-12-28; baseline finish 2024-12-20 → 2024-12-28 |
| 178 | Receipt of cutover data | 2024-12-10 → 2024-12-31 (+21d) | 2024-12-17 → 2025-01-23 (+37d) | 6d → 20d |  | 6d → 0d |  | baseline start 2024-12-13 → 2024-12-06; baseline finish 2024-12-20 → 2024-12-30 |
| 179 | Validate & cleanse cutover data | 2024-12-10 → 2025-01-23 (+44d) | 2024-12-17 → 2025-01-30 (+44d) |  |  | 35d → 312.9d | 137 → 178 | baseline start 2024-12-13 → 2024-12-31; baseline finish 2024-12-20 → 2025-01-06 |
| 180 | Upload cutover data in production | 2024-12-27 → 2025-01-23 (+27d) | 2024-12-31 → 2025-01-30 (+30d) | 3d → 6d |  |  |  | baseline start 2024-12-23 → 2024-12-31; baseline finish 2024-12-26 → 2025-01-06 |
| 181 | Check and validate uploaded data | 2024-12-31 → 2025-01-29 (+29d) | 2024-12-31 → 2025-01-30 (+30d) |  |  |  |  | baseline start 2024-12-26 → 2025-01-06; baseline finish 2024-12-26 → 2025-01-06 |
| 182 | **Deliverables** | 2024-12-02 → 2024-12-16 (+14d) | 2024-12-31 → 2025-01-06 (+6d) | 21d → 17d |  | 26d → 333.9d |  | baseline start 2024-12-05 → 2024-11-21; baseline finish 2024-12-24 → 2024-12-31 |
| 183 | D: End user training manual | 2024-12-12 → 2025-01-02 (+21d) | 2024-12-16 → 2025-01-06 (+21d) |  |  | 36d → 333.9d |  | baseline start 2024-12-17 → 2024-12-09; baseline finish 2024-12-19 → 2024-12-11 |
| 184 | D: Data migration plan & checklist | 2024-12-18 → 2024-12-23 (+5d) | 2024-12-20 → 2024-12-26 (+6d) |  |  | 32d → 342.8d |  | baseline start 2024-12-12 → 2024-12-21; baseline finish 2024-12-16 → 2024-12-24 |
| 185 | D: Master data upload programs | 2024-12-27 → 2024-12-30 (+3d) | 2024-12-31 → 2025-01-01 (+1d) |  |  | 26d → 337.8d |  | baseline start 2024-12-20 → 2024-12-28; baseline finish 2024-12-24 → 2024-12-31 |
| 186 | D: Sample data upload validation | 2024-12-27 → 2024-12-30 (+3d) | 2024-12-27 → 2024-12-30 (+3d) |  |  | 28d → 339.8d |  | baseline start 2024-12-20 → 2024-12-28; baseline finish 2024-12-20 → 2024-12-28 |
| 187 | D: Final SAP Authorization matrix | 2024-12-02 → 2024-12-16 (+14d) | 2024-12-02 → 2024-12-17 (+15d) |  |  | 46d → 349.9d |  | baseline start 2024-12-05 → 2024-11-21; baseline finish 2024-12-05 → 2024-11-21 |
| 188 | **Phase Closure & Sign Off Phase Deliverables** | 2025-01-01 → 2025-01-30 (+29d) | 2025-01-02 → 2025-01-31 (+29d) | 2d → 1d |  |  |  | baseline start 2024-12-27 → 2025-01-07; baseline finish 2024-12-30 → 2025-01-07 |
| 189 | Deploy signoff | 2025-01-01 → 2025-01-30 (+29d) | 2025-01-01 → 2025-01-31 (+30d) | 1d → 0.9d |  |  | 181 → 181, 160 | baseline start 2024-12-27 → 2025-01-07; baseline finish 2024-12-27 → 2025-01-07 |
| 190 | Completion of Final Preparation (Deploy) Phase | 2025-01-02 → 2025-01-30 (+28d) | 2025-01-02 → 2025-01-31 (+29d) |  |  |  | 189 → 189FF | baseline start 2024-12-30 → 2025-01-07; baseline finish 2024-12-30 → 2025-01-07 |
| 191 | Go Live | 2025-01-03 → 2025-01-31 (+28d) | 2025-01-03 → 2025-01-31 (+28d) | 1d → 0.1d |  |  | 190 → 190FF | baseline start 2024-12-31 → 2025-01-08; baseline finish 2024-12-31 → 2025-01-08 |
| 192 | **Stabilization** | 2025-01-06 → 2025-01-31 (+25d) | 2025-02-05 → 2025-03-04 (+27d) | 23d → 27d |  |  |  | baseline start 2025-01-01 → 2025-01-09; baseline finish 2025-01-31 → 2025-02-08 |
| 193 | Stabilization | 2025-01-06 → 2025-01-31 (+25d) | 2025-02-05 → 2025-03-04 (+27d) | 23d → 27d |  |  |  | was named Stabilization (Post Go live Support); baseline start 2025-01-01 → 2025-01-09; baseline finish 2025-01-31 → 2025-02-08 |
| 194 | **Deliverables** | 2025-01-06 → 2025-01-31 (+25d) | 2025-02-05 → 2025-03-04 (+27d) | 23d → 27d |  | 0d → 285d |  | baseline start 2025-01-01 → 2025-01-09; baseline finish 2025-01-31 → 2025-02-08 |
| 195 | D: Issue list with resolution status | 2025-01-06 → 2025-01-31 (+25d) | 2025-02-05 → 2025-03-04 (+27d) | 23d → 27d |  | 0d → 285d |  | baseline start 2025-01-01 → 2025-01-09; baseline finish 2025-01-31 → 2025-02-08 |
| 196 | D: Configuration documents | 2025-01-06 → 2025-01-31 (+25d) | 2025-02-05 → 2025-03-04 (+27d) | 23d → 27d |  | 0d → 285d |  | baseline start 2025-01-01 → 2025-01-09; baseline finish 2025-01-31 → 2025-02-08 |
| 197 | D: FS & TS | 2025-01-06 → 2025-01-31 (+25d) | 2025-02-05 → 2025-03-04 (+27d) | 23d → 27d |  | 0d → 285d |  | baseline start 2025-01-01 → 2025-01-09; baseline finish 2025-01-31 → 2025-02-08 |
| 198 | D: Cre team training document | 2025-01-06 → 2025-01-31 (+25d) | 2025-02-05 → 2025-03-04 (+27d) | 23d → 27d |  | 0d → 285d |  | baseline start 2025-01-01 → 2025-01-09; baseline finish 2025-01-31 → 2025-02-08 |
| 199 | **Extended Support** | 2024-09-23 A → 2025-03-04 (+162d) | 2024-09-23 A → 2025-04-01 (+190d) | 1d → 24d | 100% → 0% | none → 0d | 23FF → none | was named D: Training Plan; constraint start no earlier than 2022-11-07 → none; baseline start 2024-09-11 → 2025-02-10; baseline finish 2024-09-11 → 2025-03-08 |

## Version 7 (data date 2022-10-13, saved 2024-11-18, file TASK_00631268_1_18112024093700.mpp)

Note of the change: Add project files.

Last finish 2026-04-01 → 2025-02-05 (-420d). Complete tasks 48 → 58.

Added:

| ID | Task | Duration | Start | Finish | Predecessors |
| --- | --- | --- | --- | --- | --- |
| 50 | Integration with bank host to host (upto2) | 5d | 2024-10-21 | 2024-10-25 | 41 |
| 51 | Integration with HRMS (Payroll) | 5d | 2024-10-21 | 2024-10-25 | 41 |
| 52 | Integration with Cloud Steer CRM | 5d | 2024-10-21 | 2024-10-25 | 41 |
| 53 | Integration with DMS | 5d | 2024-10-21 | 2024-10-25 | 41 |
| 135 | **Third Party Interface** | 31d | 2024-11-04 | 2024-12-16 |  |
| 136 | Development | 25d | 2024-11-04 | 2024-12-06 | 83 |
| 137 | Testing by consultant | 25d | 2024-11-07 | 2024-12-11 | 136SS+3d |
| 138 | Testing by CTM | 25d | 2024-11-12 | 2024-12-16 | 137SS+3d |
| 139 | Sign off Development | 1d | 2024-12-16 | 2024-12-16 | 138FF |

Removed: 49 Integration with ASP/GSP; 50 Integration with bank host to host (upto 3); 51 Integration with Primavera; 52 Integration with third party payroll; 200 One month extended support; 201 Phase 2: One Year AMC; 202 AMC Support

Changed:

| ID | Task | Start | Finish | Duration | Complete | Total float | Predecessors | Other |
| --- | --- | --- | --- | --- | --- | --- | --- | --- |
| 1 | **SAP Implementation at NEO LIV** | 2024-09-02 A → 2024-09-05 A (+3d) | 2026-04-01 → 2025-02-05 (-420d) | 434.8d → 105d | 20% → 14% |  |  | was named SAP Implementation at PA; baseline start 2024-09-02 → 2024-09-05; baseline finish 2026-03-09 → 2025-01-31 |
| 2 | **Wave 1A: S4 HANA Implementation (Public Cloud)** | 2024-09-02 A → 2024-09-05 A (+3d) | 2025-04-01 → 2025-02-05 (-55d) | 173.8d → 105d | 28% → 14% | 261d → 0d |  | was named Phase 1: S4 HANA Implementation (Public Cloud); baseline start 2024-09-02 → 2024-09-05; baseline finish 2025-03-08 → 2025-01-31 |
| 3 | **Implementation** | 2024-09-02 A → 2024-09-05 A (+3d) | 2025-01-31 → 2025-01-02 (-29d) | 122.8d → 81d | 36% → 17% | 312d → 24d |  | baseline start 2024-09-02 → 2024-09-05; baseline finish 2025-01-07 → 2024-12-31 |
| 4 | **Prepare** | 2024-09-02 A → 2024-09-05 A (+3d) | 2024-09-10 A → 2024-09-23 A (+13d) | 7d → 12d |  |  |  | baseline start 2024-09-02 → 2024-09-05; baseline finish 2024-09-10 → 2024-09-11 |
| 5 | **Project Kick Off and On-Boarding** | 2024-09-02 A → 2024-09-05 A (+3d) | 2024-09-10 A → 2024-09-05 A (-5d) | 7d → 1d |  |  |  | baseline start 2024-09-02 → 2024-09-05; baseline finish 2024-09-09 → 2024-09-05 |
| 6 | On-board Project Team | 2024-09-02 A → 2024-09-05 A (+3d) | 2024-09-10 A → 2024-09-05 A (-5d) | 7d → 1d |  |  |  | constraint finish no earlier than 2024-09-09 → start no earlier than 2024-09-05; baseline start 2024-09-02 → 2024-09-05; baseline finish 2024-09-09 → 2024-09-05 |
| 7 | Conduct Kickoff Workshop |  |  |  |  |  | 6SS+3d → 6SS | was named Conduct project kickoff; constraint start no earlier than 2024-09-05 → none |
| 8 | **Project Plan** | 2024-09-02 A → 2024-09-05 A (+3d) | 2024-09-05 A → 2024-09-19 A (+14d) | 4d → 10d |  |  |  | baseline start 2024-09-02 → 2024-09-05; baseline finish 2024-09-05 → 2024-09-11 |
| 9 | Prepare & submit Initial project plan | 2024-09-02 A → 2024-09-05 A (+3d) | 2024-09-02 A → 2024-09-06 A (+4d) | 1d → 2d |  |  |  | baseline start 2024-09-02 → 2024-09-05; baseline finish 2024-09-02 → 2024-09-06 |
| 10 | Review project plan | 2024-09-03 A → 2024-09-09 A (+6d) | 2024-09-03 A → 2024-09-09 A (+6d) |  |  |  |  | baseline start 2024-09-03 → 2024-09-09; baseline finish 2024-09-03 → 2024-09-09 |
| 11 | Make necessary changes in the plan | 2024-09-04 A → 2024-09-10 A (+6d) | 2024-09-04 A → 2024-09-10 A (+6d) |  |  |  |  | baseline start 2024-09-04 → 2024-09-10; baseline finish 2024-09-04 → 2024-09-10 |
| 12 | Submit revised plan | 2024-09-04 A → 2024-09-10 A (+6d) | 2024-09-04 A → 2024-09-10 A (+6d) |  |  |  |  | baseline start 2024-09-04 → 2024-09-10; baseline finish 2024-09-04 → 2024-09-10 |
| 13 | Approval of project plan by NL | 2024-09-05 A → 2024-09-11 A (+6d) | 2024-09-05 A → 2024-09-19 A (+14d) | 1d → 6d |  |  |  | was named Approval of project plan by PA; baseline start 2024-09-05 → 2024-09-11; baseline finish 2024-09-05 → 2024-09-11 |
| 14 | **Project Governance** | 2024-09-06 A → 2024-09-09 A (+3d) |  | 2d → 1d |  |  |  |  |
| 15 | Establish Project Governance Mechanism | 2024-09-06 A → 2024-09-09 A (+3d) |  |  |  |  |  |  |
| 16 | Define Project Communications and Reporting | 2024-09-06 A → 2024-09-09 A (+3d) |  |  |  |  |  |  |
| 17 | **Project Standards, Infrastructure & Solution** |  | 2024-09-06 A → 2024-09-09 A (+3d) | 1d → 2d |  |  |  | baseline finish 2024-09-06 → 2024-09-09 |
| 18 | Set Up Project Team Logistics and Infrastructure |  | 2024-09-06 A → 2024-09-09 A (+3d) | 1d → 2d |  |  |  | baseline finish 2024-09-06 → 2024-09-09 |
| 19 | Create a Document Repository for the Implementation Project Team |  | 2024-09-06 A → 2024-09-09 A (+3d) | 1d → 2d |  |  |  | baseline finish 2024-09-06 → 2024-09-09 |
| 20 | **Fit-to-Standard Analysis Preparation** | 2024-09-09 A → 2024-09-10 A (+1d) | 2024-09-09 A → 2024-09-12 A (+3d) | 1d → 3d |  |  |  | baseline start 2024-09-09 → 2024-09-10; baseline finish 2024-09-09 → 2024-09-10 |
| 21 | Prepare for Fit-to-Standard Workshops | 2024-09-09 A → 2024-09-10 A (+1d) | 2024-09-09 A → 2024-09-12 A (+3d) | 1d → 3d |  |  |  | baseline start 2024-09-09 → 2024-09-10; baseline finish 2024-09-09 → 2024-09-10 |
| 22 | **Phase Closure and Sign-Off Phase Deliverables** | 2024-09-10 A → 2024-09-23 A (+13d) | 2024-09-10 A → 2024-09-23 A (+13d) |  |  |  |  | baseline start 2024-09-10 → 2024-09-11; baseline finish 2024-09-10 → 2024-09-11 |
| 23 | Prepare Phase Signoff | 2024-09-10 A → 2024-09-23 A (+13d) | 2024-09-10 A → 2024-09-23 A (+13d) | 0d → 1d |  |  |  | baseline start 2024-09-10 → 2024-09-11; baseline finish 2024-09-10 → 2024-09-11 |
| 24 | **Deliverables** | 2024-09-10 A → 2024-09-23 A (+13d) | 2024-09-10 A → 2024-09-23 A (+13d) |  |  |  |  | baseline start 2024-09-10 → 2024-09-11; baseline finish 2024-09-10 → 2024-09-11 |
| 25 | D: Baseline Project Plan | 2024-09-10 A → 2024-09-23 A (+13d) | 2024-09-10 A → 2024-09-23 A (+13d) |  |  |  |  | baseline start 2024-09-10 → 2024-09-11; baseline finish 2024-09-10 → 2024-09-11 |
| 26 | D: Project kickoff presentation | 2024-09-10 A → 2024-09-23 A (+13d) | 2024-09-10 A → 2024-09-23 A (+13d) |  |  |  |  | baseline start 2024-09-10 → 2024-09-11; baseline finish 2024-09-10 → 2024-09-11 |
| 27 | D: Training Plan | 2025-03-04 → 2024-09-23 A (-162d) | 2025-04-01 → 2024-09-23 A (-190d) | 24d → 1d | 0% → 100% | 0d → none | none → 23FF | was named Extended Support; constraint none → start no earlier than 2022-11-07; baseline start 2025-02-10 → 2024-09-11; baseline finish 2025-03-08 → 2024-09-11 |
| 28 | **Explore** | 2024-09-02 A → 2024-09-09 A (+7d) | 2024-11-13 → 2024-10-25 (-19d) | 56d → 33d | 99% → 57% | 378.8d → 70d |  | baseline start 2024-09-10 → 2024-09-09; baseline finish 2024-10-11 → 2024-10-16 |
| 29 | **Requirement gathering** | 2024-09-02 A → 2024-09-09 A (+7d) | 2024-09-17 A → 2024-09-12 A (-5d) | 12d → 4d |  |  |  | baseline start 2024-09-10 → 2024-09-09; baseline finish 2024-09-11 → 2024-09-12 |
| 30 | Review AS IS document | 2024-09-02 A → 2024-09-09 A (+7d) | 2024-09-17 A → 2024-09-10 A (-7d) | 6d → 2d |  |  | 21 → 7SS+2d | baseline start 2024-09-10 → 2024-09-09; baseline finish 2024-09-11 → 2024-09-10 |
| 31 | Update AS IS document as per discussion | 2024-09-02 A → 2024-09-11 A (+9d) | 2024-09-17 A → 2024-09-12 A (-5d) | 12d → 2d |  |  | 30SS → 30 | baseline start 2024-09-10 → 2024-09-11; baseline finish 2024-09-11 → 2024-09-12 |
| 32 | **Fit-to-Standard analysis** | 2024-09-17 A → 2024-09-16 A (-1d) | 2024-09-27 A → 2024-09-19 A (-8d) | 9d → 3d |  |  |  | baseline start 2024-09-12 → 2024-09-16; baseline finish 2024-09-16 → 2024-09-19 |
| 33 | Conduct workshop for all modules | 2024-09-17 A → 2024-09-16 A (-1d) | 2024-09-27 A → 2024-09-19 A (-8d) | 8d → 3d |  |  | 31 → 31FS+1d | baseline start 2024-09-12 → 2024-09-16; baseline finish 2024-09-16 → 2024-09-19 |
| 34 | **Fit to Standard analysis documentation** | 2024-09-16 A → 2024-09-20 A (+4d) | 2024-11-12 → 2024-10-22 (-21d) | 45d → 22d | 98% → 85% | 379.8d → 73d |  | baseline start 2024-09-17 → 2024-09-20; baseline finish 2024-10-11 → 2024-10-15 |
| 35 | Document Initial Configuration Settings for SAP Central Business Configuration | 2024-09-16 A → 2024-09-20 A (+4d) | 2024-09-16 A → 2024-09-23 A (+7d) | 1d → 2d |  |  |  | baseline start 2024-09-17 → 2024-09-20; baseline finish 2024-09-18 → 2024-09-23 |
| 36 | Document Scope via SAP Central Business Configuration | 2024-09-17 A → 2024-09-24 A (+7d) | 2024-09-19 A → 2024-09-25 A (+6d) | 3d → 2d |  |  |  | baseline start 2024-09-19 → 2024-09-24; baseline finish 2024-09-20 → 2024-09-25 |
| 37 | **Document and Maintain Business Process Flows** | 2024-09-20 A → 2024-09-24 A (+4d) | 2024-11-07 A → 2024-10-21 (-17d) | 37d → 19d | 100% → 94% | none → 74d |  | baseline start 2024-09-17 → 2024-09-20; baseline finish 2024-10-04 → 2024-10-09 |
| 38 | Prepare BBP Document and KDS | 2024-09-20 A → 2024-09-24 A (+4d) | 2024-10-01 A → 2024-09-28 A (-3d) | 2.5d → 4d |  |  |  | was named Prepare fit-to-standard Document and KDS; baseline start 2024-09-17 → 2024-09-20; baseline finish 2024-09-23 → 2024-09-26 |
| 39 | Submition of BBP and KDS | 2024-09-23 A → 2024-09-30 A (+7d) | 2024-10-01 A → 2024-09-30 A (-1d) | 0d → 1d |  |  |  | was named Submition of Fit-to-standard and KDS; baseline start 2024-09-24 → 2024-09-27; baseline finish 2024-09-24 → 2024-09-27 |
| 40 | Review of BBP & KDS by CTM | 2024-09-25 A → 2024-10-04 A (+9d) | 2024-10-02 A → 2024-10-14 A (+12d) | 0d → 7d |  |  |  | was named Review of fit-to-standard & KDS by CTM; baseline start 2024-09-25 → 2024-09-30; baseline finish 2024-10-01 → 2024-10-07 |
| 41 | BBP Walkthrough | 2024-10-03 A → 2024-10-15 A (+12d) | 2024-10-21 A → 2024-10-18 A (-3d) | 16d → 4d |  |  |  | was named Solution Walkthrough; constraint finish no earlier than 2024-10-21 → none; baseline start 2024-10-03 → 2024-10-08; baseline finish 2024-10-03 → 2024-10-08 |
| 42 | BBP Signff | 2024-10-22 A → 2024-10-21 (-1d) | 2024-11-07 A → 2024-10-21 (-17d) | 13d → 1d | 100% → 0% | none → 78d |  | was named Fit-to-Standard document Signoff; constraint finish no earlier than 2024-11-04 → none; baseline start 2024-10-04 → 2024-10-09; baseline finish 2024-10-04 → 2024-10-09 |
| 43 | Document Configuration Values | 2024-10-14 A → 2024-10-21 (+7d) | 2024-11-08 → 2024-10-22 (-17d) | 14d → 2d | 85% → 0% | 382.8d → 78d |  | constraint finish no earlier than 2024-11-08 → none; baseline start 2024-10-04 → 2024-10-09; baseline finish 2024-10-05 → 2024-10-10 |
| 44 | **Document Master Data Requirements** | 2024-10-07 A → 2024-10-16 A (+9d) | 2024-10-22 A → 2024-10-18 A (-4d) | 14d → 3d |  |  |  | was named Data migration requirements; baseline start 2024-10-07 → 2024-10-11; baseline finish 2024-10-09 → 2024-10-14 |
| 45 | Identify masterdata requirement | 2024-10-07 A → 2024-10-16 A (+9d) | 2024-10-07 A → 2024-10-17 A (+10d) |  |  |  |  | was named Identify master data requirement; baseline start 2024-10-07 → 2024-10-11; baseline finish 2024-10-07 → 2024-10-11 |
| 46 | Prepare and explain masterdata template | 2024-10-10 A → 2024-10-17 A (+7d) | 2024-10-22 A → 2024-10-17 A (-5d) | 11d → 1d |  |  | 45 → 45SS | was named Prepare and explain master data template; constraint as late as possible → none; baseline start 2024-10-08 → 2024-10-11; baseline finish 2024-10-09 → 2024-10-11 |
| 47 | Circulate masterdata template | 2024-10-10 A → 2024-10-18 A (+8d) | 2024-10-22 A → 2024-10-18 A (-4d) | 8d → 1d |  |  | 46FF → 46 | was named Circulate master data template; baseline start 2024-10-09 → 2024-10-14; baseline finish 2024-10-09 → 2024-10-14 |
| 48 | Confirm Backlog and prioritise (SIT/UAT, Golive, Post-Golive) | 2024-10-11 A → 2024-10-21 (+10d) | 2024-11-12 A → 2024-10-21 (-22d) | 10d → 1d | 100% → 0% | none → 74d |  | constraint as late as possible → none; baseline start 2024-10-10 → 2024-10-15; baseline finish 2024-10-11 → 2024-10-15 |
| 49 | **Integration Planning and Design** | 2024-10-09 A → 2024-10-21 (+12d) | 2024-11-12 A → 2024-10-25 (-18d) | 28d → 5d | 100% → 0% | none → 70d |  | baseline start 2024-10-04 → 2024-10-09; baseline finish 2024-10-09 → 2024-10-15 |
| 54 | **Getting Started with your SAP Implementation** | 2024-10-07 A → 2024-09-26 (-11d) | 2024-10-07 A → 2024-10-04 (-3d) | 1d → 6d | 100% → 0% | none → 85d |  | baseline start 2024-09-23 → 2024-09-26; baseline finish 2024-10-01 → 2024-10-04 |
| 55 | Review Overview Documentation | 2024-10-07 A → 2024-09-26 (-11d) | 2024-10-07 A → 2024-09-27 (-10d) | 1d → 2d | 100% → 0% | none → 90d |  | baseline start 2024-09-23 → 2024-09-26; baseline finish 2024-09-24 → 2024-09-27 |
| 56 | Organize Provisioning Emails | 2024-10-07 A → 2024-09-30 (-7d) | 2024-10-07 A → 2024-10-01 (-6d) | 1d → 2d | 100% → 0% | none → 90d |  | baseline start 2024-09-25 → 2024-09-30; baseline finish 2024-09-27 → 2024-10-01 |
| 57 | Ensure Project Team Members Access to the SAP Support Portal, SAP Best Practices Explorer, and SAP Customer Communities | 2024-10-07 A → 2024-10-03 (-4d) | 2024-10-07 A → 2024-10-04 (-3d) | 1d → 2d | 100% → 0% | none → 90d |  | baseline start 2024-09-30 → 2024-10-03; baseline finish 2024-10-01 → 2024-10-04 |
| 58 | **SAP Cloud ALM Onboarding** | 2024-09-03 A → 2024-10-07 A (+34d) | 2024-09-13 A → 2024-10-09 A (+26d) | 9d → 3d |  |  |  | baseline start 2024-10-03 → 2024-10-07; baseline finish 2024-10-04 → 2024-10-08 |
| 59 | Request SAP Cloud ALM Tenant | 2024-09-03 A → 2024-10-07 A (+34d) | 2024-09-13 A → 2024-10-08 A (+25d) | 9d → 2d |  |  |  | baseline start 2024-10-03 → 2024-10-07; baseline finish 2024-10-03 → 2024-10-07 |
| 60 | Access SAP Cloud ALM and Create Users | 2024-09-13 A → 2024-10-08 A (+25d) | 2024-09-13 A → 2024-10-09 A (+26d) |  |  |  |  | baseline start 2024-10-04 → 2024-10-08; baseline finish 2024-10-04 → 2024-10-08 |
| 61 | **Initial System Access for Central Business Configuration** | 2024-09-03 A → 2024-10-15 A (+42d) | 2024-09-19 A → 2024-10-17 A (+28d) | 13d → 3d |  |  |  | baseline start 2024-10-05 → 2024-10-09; baseline finish 2024-10-08 → 2024-10-11 |
| 62 | Access the SAP Central Business Configuration | 2024-09-03 A → 2024-10-15 A (+42d) | 2024-09-10 A → 2024-10-15 A (+35d) | 6d → 1d |  |  |  | baseline start 2024-10-05 → 2024-10-09; baseline finish 2024-10-05 → 2024-10-09 |
| 63 | Set Up Starter Project in SAP Central Business Configuration | 2024-09-11 A → 2024-10-16 A (+35d) | 2024-09-11 A → 2024-10-16 A (+35d) |  |  |  |  | baseline start 2024-10-07 → 2024-10-10; baseline finish 2024-10-07 → 2024-10-10 |
| 64 | Set Up SAP Central Business Configuration Integration | 2024-09-13 A → 2024-10-17 A (+34d) | 2024-09-19 A → 2024-10-17 A (+28d) | 5d → 1d |  |  |  | baseline start 2024-10-08 → 2024-10-11; baseline finish 2024-10-08 → 2024-10-11 |
| 65 | **Initial System Access for SAP S/4HANA Cloud** | 2024-09-03 A → 2024-10-17 A (+44d) | 2024-09-20 A → 2024-10-18 A (+28d) | 14d → 2d |  |  |  | baseline start 2024-09-12 → 2024-10-14; baseline finish 2024-09-16 → 2024-10-16 |
| 66 | Access Starter System and Reset Password | 2024-09-03 A → 2024-10-17 A (+44d) | 2024-09-10 A → 2024-10-18 A (+38d) | 6d → 1d |  |  | 30 → 64 | baseline start 2024-09-12 → 2024-10-14; baseline finish 2024-09-12 → 2024-10-14 |
| 67 | Create Users in the Starter System | 2024-09-10 A → 2024-10-17 A (+37d) | 2024-09-11 A → 2024-10-18 A (+37d) | 1d → 0d |  |  |  | baseline start 2024-09-13 → 2024-10-15; baseline finish 2024-09-13 → 2024-10-15 |
| 68 | Self-Activation of Project Team Members in the Identity Authentication Service | 2024-09-20 A → 2024-10-18 A (+28d) | 2024-09-20 A → 2024-10-18 A (+28d) | 1d → 0d |  |  |  | baseline start 2024-09-16 → 2024-10-16; baseline finish 2024-09-16 → 2024-10-16 |
| 69 | **Phase Closure and Sign-Off Phase Deliverables** | 2024-11-12 A → 2024-10-25 A (-18d) | 2024-11-13 A → 2024-10-25 A (-19d) | 2d → 0d |  |  |  | baseline start 2024-10-11 → 2024-10-16; baseline finish 2024-10-11 → 2024-10-16 |
| 70 | Explore Phase Signoff | 2024-11-12 A → 2024-10-25 A (-18d) | 2024-11-13 A → 2024-10-25 A (-19d) | 2d → 0d |  |  | 48FF → 53 | baseline start 2024-10-11 → 2024-10-16; baseline finish 2024-10-11 → 2024-10-16 |
| 71 | **Deliverables** | 2024-09-27 A → 2024-10-25 A (+28d) | 2024-10-21 A → 2024-10-25 A (+4d) | 19d → 1d |  |  |  | baseline start 2024-10-05 → 2024-10-10; baseline finish 2024-10-10 → 2024-10-15 |
| 72 | Fit to Standard documents with Process flow diagram, Gap Analysis | 2024-10-21 A → 2024-10-25 A (+4d) | 2024-10-21 A → 2024-10-25 A (+4d) |  |  |  |  | baseline start 2024-10-05 → 2024-10-10; baseline finish 2024-10-05 → 2024-10-10 |
| 73 | Core team training/ presentation | 2024-09-27 A → 2024-10-25 A (+28d) | 2024-09-27 A → 2024-10-25 A (+28d) |  |  |  |  | baseline start 2024-10-05 → 2024-10-10; baseline finish 2024-10-05 → 2024-10-10 |
| 74 | Initial Master data templates | 2024-10-18 A → 2024-10-25 A (+7d) | 2024-10-18 A → 2024-10-25 A (+7d) | 0d → 1d |  |  |  | baseline start 2024-10-10 → 2024-10-15; baseline finish 2024-10-10 → 2024-10-15 |

| ID | Task | Start | Finish | Duration | Complete | Total float | Predecessors | Other |
| --- | --- | --- | --- | --- | --- | --- | --- | --- |
| 75 | **Realize** | 2024-10-29 A → 2024-10-21 A (-8d) | 2024-12-31 → 2024-12-18 (-13d) | 51.9d → 41d | 1% → 8% | 338.9d → 34d |  | baseline start 2024-10-12 → 2024-10-15; baseline finish 2024-12-05 → 2024-12-18 |
| 76 | **Requirement gathering sheet (RGS)** | 2024-10-29 A → 2024-10-27 A (-2d) | 2024-11-19 → 2024-10-30 A (-20d) | 16.75d → 3d | 27% → 100% | 374.05d → none |  | baseline start 2024-10-12 → 2024-10-16; baseline finish 2024-10-16 → 2024-10-21 |
| 77 | Prepare RGS | 2024-10-29 A → 2024-10-27 A (-2d) | 2024-11-18 → 2024-10-30 A (-19d) | 4.9d → 3d | 28% → 100% | 0d → none | 48 → 53 | constraint finish no earlier than 2024-11-18 → none; baseline start 2024-10-12 → 2024-10-16; baseline finish 2024-10-15 → 2024-10-18 |
| 78 | Submit RGS |  | 2024-11-19 → 2024-10-30 A (-20d) | 1d → 0d | 25% → 100% | 374.05d → none |  | constraint finish no earlier than 2024-11-18 → none; baseline start 2024-10-16 → 2024-10-21; baseline finish 2024-10-16 → 2024-10-21 |
| 79 | **Functional Specifications** | 2024-11-19 → 2024-10-26 A (-24d) | 2024-11-25 → 2024-11-11 (-14d) | 6d → 9d |  | 0d → 61d |  | baseline start 2024-10-16 → 2024-10-22; baseline finish 2024-10-22 → 2024-10-29 |
| 80 | Prepare functional specfications | 2024-11-19 → 2024-10-31 A (-19d) | 2024-11-22 → 2024-11-07 (-15d) |  |  |  | 77 → 78 | baseline start 2024-10-16 → 2024-10-22; baseline finish 2024-10-19 → 2024-10-25 |
| 81 | Finalize development tracker | 2024-11-23 → 2024-10-26 A (-28d) | 2024-11-25 → 2024-11-11 (-14d) |  |  | 368.8d → 61d |  | baseline start 2024-10-21 → 2024-10-28; baseline finish 2024-10-22 → 2024-10-29 |
| 82 | **Solution Configuration** | 2024-10-29 A → 2024-10-25 A (-4d) | 2024-11-28 → 2024-11-08 A (-20d) | 24.9d → 9d | 0% → 100% | 0d → none |  | baseline start 2024-10-21 → 2024-10-28; baseline finish 2024-11-02 → 2024-11-12 |
| 83 | Configure Processes and Functions in golden master (100) | 2024-10-29 A → 2024-10-25 A (-4d) | 2024-11-23 → 2024-10-31 A (-23d) | 1d → 0d | 0% → 100% | 0d → none |  | constraint finish no earlier than 2024-11-12 → none; baseline start 2024-10-21 → 2024-10-28; baseline finish 2024-10-25 → 2024-11-05 |
| 84 | Transfer of Configuration to Dev testing | 2024-11-25 → 2024-10-31 A (-25d) | 2024-11-25 → 2024-10-31 A (-25d) | 0.9d → 0d | 0% → 100% | 0d → none |  | constraint finish no earlier than 2024-11-22 → none; baseline start 2024-10-26 → 2024-11-06; baseline finish 2024-10-26 → 2024-11-06 |
| 85 | Unit testing-1 (Consultant) | 2024-11-25 → 2024-10-31 A (-25d) | 2024-11-27 → 2024-11-04 A (-23d) | 2d → 1d | 0% → 100% | 0d → none |  | baseline start 2024-10-28 → 2024-11-07; baseline finish 2024-10-30 → 2024-11-11 |
| 86 | Document and Resolve Issues | 2024-11-25 → 2024-11-04 A (-21d) | 2024-11-27 → 2024-11-07 A (-20d) | 2d → 4d | 0% → 100% | 0d → none |  | baseline start 2024-10-28 → 2024-11-07; baseline finish 2024-10-30 → 2024-11-11 |
| 87 | Submit Unit Testing result & completion of baseline config | 2024-11-27 → 2024-11-08 A (-19d) | 2024-11-28 → 2024-11-08 A (-20d) |  | 0% → 100% | 0d → none |  | baseline start 2024-11-02 → 2024-11-12; baseline finish 2024-11-02 → 2024-11-12 |
| 88 | **Core team training & UT** | 2024-11-27 → 2024-11-13 A (-14d) | 2024-12-11 → 2024-11-28 (-13d) |  | 0% → 25% | 0d → 42d |  | baseline start 2024-11-02 → 2024-11-13; baseline finish 2024-11-15 → 2024-11-28 |
| 89 | Plan for CTM training | 2024-11-27 → 2024-11-13 A (-14d) | 2024-11-28 → 2024-11-13 A (-15d) |  | 0% → 100% | 0d → none | 87FF → 87 | baseline start 2024-11-02 → 2024-11-13; baseline finish 2024-11-02 → 2024-11-13 |
| 90 | Making necessery training arrangement - PPT + tutorial | 2024-11-28 → 2024-11-14 A (-14d) | 2024-11-30 → 2024-11-16 A (-14d) |  | 0% → 100% | 0d → none |  | baseline start 2024-11-04 → 2024-11-14; baseline finish 2024-11-05 → 2024-11-15 |
| 91 | Conducting CTM Training (Module wise) | 2024-11-30 → 2024-11-18 (-12d) | 2024-12-04 → 2024-11-20 (-14d) |  |  | 0d → 3d |  | baseline start 2024-11-06 → 2024-11-18; baseline finish 2024-11-08 → 2024-11-20 |
| 92 | Unit Testing by Core team | 2024-12-04 → 2024-11-21 (-13d) | 2024-12-11 → 2024-11-28 (-13d) |  |  | 348.9d → 42d |  | baseline start 2024-11-09 → 2024-11-21; baseline finish 2024-11-15 → 2024-11-28 |
| 93 | **Quality System Request / Initial Setup** | 2024-11-14 → 2024-11-11 A (-3d) | 2024-11-14 → 2024-11-13 A (-1d) | 1d → 3d | 0% → 100% | 372.8d → none |  | baseline start 2024-10-12 → 2024-10-17; baseline finish 2024-10-12 → 2024-10-17 |
| 94 | Execute Initial Setup of the Quality System via SAP Central Business Configuration | 2024-11-14 → 2024-11-11 A (-3d) | 2024-11-14 → 2024-11-13 A (-1d) | 1d → 3d | 0% → 100% | 377.8d → none |  | baseline start 2024-10-12 → 2024-10-17; baseline finish 2024-10-12 → 2024-10-17 |
| 95 | Request Quality System via Manage Your Solution App | 2024-11-14 → 2024-11-13 A (-1d) | 2024-11-14 → 2024-11-13 A (-1d) |  | 0% → 100% | 372.8d → none |  | baseline start 2024-10-12 → 2024-10-17; baseline finish 2024-10-12 → 2024-10-17 |
| 96 | **Quality System Initial Access** | 2024-11-14 → 2024-10-25 A (-20d) | 2024-11-20 → 2024-11-14 (-6d) | 6d → 13d | 0% → 22% | 372.8d → 58d |  | baseline start 2024-10-12 → 2024-10-17; baseline finish 2024-10-19 → 2024-10-25 |
| 97 | Receive Quality System and Reset Password | 2024-11-15 → 2024-11-13 A (-2d) | 2024-11-15 → 2024-11-13 A (-2d) | 1d → 0d | 0% → 100% | 372.8d → none |  | baseline start 2024-10-14 → 2024-10-18; baseline finish 2024-10-14 → 2024-10-18 |
| 98 | Create Preset Configuration User in the Quality System via Manage Your Solution App | 2024-11-16 → 2024-11-13 A (-3d) | 2024-11-16 → 2024-11-13 A (-3d) |  | 0% → 100% | 374.8d → none |  | baseline start 2024-10-15 → 2024-10-21; baseline finish 2024-10-15 → 2024-10-21 |
| 99 | Define Preset Parameters and Trigger System Activation via Manage Your Solution App | 2024-11-18 → 2024-11-14 A (-4d) | 2024-11-18 → 2024-11-14 A (-4d) |  | 0% → 100% | 374.8d → none |  | baseline start 2024-10-16 → 2024-10-22; baseline finish 2024-10-16 → 2024-10-22 |
| 100 | **Create Users in the Quality Server** | 2024-11-14 → 2024-10-25 (-20d) | 2024-11-19 → 2024-11-05 (-14d) | 5d → 6d |  | 372.8d → 64d |  | baseline start 2024-10-12 → 2024-10-17; baseline finish 2024-10-18 → 2024-10-24 |
| 101 | **Finalize list of users for QAS** | 2024-11-14 → 2024-10-25 (-20d) | 2024-11-19 → 2024-11-05 (-14d) | 5d → 6d |  | 372.8d → 64d |  | baseline start 2024-10-12 → 2024-10-17; baseline finish 2024-10-18 → 2024-10-24 |
| 102 | **Provide user authorization** | 2024-11-14 → 2024-10-25 (-20d) | 2024-11-19 → 2024-11-05 (-14d) | 5d → 6d |  | 372.8d → 64d |  | baseline start 2024-10-12 → 2024-10-17; baseline finish 2024-10-18 → 2024-10-24 |
| 103 | Finalize user authorization | 2024-11-14 → 2024-10-25 (-20d) | 2024-11-14 → 2024-10-28 (-17d) | 1d → 2d |  | 372.8d → 64d |  | baseline start 2024-10-12 → 2024-10-17; baseline finish 2024-10-14 → 2024-10-18 |
| 104 | Create roles and authorization | 2024-11-15 → 2024-10-29 (-17d) | 2024-11-15 → 2024-10-29 (-17d) |  |  | 372.8d → 64d |  | baseline start 2024-10-15 → 2024-10-21; baseline finish 2024-10-15 → 2024-10-21 |
| 105 | Testing of roles and authorization | 2024-11-16 → 2024-10-30 (-17d) | 2024-11-18 → 2024-11-04 (-14d) |  |  | 372.8d → 64d |  | baseline start 2024-10-16 → 2024-10-22; baseline finish 2024-10-17 → 2024-10-23 |
| 106 | Deployment of roles to users | 2024-11-19 → 2024-11-05 (-14d) | 2024-11-19 → 2024-11-05 (-14d) |  |  | 372.8d → 64d |  | baseline start 2024-10-18 → 2024-10-24; baseline finish 2024-10-18 → 2024-10-24 |
| 107 | Self-Activation of Project Team Members in the Identity Authentication Service | 2024-11-20 → 2024-11-06 (-14d) | 2024-11-20 → 2024-11-06 (-14d) |  |  | 372.8d → 64d |  | baseline start 2024-10-19 → 2024-10-25; baseline finish 2024-10-19 → 2024-10-25 |
| 108 | **Required Configuration Before System Use - SAP S/4HANA Cloud** | 2024-11-16 → 2024-11-14 A (-2d) | 2024-11-16 → 2024-11-14 A (-2d) |  | 0% → 100% | 372.8d → none |  | baseline start 2024-10-15 → 2024-10-21; baseline finish 2024-10-15 → 2024-10-21 |
| 109 | Configure system | 2024-11-16 → 2024-11-14 A (-2d) | 2024-11-16 → 2024-11-14 A (-2d) |  | 0% → 100% | 372.8d → none |  | baseline start 2024-10-15 → 2024-10-21; baseline finish 2024-10-15 → 2024-10-21 |
| 110 | **Standard Integration Setup in the Quality/Test System** | 2024-11-18 → 2024-11-14 A (-4d) | 2024-11-20 → 2024-11-15 A (-5d) | 3d → 2d | 0% → 100% | 372.8d → none |  | baseline start 2024-10-16 → 2024-10-22; baseline finish 2024-10-18 → 2024-10-24 |
| 111 | Set Up Integration using Cloud Integration Automation Service (CIAS) | 2024-11-18 → 2024-11-14 A (-4d) | 2024-11-18 → 2024-11-14 A (-4d) |  | 0% → 100% | 372.8d → none |  | baseline start 2024-10-16 → 2024-10-22; baseline finish 2024-10-16 → 2024-10-22 |
| 112 | Set Up Employee Central Integration (JB1) | 2024-11-19 → 2024-11-15 A (-4d) | 2024-11-19 → 2024-11-15 A (-4d) |  | 0% → 100% | 372.8d → none |  | baseline start 2024-10-17 → 2024-10-23; baseline finish 2024-10-17 → 2024-10-23 |
| 113 | Set Up Integrations in the Quality/Test System | 2024-11-20 → 2024-11-15 A (-5d) | 2024-11-20 → 2024-11-15 A (-5d) | 1d → 0d | 0% → 100% | 372.8d → none |  | baseline start 2024-10-18 → 2024-10-24; baseline finish 2024-10-18 → 2024-10-24 |
| 114 | **System Integration Test** | 2024-11-15 → 2024-10-21 A (-25d) | 2024-12-30 → 2024-12-18 (-12d) | 37.9d → 41d |  | 14.9d → 34d |  | baseline start 2024-10-12 → 2024-10-15; baseline finish 2024-12-04 → 2024-12-18 |
| 115 | **Integration test Plan** | 2024-11-15 → 2024-10-21 (-25d) | 2024-12-05 → 2024-11-25 (-10d) | 17.9d → 24d |  | 14.9d → 11d |  | baseline start 2024-10-12 → 2024-10-15; baseline finish 2024-11-11 → 2024-11-22 |
| 116 | Identify scenerios for Integration test | 2024-12-04 → 2024-11-21 (-13d) | 2024-12-05 → 2024-11-22 (-13d) | 1d → 2d |  | 0d → 3d |  | baseline start 2024-11-09 → 2024-11-21; baseline finish 2024-11-11 → 2024-11-22 |
| 117 | Write scripts for Integration test | 2024-12-04 → 2024-11-21 (-13d) | 2024-12-05 → 2024-11-21 (-14d) |  |  | 0d → 3d |  | baseline start 2024-11-09 → 2024-11-21; baseline finish 2024-11-11 → 2024-11-21 |
| 118 | **Master data** | 2024-11-21 → 2024-10-21 (-31d) | 2024-12-03 → 2024-11-22 (-11d) | 11d → 23d |  | 361.8d → 52d |  | baseline start 2024-10-22 → 2024-10-15; baseline finish 2024-11-07 → 2024-11-18 |
| 119 | Receipt Master Data from NL | 2024-11-21 → 2024-10-21 (-31d) | 2024-11-29 → 2024-11-19 (-10d) | 8d → 20d |  | 361.8d → 52d | 47FS+10d → 47 | was named Receipt Master Data from PA; constraint finish no earlier than 2024-11-29 → none; baseline start 2024-10-22 → 2024-10-15; baseline finish 2024-11-04 → 2024-11-13 |
| 120 | Upload Master data in QAS | 2024-11-30 → 2024-11-20 (-10d) | 2024-12-03 → 2024-11-22 (-11d) |  |  | 361.8d → 52d |  | baseline start 2024-11-05 → 2024-11-14; baseline finish 2024-11-07 → 2024-11-18 |
| 121 | **Identity and Access Management Planning and Design** | 2024-11-15 → 2024-10-25 (-21d) | 2024-11-26 → 2024-11-25 (-1d) | 10d → 20d |  | 14.9d → 7d |  | baseline start 2024-10-12 → 2024-10-17; baseline finish 2024-11-06 → 2024-11-15 |
| 122 | Finalize list of users | 2024-11-15 → 2024-10-25 (-21d) | 2024-11-20 → 2024-11-18 (-2d) | 5d → 15d |  | 14.9d → 7d |  | constraint finish no earlier than 2024-11-20 → none; baseline start 2024-10-12 → 2024-10-17; baseline finish 2024-10-29 → 2024-11-08 |
| 123 | Provide & Check roles and authorization | 2024-11-21 → 2024-11-19 (-2d) | 2024-11-26 → 2024-11-25 (-1d) |  |  | 14.9d → 7d |  | baseline start 2024-10-30 → 2024-11-11; baseline finish 2024-11-06 → 2024-11-15 |
| 124 | **Conduct System integration test** | 2024-12-05 → 2024-11-22 (-13d) | 2024-12-30 → 2024-12-11 (-19d) | 20d → 14d |  | 0d → 3d |  | baseline start 2024-11-12 → 2024-11-22; baseline finish 2024-12-04 → 2024-12-11 |
| 125 | Perform Integration testing by Consultant | 2024-12-05 → 2024-11-22 (-13d) | 2024-12-13 → 2024-11-29 (-14d) | 7d → 6d |  | 0d → 3d |  | baseline start 2024-11-12 → 2024-11-22; baseline finish 2024-11-19 → 2024-11-29 |
| 126 | Perform User Acceptance test - CTM | 2024-12-13 → 2024-12-02 (-11d) | 2024-12-26 → 2024-12-09 (-17d) | 10d → 6d |  | 0d → 3d |  | baseline start 2024-11-20 → 2024-12-02; baseline finish 2024-11-30 → 2024-12-09 |
| 127 | Resolving the issues, if any | 2024-12-13 → 2024-12-02 (-11d) | 2024-12-26 → 2024-12-09 (-17d) | 10d → 6d |  | 0d → 3d |  | baseline start 2024-11-20 → 2024-12-02; baseline finish 2024-11-30 → 2024-12-09 |
| 128 | Retesting of scenarios | 2024-12-26 → 2024-12-10 (-16d) | 2024-12-30 → 2024-12-11 (-19d) | 3d → 2d |  | 0d → 36d |  | baseline start 2024-12-02 → 2024-12-10; baseline finish 2024-12-04 → 2024-12-11 |
| 129 | UAT (by CTM) signoff | 2024-12-28 → 2024-12-11 (-17d) | 2024-12-30 → 2024-12-11 (-19d) |  |  | 0d → 36d |  | baseline start 2024-12-04 → 2024-12-11; baseline finish 2024-12-04 → 2024-12-11 |
| 130 | **ABAP Development - SIT Critical** | 2024-11-25 → 2024-11-06 A (-19d) | 2024-12-27 → 2024-12-18 (-9d) | 28d → 31d |  | 7.9d → 34d |  | baseline start 2024-10-26 → 2024-11-06; baseline finish 2024-12-03 → 2024-12-18 |
| 131 | Develop reports | 2024-11-25 → 2024-11-06 A (-19d) | 2024-12-19 → 2024-12-10 (-9d) | 22d → 25d |  | 7.9d → 26d |  | baseline start 2024-10-26 → 2024-11-06; baseline finish 2024-11-26 → 2024-12-10 |
| 132 | Testing by consultant | 2024-11-28 → 2024-11-11 (-17d) | 2024-12-20 → 2024-12-13 (-7d) | 20d → 25d |  | 341.8d → 34d |  | baseline start 2024-10-30 → 2024-11-11; baseline finish 2024-11-29 → 2024-12-13 |
| 133 | Testing by CTM | 2024-12-02 → 2024-11-14 (-18d) | 2024-12-27 → 2024-12-18 (-9d) | 22d → 25d |  | 341.8d → 34d |  | baseline start 2024-11-05 → 2024-11-14; baseline finish 2024-12-03 → 2024-12-18 |
| 134 | Sign off Development | 2024-12-27 → 2024-12-18 (-9d) | 2024-12-27 → 2024-12-18 (-9d) |  |  | 341.8d → 34d |  | baseline start 2024-12-03 → 2024-12-18; baseline finish 2024-12-03 → 2024-12-18 |
| 140 | **Cutover Strategy** | 2024-12-30 → 2024-12-10 (-20d) | 2024-12-31 → 2024-12-12 (-19d) | 1d → 3d |  | 0d → 3d |  | baseline start 2024-12-05 → 2024-12-10; baseline finish 2024-12-05 → 2024-12-12 |
| 141 | Discussion on cutover strategy | 2024-12-30 → 2024-12-10 (-20d) | 2024-12-31 → 2024-12-11 (-20d) | 1d → 2d |  | 0d → 3d | 129 → 127 | baseline start 2024-12-05 → 2024-12-10; baseline finish 2024-12-05 → 2024-12-11 |
| 142 | Cutover & data responsibility Plan | 2024-12-30 → 2024-12-12 (-18d) | 2024-12-31 → 2024-12-12 (-19d) |  |  | 0d → 3d | 141FF → 141 | baseline start 2024-12-05 → 2024-12-12; baseline finish 2024-12-05 → 2024-12-12 |
| 143 | Communication to Organisation for Cutover | 2024-12-30 → 2024-12-12 (-18d) | 2024-12-31 → 2024-12-12 (-19d) |  |  | 0d → 3d |  | baseline start 2024-12-05 → 2024-12-12; baseline finish 2024-12-05 → 2024-12-12 |
| 144 | **End user training plan** | 2024-12-11 → 2024-11-29 (-12d) | 2024-12-13 → 2024-12-02 (-11d) |  |  | 348.9d → 42d |  | baseline start 2024-11-16 → 2024-11-29; baseline finish 2024-11-18 → 2024-12-02 |
| 145 | Preparation of End User training plan | 2024-12-11 → 2024-11-29 (-12d) | 2024-12-13 → 2024-12-02 (-11d) |  |  | 348.9d → 42d |  | baseline start 2024-11-16 → 2024-11-29; baseline finish 2024-11-18 → 2024-12-02 |
| 146 | Communicate plan to NL | 2024-12-12 → 2024-12-02 (-10d) | 2024-12-13 → 2024-12-02 (-11d) |  |  | 348.9d → 42d |  | was named Communicate plan to PA; baseline start 2024-11-18 → 2024-12-02; baseline finish 2024-11-18 → 2024-12-02 |
| 147 | **Production System Request** | 2024-11-14 → 2024-10-25 (-20d) | 2024-11-15 → 2024-10-28 (-18d) |  |  | 374.8d → 67d |  | baseline start 2024-10-12 → 2024-10-17; baseline finish 2024-10-14 → 2024-10-18 |
| 148 | Request for Production System | 2024-11-14 → 2024-10-25 (-20d) | 2024-11-14 → 2024-10-25 (-20d) |  |  | 374.8d → 67d |  | baseline start 2024-10-12 → 2024-10-17; baseline finish 2024-10-12 → 2024-10-17 |
| 149 | Request Access to the SAP S/4HANA Cloud Release Assessment Tool. | 2024-11-15 → 2024-10-28 (-18d) | 2024-11-15 → 2024-10-28 (-18d) |  |  | 374.8d → 67d |  | baseline start 2024-10-14 → 2024-10-18; baseline finish 2024-10-14 → 2024-10-18 |

| ID | Task | Start | Finish | Duration | Total float | Predecessors | Other |
| --- | --- | --- | --- | --- | --- | --- | --- |
| 150 | **Production System Initial Access** | 2024-11-16 → 2024-10-29 (-18d) | 2024-11-18 → 2024-10-30 (-19d) |  | 374.8d → 67d |  | baseline start 2024-10-15 → 2024-10-21; baseline finish 2024-10-16 → 2024-10-22 |
| 151 | Receive Production System and Reset Password | 2024-11-16 → 2024-10-29 (-18d) | 2024-11-16 → 2024-10-29 (-18d) |  | 374.8d → 67d |  | baseline start 2024-10-15 → 2024-10-21; baseline finish 2024-10-15 → 2024-10-21 |
| 152 | Transport Initial Change Project from Q-System to P-System | 2024-11-18 → 2024-10-30 (-19d) | 2024-11-18 → 2024-10-30 (-19d) |  | 374.8d → 67d |  | baseline start 2024-10-16 → 2024-10-22; baseline finish 2024-10-16 → 2024-10-22 |
| 153 | Phase Closure & Signoff Phase deliverables | 2024-12-30 → 2024-12-12 (-18d) | 2024-12-31 → 2024-12-12 (-19d) |  | 338.9d → 38d |  | baseline start 2024-12-05 → 2024-12-12; baseline finish 2024-12-05 → 2024-12-12 |
| 154 | **Deliverables** | 2024-11-28 → 2024-11-11 (-17d) | 2024-12-31 → 2024-12-12 (-19d) | 27d → 24d | 338.9d → 38d |  | baseline start 2024-11-04 → 2024-11-13; baseline finish 2024-12-05 → 2024-12-12 |
| 155 | D: Test scripts | 2024-12-05 → 2024-11-22 (-13d) | 2024-12-06 → 2024-11-22 (-14d) |  | 358.9d → 52d |  | baseline start 2024-11-12 → 2024-11-22; baseline finish 2024-11-12 → 2024-11-22 |
| 156 | D: Unit test result document | 2024-11-28 → 2024-11-11 (-17d) | 2024-11-29 → 2024-11-11 (-18d) |  | 364.9d → 61d |  | baseline start 2024-11-04 → 2024-11-13; baseline finish 2024-11-04 → 2024-11-13 |
| 157 | D: Integration testing document | 2024-12-13 → 2024-12-02 (-11d) | 2024-12-14 → 2024-12-02 (-12d) |  | 351.9d → 46d |  | baseline start 2024-11-20 → 2024-12-02; baseline finish 2024-11-20 → 2024-12-02 |
| 158 | D: User Acceptance testing document | 2024-12-28 → 2024-12-11 (-17d) | 2024-12-30 → 2024-12-11 (-19d) |  | 339.9d → 39d |  | baseline start 2024-12-04 → 2024-12-11; baseline finish 2024-12-04 → 2024-12-11 |
| 159 | D: Final master data templates | 2024-12-30 → 2024-12-12 (-18d) | 2024-12-31 → 2024-12-12 (-19d) |  | 338.9d → 38d |  | baseline start 2024-12-05 → 2024-12-12; baseline finish 2024-12-05 → 2024-12-12 |
| 160 | D: Data migration strategy document | 2024-12-30 → 2024-12-12 (-18d) | 2024-12-31 → 2024-12-12 (-19d) |  | 338.9d → 38d |  | baseline start 2024-12-05 → 2024-12-12; baseline finish 2024-12-05 → 2024-12-12 |
| 161 | **Deploy** | 2024-12-11 → 2024-10-21 (-51d) | 2025-01-31 → 2025-01-02 (-29d) | 43.8d → 51d | 15.9d → 0d |  | baseline start 2024-11-19 → 2024-10-15; baseline finish 2025-01-07 → 2024-12-31 |
| 162 | **ABAP Developments Pre Go Live** | 2024-12-20 → 2024-12-02 (-18d) | 2025-01-21 → 2024-12-31 (-21d) | 27d → 21d | 7.9d → 26d |  | baseline start 2024-11-27 → 2024-12-02; baseline finish 2025-01-06 → 2024-12-31 |
| 163 | Develop reports | 2024-12-20 → 2024-12-02 (-18d) | 2025-01-13 → 2024-12-20 (-24d) | 20d → 15d | 7.9d → 26d | 131 → 131FS-7d | baseline start 2024-11-27 → 2024-12-02; baseline finish 2024-12-28 → 2024-12-20 |
| 164 | Testing by consultant | 2024-12-24 → 2024-12-05 (-19d) | 2025-01-16 → 2024-12-26 (-21d) | 20d → 15d | 7.9d → 26d |  | baseline start 2024-11-30 → 2024-12-05; baseline finish 2025-01-01 → 2024-12-26 |
| 165 | Testing by CTM | 2024-12-27 → 2024-12-09 (-18d) | 2025-01-18 → 2024-12-30 (-19d) | 20d → 15d | 7.9d → 26d |  | baseline start 2024-12-03 → 2024-12-09; baseline finish 2025-01-03 → 2024-12-30 |
| 166 | Sign off Development | 2025-01-20 → 2024-12-31 (-20d) | 2025-01-21 → 2024-12-31 (-21d) | 2d → 1d | 7.9d → 26d |  | baseline start 2025-01-04 → 2024-12-31; baseline finish 2025-01-06 → 2024-12-31 |
| 167 | **End User Training** | 2024-12-31 → 2024-12-13 (-18d) | 2025-01-11 → 2024-12-27 (-15d) |  | 327.9d → 27d |  | baseline start 2024-12-06 → 2024-12-13; baseline finish 2024-12-17 → 2024-12-27 |
| 168 | Prepare end user training manual | 2024-12-31 → 2024-12-13 (-18d) | 2025-01-02 → 2024-12-16 (-17d) |  | 327.9d → 27d |  | baseline start 2024-12-06 → 2024-12-13; baseline finish 2024-12-07 → 2024-12-16 |
| 169 | Conduct end user training | 2025-01-02 → 2024-12-17 (-16d) | 2025-01-08 → 2024-12-23 (-16d) |  | 327.9d → 27d |  | baseline start 2024-12-09 → 2024-12-17; baseline finish 2024-12-13 → 2024-12-23 |
| 170 | Conduct training to HODs/Management | 2025-01-08 → 2024-12-24 (-15d) | 2025-01-11 → 2024-12-27 (-15d) |  | 328.9d → 28d |  | baseline start 2024-12-14 → 2024-12-24; baseline finish 2024-12-17 → 2024-12-27 |
| 171 | **Production Environment Preparation** | 2024-12-30 → 2024-12-12 (-18d) | 2025-01-02 → 2024-12-16 (-17d) |  | 336.9d → 36d |  | baseline start 2024-12-05 → 2024-12-12; baseline finish 2024-12-07 → 2024-12-16 |
| 172 | Transport final configurations | 2024-12-30 → 2024-12-12 (-18d) | 2024-12-31 → 2024-12-12 (-19d) |  | 336.9d → 36d |  | baseline start 2024-12-05 → 2024-12-12; baseline finish 2024-12-05 → 2024-12-12 |
| 173 | Maintain number ranges | 2024-12-31 → 2024-12-13 (-18d) | 2025-01-01 → 2024-12-13 (-19d) |  | 336.9d → 36d |  | baseline start 2024-12-06 → 2024-12-13; baseline finish 2024-12-06 → 2024-12-13 |
| 174 | Maintain client specific data | 2025-01-01 → 2024-12-16 (-16d) | 2025-01-02 → 2024-12-16 (-17d) |  | 336.9d → 36d |  | baseline start 2024-12-07 → 2024-12-16; baseline finish 2024-12-07 → 2024-12-16 |
| 175 | **User creation** | 2024-12-13 → 2024-12-03 (-10d) | 2025-01-13 → 2024-12-30 (-14d) | 25d → 19d | 327.9d → 27d |  | baseline start 2024-11-19 → 2024-12-03; baseline finish 2024-12-18 → 2024-12-30 |
| 176 | Finalize list of users for production enviornment | 2024-12-13 → 2024-12-03 (-10d) | 2024-12-16 → 2024-12-04 (-12d) |  | 348.9d → 42d |  | baseline start 2024-11-19 → 2024-12-03; baseline finish 2024-11-20 → 2024-12-04 |
| 177 | Finalise Authorization Matrix | 2024-12-16 → 2024-12-05 (-11d) | 2024-12-18 → 2024-12-06 (-12d) |  | 348.9d → 42d |  | baseline start 2024-11-21 → 2024-12-05; baseline finish 2024-11-22 → 2024-12-06 |
| 178 | Check roles and authorization | 2025-01-08 → 2024-12-24 (-15d) | 2025-01-13 → 2024-12-30 (-14d) |  | 327.9d → 27d |  | baseline start 2024-12-14 → 2024-12-24; baseline finish 2024-12-18 → 2024-12-30 |
| 179 | **Data preparation and upload** | 2024-12-11 → 2024-10-21 (-51d) | 2025-01-30 → 2024-12-31 (-30d) | 42.9d → 49d | 16.9d → 0d |  | baseline start 2024-11-28 → 2024-10-15; baseline finish 2025-01-06 → 2024-12-26 |
| 180 | Receipt of master data | 2024-12-11 → 2024-10-21 (-51d) | 2024-12-21 → 2024-12-17 (-4d) | 10d → 40d | 21.9d → 0d | 47FS+40d → 47 | baseline start 2024-11-28 → 2024-10-15; baseline finish 2024-12-20 → 2024-12-11 |
| 181 | Validate & cleanse master data | 2024-12-23 → 2024-12-18 (-5d) | 2024-12-23 → 2024-12-19 (-4d) | 1d → 2d | 21.9d → 0d |  | baseline start 2024-12-21 → 2024-12-12; baseline finish 2024-12-21 → 2024-12-13 |
| 182 | Upload master data in Production | 2024-12-24 → 2024-12-20 (-4d) | 2024-12-28 → 2024-12-26 (-2d) |  | 21.9d → 0d |  | baseline start 2024-12-23 → 2024-12-16; baseline finish 2024-12-27 → 2024-12-19 |
| 183 | Confirm uploaded master data | 2024-12-30 → 2024-12-27 (-3d) | 2024-12-30 → 2024-12-27 (-3d) |  | 339.8d → 28d |  | baseline start 2024-12-28 → 2024-12-20; baseline finish 2024-12-28 → 2024-12-20 |
| 184 | Receipt of cutover data | 2024-12-31 → 2024-12-13 (-18d) | 2025-01-23 → 2024-12-20 (-34d) | 20d → 6d | 0d → 3d |  | baseline start 2024-12-06 → 2024-12-13; baseline finish 2024-12-30 → 2024-12-20 |
| 185 | Validate & cleanse cutover data | 2025-01-23 → 2024-12-13 (-41d) | 2025-01-30 → 2024-12-20 (-41d) |  | 312.9d → 32d | 184 → 143 | baseline start 2024-12-31 → 2024-12-13; baseline finish 2025-01-06 → 2024-12-20 |
| 186 | Upload cutover data in production | 2025-01-23 → 2024-12-27 (-27d) | 2025-01-30 → 2024-12-31 (-30d) | 6d → 3d |  |  | baseline start 2024-12-31 → 2024-12-23; baseline finish 2025-01-06 → 2024-12-26 |
| 187 | Check and validate uploaded data | 2025-01-29 → 2024-12-31 (-29d) | 2025-01-30 → 2024-12-31 (-30d) |  |  |  | baseline start 2025-01-06 → 2024-12-26; baseline finish 2025-01-06 → 2024-12-26 |
| 188 | **Deliverables** | 2024-12-16 → 2024-12-05 (-11d) | 2025-01-06 → 2024-12-31 (-6d) | 17d → 18d | 333.9d → 26d |  | baseline start 2024-11-21 → 2024-12-05; baseline finish 2024-12-31 → 2024-12-24 |
| 189 | D: End user training manual | 2025-01-02 → 2024-12-17 (-16d) | 2025-01-06 → 2024-12-19 (-18d) |  | 333.9d → 33d |  | baseline start 2024-12-09 → 2024-12-17; baseline finish 2024-12-11 → 2024-12-19 |
| 190 | D: Data migration plan & checklist | 2024-12-23 → 2024-12-18 (-5d) | 2024-12-26 → 2024-12-20 (-6d) |  | 342.8d → 32d |  | baseline start 2024-12-21 → 2024-12-12; baseline finish 2024-12-24 → 2024-12-16 |
| 191 | D: Master data upload programs | 2024-12-30 → 2024-12-27 (-3d) | 2025-01-01 → 2024-12-31 (-1d) |  | 337.8d → 26d |  | baseline start 2024-12-28 → 2024-12-20; baseline finish 2024-12-31 → 2024-12-24 |
| 192 | D: Sample data upload validation | 2024-12-30 → 2024-12-27 (-3d) | 2024-12-30 → 2024-12-27 (-3d) |  | 339.8d → 28d |  | baseline start 2024-12-28 → 2024-12-20; baseline finish 2024-12-28 → 2024-12-20 |
| 193 | D: Final SAP Authorization matrix | 2024-12-16 → 2024-12-05 (-11d) | 2024-12-17 → 2024-12-05 (-12d) |  | 349.9d → 43d |  | baseline start 2024-11-21 → 2024-12-05; baseline finish 2024-11-21 → 2024-12-05 |
| 194 | **Phase Closure & Sign Off Phase Deliverables** | 2025-01-30 → 2025-01-01 (-29d) | 2025-01-31 → 2025-01-02 (-29d) | 1d → 2d |  |  | baseline start 2025-01-07 → 2024-12-27; baseline finish 2025-01-07 → 2024-12-30 |
| 195 | Deploy signoff | 2025-01-30 → 2025-01-01 (-29d) | 2025-01-31 → 2025-01-01 (-30d) | 0.9d → 1d |  | 187, 166 → 187 | baseline start 2025-01-07 → 2024-12-27; baseline finish 2025-01-07 → 2024-12-27 |
| 196 | Completion of Final Preparation (Deploy) Phase | 2025-01-30 → 2025-01-02 (-28d) | 2025-01-31 → 2025-01-02 (-29d) |  |  | 195FF → 195 | baseline start 2025-01-07 → 2024-12-30; baseline finish 2025-01-07 → 2024-12-30 |
| 197 | Go Live | 2025-01-31 → 2025-01-03 (-28d) | 2025-01-31 → 2025-01-03 (-28d) | 0.1d → 1d |  | 196FF → 196 | baseline start 2025-01-08 → 2024-12-31; baseline finish 2025-01-08 → 2024-12-31 |
| 198 | **Stabilization** | 2025-01-31 → 2025-01-06 (-25d) | 2025-03-04 → 2025-02-05 (-27d) | 27d → 23d |  |  | baseline start 2025-01-09 → 2025-01-01; baseline finish 2025-02-08 → 2025-01-31 |
| 199 | Stabilization (Post Go live Support) | 2025-01-31 → 2025-01-06 (-25d) | 2025-03-04 → 2025-02-05 (-27d) | 27d → 23d |  |  | was named Stabilization; baseline start 2025-01-09 → 2025-01-01; baseline finish 2025-02-08 → 2025-01-31 |
| 200 | **Deliverables** | 2025-01-31 → 2025-01-06 (-25d) | 2025-03-04 → 2025-02-05 (-27d) | 27d → 23d | 285d → 0d |  | baseline start 2025-01-09 → 2025-01-01; baseline finish 2025-02-08 → 2025-01-31 |
| 201 | D: Issue list with resolution status | 2025-01-31 → 2025-01-06 (-25d) | 2025-03-04 → 2025-02-05 (-27d) | 27d → 23d | 285d → 0d |  | baseline start 2025-01-09 → 2025-01-01; baseline finish 2025-02-08 → 2025-01-31 |
| 202 | D: Configuration documents | 2025-01-31 → 2025-01-06 (-25d) | 2025-03-04 → 2025-02-05 (-27d) | 27d → 23d | 285d → 0d |  | baseline start 2025-01-09 → 2025-01-01; baseline finish 2025-02-08 → 2025-01-31 |
| 203 | D: FS & TS | 2025-01-31 → 2025-01-06 (-25d) | 2025-03-04 → 2025-02-05 (-27d) | 27d → 23d | 285d → 0d |  | baseline start 2025-01-09 → 2025-01-01; baseline finish 2025-02-08 → 2025-01-31 |
| 204 | D: Cre team training document | 2025-01-31 → 2025-01-06 (-25d) | 2025-03-04 → 2025-02-05 (-27d) | 27d → 23d | 285d → 0d |  | baseline start 2025-01-09 → 2025-01-01; baseline finish 2025-02-08 → 2025-01-31 |

## Version 8 (data date 2022-10-13, saved 2024-11-27, file TASK_00631275_1_27112024191525.mpp)

Note of the change: Add project files.

Last finish 2025-02-05 → 2026-03-12 (+400d). Complete tasks 58 → 55.

Added:

| ID | Task | Duration | Start | Finish | Predecessors | Constraint |
| --- | --- | --- | --- | --- | --- | --- |
| 49 | Integration with ASP/GSP | 1d | 2024-10-09 A | 2024-10-09 A | 40 |  |
| 50 | Integration with bank host to host (upto 3) | 1d | 2024-10-09 A | 2024-10-09 A | 40 | as late as possible |
| 51 | Integration with Primavera | 4d | 2024-10-11 A | 2024-10-25 A | 40 |  |
| 52 | Integration with third party payroll | 17d | 2024-10-11 A | 2024-11-12 A | 40 | finish no earlier than 2024-11-12 |
| 200 | One month extended support | 24d | 2025-02-15 | 2025-03-15 | 193 |  |
| 201 | **Phase 2: One Year AMC** | 261d | 2025-03-15 | 2026-03-12 |  |  |
| 202 | AMC Support | 261d | 2025-03-15 | 2026-03-12 | 200 | finish no earlier than 2026-03-09 |

Removed: 50 Integration with bank host to host (upto2); 51 Integration with HRMS (Payroll); 52 Integration with Cloud Steer CRM; 53 Integration with DMS; 135 Third Party Interface; 136 Development; 137 Testing by consultant; 138 Testing by CTM; 139 Sign off Development

Changed:

| ID | Task | Start | Finish | Duration | Complete | Total float | Predecessors | Other |
| --- | --- | --- | --- | --- | --- | --- | --- | --- |
| 1 | **SAP Implementation at PA** | 2024-09-05 A → 2024-09-02 A (-3d) | 2025-02-05 → 2026-03-12 (+400d) | 105d → 420.9d | 14% → 24% |  |  | was named SAP Implementation at NEO LIV; baseline start 2024-09-05 → 2024-09-02; baseline finish 2025-01-31 → 2026-03-09 |
| 2 | **Phase 1: S4 HANA Implementation (Public Cloud)** | 2024-09-05 A → 2024-09-02 A (-3d) | 2025-02-05 → 2025-03-15 (+38d) | 105d → 159.9d | 14% → 32% | 0d → 261d |  | was named Wave 1A: S4 HANA Implementation (Public Cloud); baseline start 2024-09-05 → 2024-09-02; baseline finish 2025-01-31 → 2025-03-08 |
| 3 | **Implementation** | 2024-09-05 A → 2024-09-02 A (-3d) | 2025-01-02 → 2025-01-15 (+13d) | 81d → 108.9d | 17% → 42% | 24d → 312d |  | baseline start 2024-09-05 → 2024-09-02; baseline finish 2024-12-31 → 2025-01-07 |
| 4 | **Prepare** | 2024-09-05 A → 2024-09-02 A (-3d) | 2024-09-23 A → 2024-09-10 A (-13d) | 12d → 7d |  |  |  | baseline start 2024-09-05 → 2024-09-02; baseline finish 2024-09-11 → 2024-09-10 |
| 5 | **Project Kick Off and On-Boarding** | 2024-09-05 A → 2024-09-02 A (-3d) | 2024-09-05 A → 2024-09-10 A (+5d) | 1d → 7d |  |  |  | baseline start 2024-09-05 → 2024-09-02; baseline finish 2024-09-05 → 2024-09-09 |
| 6 | On-board Project Team | 2024-09-05 A → 2024-09-02 A (-3d) | 2024-09-05 A → 2024-09-10 A (+5d) | 1d → 7d |  |  |  | constraint start no earlier than 2024-09-05 → finish no earlier than 2024-09-09; baseline start 2024-09-05 → 2024-09-02; baseline finish 2024-09-05 → 2024-09-09 |
| 7 | Conduct project kickoff |  |  |  |  |  | 6SS → 6SS+3d | was named Conduct Kickoff Workshop; constraint none → start no earlier than 2024-09-05 |
| 8 | **Project Plan** | 2024-09-05 A → 2024-09-02 A (-3d) | 2024-09-19 A → 2024-09-05 A (-14d) | 10d → 4d |  |  |  | baseline start 2024-09-05 → 2024-09-02; baseline finish 2024-09-11 → 2024-09-05 |
| 9 | Prepare & submit Initial project plan | 2024-09-05 A → 2024-09-02 A (-3d) | 2024-09-06 A → 2024-09-02 A (-4d) | 2d → 1d |  |  |  | baseline start 2024-09-05 → 2024-09-02; baseline finish 2024-09-06 → 2024-09-02 |
| 10 | Review project plan | 2024-09-09 A → 2024-09-03 A (-6d) | 2024-09-09 A → 2024-09-03 A (-6d) |  |  |  |  | baseline start 2024-09-09 → 2024-09-03; baseline finish 2024-09-09 → 2024-09-03 |
| 11 | Make necessary changes in the plan | 2024-09-10 A → 2024-09-04 A (-6d) | 2024-09-10 A → 2024-09-04 A (-6d) |  |  |  |  | baseline start 2024-09-10 → 2024-09-04; baseline finish 2024-09-10 → 2024-09-04 |
| 12 | Submit revised plan | 2024-09-10 A → 2024-09-04 A (-6d) | 2024-09-10 A → 2024-09-04 A (-6d) |  |  |  |  | baseline start 2024-09-10 → 2024-09-04; baseline finish 2024-09-10 → 2024-09-04 |
| 13 | Approval of project plan by PA | 2024-09-11 A → 2024-09-05 A (-6d) | 2024-09-19 A → 2024-09-05 A (-14d) | 6d → 1d |  |  |  | was named Approval of project plan by NL; baseline start 2024-09-11 → 2024-09-05; baseline finish 2024-09-11 → 2024-09-05 |
| 14 | **Project Governance** | 2024-09-09 A → 2024-09-06 A (-3d) |  | 1d → 2d |  |  |  |  |
| 15 | Establish Project Governance Mechanism | 2024-09-09 A → 2024-09-06 A (-3d) |  |  |  |  |  |  |
| 16 | Define Project Communications and Reporting | 2024-09-09 A → 2024-09-06 A (-3d) |  |  |  |  |  |  |
| 17 | **Project Standards, Infrastructure & Solution** |  | 2024-09-09 A → 2024-09-06 A (-3d) | 2d → 1d |  |  |  | baseline finish 2024-09-09 → 2024-09-06 |
| 18 | Set Up Project Team Logistics and Infrastructure |  | 2024-09-09 A → 2024-09-06 A (-3d) | 2d → 1d |  |  |  | baseline finish 2024-09-09 → 2024-09-06 |
| 19 | Create a Document Repository for the Implementation Project Team |  | 2024-09-09 A → 2024-09-06 A (-3d) | 2d → 1d |  |  |  | baseline finish 2024-09-09 → 2024-09-06 |
| 20 | **Fit-to-Standard Analysis Preparation** | 2024-09-10 A → 2024-09-09 A (-1d) | 2024-09-12 A → 2024-09-09 A (-3d) | 3d → 1d |  |  |  | baseline start 2024-09-10 → 2024-09-09; baseline finish 2024-09-10 → 2024-09-09 |
| 21 | Prepare for Fit-to-Standard Workshops | 2024-09-10 A → 2024-09-09 A (-1d) | 2024-09-12 A → 2024-09-09 A (-3d) | 3d → 1d |  |  |  | baseline start 2024-09-10 → 2024-09-09; baseline finish 2024-09-10 → 2024-09-09 |
| 22 | **Phase Closure and Sign-Off Phase Deliverables** | 2024-09-23 A → 2024-09-10 A (-13d) | 2024-09-23 A → 2024-09-10 A (-13d) |  |  |  |  | baseline start 2024-09-11 → 2024-09-10; baseline finish 2024-09-11 → 2024-09-10 |
| 23 | Prepare Phase Signoff | 2024-09-23 A → 2024-09-10 A (-13d) | 2024-09-23 A → 2024-09-10 A (-13d) | 1d → 0d |  |  |  | baseline start 2024-09-11 → 2024-09-10; baseline finish 2024-09-11 → 2024-09-10 |
| 24 | **Deliverables** | 2024-09-23 A → 2024-09-10 A (-13d) | 2024-09-23 A → 2024-09-10 A (-13d) |  |  |  |  | baseline start 2024-09-11 → 2024-09-10; baseline finish 2024-09-11 → 2024-09-10 |
| 25 | D: Baseline Project Plan | 2024-09-23 A → 2024-09-10 A (-13d) | 2024-09-23 A → 2024-09-10 A (-13d) |  |  |  |  | baseline start 2024-09-11 → 2024-09-10; baseline finish 2024-09-11 → 2024-09-10 |
| 26 | D: Project kickoff presentation | 2024-09-23 A → 2024-09-10 A (-13d) | 2024-09-23 A → 2024-09-10 A (-13d) |  |  |  |  | baseline start 2024-09-11 → 2024-09-10; baseline finish 2024-09-11 → 2024-09-10 |
| 27 | **Explore** | 2024-09-09 A → 2024-09-02 A (-7d) | 2024-10-25 → 2024-11-23 A (+29d) | 33d → 65d | 57% → 100% | 70d → none |  | baseline start 2024-09-09 → 2024-09-10; baseline finish 2024-10-16 → 2024-10-11 |
| 28 | **Requirement gathering** | 2024-09-09 A → 2024-09-02 A (-7d) | 2024-09-12 A → 2024-09-17 A (+5d) | 4d → 12d |  |  |  | baseline start 2024-09-09 → 2024-09-10; baseline finish 2024-09-12 → 2024-09-11 |
| 29 | Review AS IS document | 2024-09-09 A → 2024-09-02 A (-7d) | 2024-09-10 A → 2024-09-17 A (+7d) | 2d → 6d |  |  | 7SS+2d → 21 | baseline start 2024-09-09 → 2024-09-10; baseline finish 2024-09-10 → 2024-09-11 |
| 30 | Update AS IS document as per discussion | 2024-09-11 A → 2024-09-02 A (-9d) | 2024-09-12 A → 2024-09-17 A (+5d) | 2d → 12d |  |  | 29 → 29SS | baseline start 2024-09-11 → 2024-09-10; baseline finish 2024-09-12 → 2024-09-11 |
| 31 | **Fit-to-Standard analysis** | 2024-09-16 A → 2024-09-17 A (+1d) | 2024-09-19 A → 2024-09-27 A (+8d) | 3d → 9d |  |  |  | baseline start 2024-09-16 → 2024-09-12; baseline finish 2024-09-19 → 2024-09-16 |
| 32 | Conduct workshop for all modules | 2024-09-16 A → 2024-09-17 A (+1d) | 2024-09-19 A → 2024-09-27 A (+8d) | 3d → 8d |  |  | 30FS+1d → 30 | baseline start 2024-09-16 → 2024-09-12; baseline finish 2024-09-19 → 2024-09-16 |
| 33 | **Fit to Standard analysis documentation** | 2024-09-20 A → 2024-09-16 A (-4d) | 2024-10-22 → 2024-11-23 A (+32d) | 22d → 55d | 85% → 100% | 73d → none |  | baseline start 2024-09-20 → 2024-09-17; baseline finish 2024-10-15 → 2024-10-11 |
| 34 | Document Initial Configuration Settings for SAP Central Business Configuration | 2024-09-20 A → 2024-09-16 A (-4d) | 2024-09-23 A → 2024-09-16 A (-7d) | 2d → 1d |  |  |  | baseline start 2024-09-20 → 2024-09-17; baseline finish 2024-09-23 → 2024-09-18 |
| 35 | Document Scope via SAP Central Business Configuration | 2024-09-24 A → 2024-09-17 A (-7d) | 2024-09-25 A → 2024-09-19 A (-6d) | 2d → 3d |  |  |  | baseline start 2024-09-24 → 2024-09-19; baseline finish 2024-09-25 → 2024-09-20 |
| 36 | **Document and Maintain Business Process Flows** | 2024-09-24 A → 2024-09-20 A (-4d) | 2024-10-21 → 2024-11-07 A (+17d) | 19d → 37d | 94% → 100% | 74d → none |  | baseline start 2024-09-20 → 2024-09-17; baseline finish 2024-10-09 → 2024-10-04 |
| 37 | Prepare fit-to-standard Document and KDS | 2024-09-24 A → 2024-09-20 A (-4d) | 2024-09-28 A → 2024-10-01 A (+3d) | 4d → 2.5d |  |  |  | was named Prepare BBP Document and KDS; baseline start 2024-09-20 → 2024-09-17; baseline finish 2024-09-26 → 2024-09-23 |
| 38 | Submition of Fit-to-standard and KDS | 2024-09-30 A → 2024-09-23 A (-7d) | 2024-09-30 A → 2024-10-01 A (+1d) | 1d → 0d |  |  |  | was named Submition of BBP and KDS; baseline start 2024-09-27 → 2024-09-24; baseline finish 2024-09-27 → 2024-09-24 |
| 39 | Review of fit-to-standard & KDS by CTM | 2024-10-04 A → 2024-09-25 A (-9d) | 2024-10-14 A → 2024-10-02 A (-12d) | 7d → 0d |  |  |  | was named Review of BBP & KDS by CTM; baseline start 2024-09-30 → 2024-09-25; baseline finish 2024-10-07 → 2024-10-01 |
| 40 | Solution Walkthrough | 2024-10-15 A → 2024-10-03 A (-12d) | 2024-10-18 A → 2024-10-21 A (+3d) | 4d → 16d |  |  |  | was named BBP Walkthrough; constraint none → finish no earlier than 2024-10-21; baseline start 2024-10-08 → 2024-10-03; baseline finish 2024-10-08 → 2024-10-03 |
| 41 | Fit-to-Standard document Signoff | 2024-10-21 → 2024-10-22 A (+1d) | 2024-10-21 → 2024-11-07 A (+17d) | 1d → 13d | 0% → 100% | 78d → none |  | was named BBP Signff; constraint none → finish no earlier than 2024-11-04; baseline start 2024-10-09 → 2024-10-04; baseline finish 2024-10-09 → 2024-10-04 |
| 42 | Document Configuration Values | 2024-10-21 → 2024-10-14 A (-7d) | 2024-10-22 → 2024-11-23 A (+32d) | 2d → 27d | 0% → 100% | 78d → none |  | constraint none → finish no earlier than 2024-11-08; baseline start 2024-10-09 → 2024-10-04; baseline finish 2024-10-10 → 2024-10-05 |
| 43 | **Data migration requirements** | 2024-10-16 A → 2024-10-07 A (-9d) | 2024-10-18 A → 2024-10-22 A (+4d) | 3d → 14d |  |  |  | was named Document Master Data Requirements; baseline start 2024-10-11 → 2024-10-07; baseline finish 2024-10-14 → 2024-10-09 |
| 44 | Identify master data requirement | 2024-10-16 A → 2024-10-07 A (-9d) | 2024-10-17 A → 2024-10-07 A (-10d) |  |  |  |  | was named Identify masterdata requirement; baseline start 2024-10-11 → 2024-10-07; baseline finish 2024-10-11 → 2024-10-07 |
| 45 | Prepare and explain master data template | 2024-10-17 A → 2024-10-10 A (-7d) | 2024-10-17 A → 2024-10-22 A (+5d) | 1d → 11d |  |  | 44SS → 44 | was named Prepare and explain masterdata template; constraint none → as late as possible; baseline start 2024-10-11 → 2024-10-08; baseline finish 2024-10-11 → 2024-10-09 |
| 46 | Circulate master data template | 2024-10-18 A → 2024-10-10 A (-8d) | 2024-10-18 A → 2024-10-22 A (+4d) | 1d → 8d |  |  | 45 → 45FF | was named Circulate masterdata template; baseline start 2024-10-14 → 2024-10-09; baseline finish 2024-10-14 → 2024-10-09 |
| 47 | Confirm Backlog and prioritise (SIT/UAT, Golive, Post-Golive) | 2024-10-21 → 2024-10-11 A (-10d) | 2024-10-21 → 2024-11-12 A (+22d) | 1d → 10d | 0% → 100% | 74d → none |  | constraint none → as late as possible; baseline start 2024-10-15 → 2024-10-10; baseline finish 2024-10-15 → 2024-10-11 |
| 48 | **Integration Planning and Design** | 2024-10-21 → 2024-10-09 A (-12d) | 2024-10-25 → 2024-11-12 A (+18d) | 5d → 28d | 0% → 100% | 70d → none |  | baseline start 2024-10-09 → 2024-10-04; baseline finish 2024-10-15 → 2024-10-09 |
| 53 | **Getting Started with your SAP Implementation** | 2024-09-26 → 2024-10-07 A (+11d) | 2024-10-04 → 2024-10-07 A (+3d) | 6d → 1d | 0% → 100% | 85d → none |  | baseline start 2024-09-26 → 2024-09-23; baseline finish 2024-10-04 → 2024-10-01 |
| 54 | Review Overview Documentation | 2024-09-26 → 2024-10-07 A (+11d) | 2024-09-27 → 2024-10-07 A (+10d) | 2d → 1d | 0% → 100% | 90d → none |  | baseline start 2024-09-26 → 2024-09-23; baseline finish 2024-09-27 → 2024-09-24 |
| 55 | Organize Provisioning Emails | 2024-09-30 → 2024-10-07 A (+7d) | 2024-10-01 → 2024-10-07 A (+6d) | 2d → 1d | 0% → 100% | 90d → none |  | baseline start 2024-09-30 → 2024-09-25; baseline finish 2024-10-01 → 2024-09-27 |
| 56 | Ensure Project Team Members Access to the SAP Support Portal, SAP Best Practices Explorer, and SAP Customer Communities | 2024-10-03 → 2024-10-07 A (+4d) | 2024-10-04 → 2024-10-07 A (+3d) | 2d → 1d | 0% → 100% | 90d → none |  | baseline start 2024-10-03 → 2024-09-30; baseline finish 2024-10-04 → 2024-10-01 |
| 57 | **SAP Cloud ALM Onboarding** | 2024-10-07 A → 2024-09-03 A (-34d) | 2024-10-09 A → 2024-09-13 A (-26d) | 3d → 9d |  |  |  | baseline start 2024-10-07 → 2024-10-03; baseline finish 2024-10-08 → 2024-10-04 |
| 58 | Request SAP Cloud ALM Tenant | 2024-10-07 A → 2024-09-03 A (-34d) | 2024-10-08 A → 2024-09-13 A (-25d) | 2d → 9d |  |  |  | baseline start 2024-10-07 → 2024-10-03; baseline finish 2024-10-07 → 2024-10-03 |
| 59 | Access SAP Cloud ALM and Create Users | 2024-10-08 A → 2024-09-13 A (-25d) | 2024-10-09 A → 2024-09-13 A (-26d) |  |  |  |  | baseline start 2024-10-08 → 2024-10-04; baseline finish 2024-10-08 → 2024-10-04 |
| 60 | **Initial System Access for Central Business Configuration** | 2024-10-15 A → 2024-09-03 A (-42d) | 2024-10-17 A → 2024-09-19 A (-28d) | 3d → 13d |  |  |  | baseline start 2024-10-09 → 2024-10-05; baseline finish 2024-10-11 → 2024-10-08 |
| 61 | Access the SAP Central Business Configuration | 2024-10-15 A → 2024-09-03 A (-42d) | 2024-10-15 A → 2024-09-10 A (-35d) | 1d → 6d |  |  |  | baseline start 2024-10-09 → 2024-10-05; baseline finish 2024-10-09 → 2024-10-05 |
| 62 | Set Up Starter Project in SAP Central Business Configuration | 2024-10-16 A → 2024-09-11 A (-35d) | 2024-10-16 A → 2024-09-11 A (-35d) |  |  |  |  | baseline start 2024-10-10 → 2024-10-07; baseline finish 2024-10-10 → 2024-10-07 |
| 63 | Set Up SAP Central Business Configuration Integration | 2024-10-17 A → 2024-09-13 A (-34d) | 2024-10-17 A → 2024-09-19 A (-28d) | 1d → 5d |  |  |  | baseline start 2024-10-11 → 2024-10-08; baseline finish 2024-10-11 → 2024-10-08 |
| 64 | **Initial System Access for SAP S/4HANA Cloud** | 2024-10-17 A → 2024-09-03 A (-44d) | 2024-10-18 A → 2024-09-20 A (-28d) | 2d → 14d |  |  |  | baseline start 2024-10-14 → 2024-09-12; baseline finish 2024-10-16 → 2024-09-16 |
| 65 | Access Starter System and Reset Password | 2024-10-17 A → 2024-09-03 A (-44d) | 2024-10-18 A → 2024-09-10 A (-38d) | 1d → 6d |  |  | 63 → 29 | baseline start 2024-10-14 → 2024-09-12; baseline finish 2024-10-14 → 2024-09-12 |
| 66 | Create Users in the Starter System | 2024-10-17 A → 2024-09-10 A (-37d) | 2024-10-18 A → 2024-09-11 A (-37d) | 0d → 1d |  |  |  | baseline start 2024-10-15 → 2024-09-13; baseline finish 2024-10-15 → 2024-09-13 |
| 67 | Self-Activation of Project Team Members in the Identity Authentication Service | 2024-10-18 A → 2024-09-20 A (-28d) | 2024-10-18 A → 2024-09-20 A (-28d) | 0d → 1d |  |  |  | baseline start 2024-10-16 → 2024-09-16; baseline finish 2024-10-16 → 2024-09-16 |
| 68 | **Phase Closure and Sign-Off Phase Deliverables** | 2024-10-25 A → 2024-11-12 A (+18d) | 2024-10-25 A → 2024-11-13 A (+19d) | 0d → 2d |  |  |  | baseline start 2024-10-16 → 2024-10-11; baseline finish 2024-10-16 → 2024-10-11 |
| 69 | Explore Phase Signoff | 2024-10-25 A → 2024-11-12 A (+18d) | 2024-10-25 A → 2024-11-13 A (+19d) | 0d → 2d |  |  | Integration with DMS → 47FF | baseline start 2024-10-16 → 2024-10-11; baseline finish 2024-10-16 → 2024-10-11 |
| 70 | **Deliverables** | 2024-10-25 A → 2024-09-27 A (-28d) | 2024-10-25 A → 2024-10-21 A (-4d) | 1d → 19d |  |  |  | baseline start 2024-10-10 → 2024-10-05; baseline finish 2024-10-15 → 2024-10-10 |
| 71 | Fit to Standard documents with Process flow diagram, Gap Analysis | 2024-10-25 A → 2024-10-21 A (-4d) | 2024-10-25 A → 2024-10-21 A (-4d) |  |  |  |  | baseline start 2024-10-10 → 2024-10-05; baseline finish 2024-10-10 → 2024-10-05 |
| 72 | Core team training/ presentation | 2024-10-25 A → 2024-09-27 A (-28d) | 2024-10-25 A → 2024-09-27 A (-28d) |  |  |  |  | baseline start 2024-10-10 → 2024-10-05; baseline finish 2024-10-10 → 2024-10-05 |
| 73 | Initial Master data templates | 2024-10-25 A → 2024-10-18 A (-7d) | 2024-10-25 A → 2024-10-18 A (-7d) | 1d → 0d |  |  |  | baseline start 2024-10-15 → 2024-10-10; baseline finish 2024-10-15 → 2024-10-10 |
| 74 | **Realize** | 2024-10-21 A → 2024-10-29 A (+8d) | 2024-12-18 → 2024-12-31 (+13d) | 41d → 52d | 8% → 13% | 34d → 324.9d |  | baseline start 2024-10-15 → 2024-10-12; baseline finish 2024-12-18 → 2024-12-05 |

| ID | Task | Start | Finish | Duration | Complete | Total float | Predecessors | Other |
| --- | --- | --- | --- | --- | --- | --- | --- | --- |
| 75 | **Requirement gathering sheet (RGS)** | 2024-10-27 A → 2024-10-29 A (+2d) | 2024-10-30 A → 2024-11-28 (+29d) | 3d → 24.75d | 100% → 12% | none → 0d |  | baseline start 2024-10-16 → 2024-10-12; baseline finish 2024-10-21 → 2024-10-16 |
| 76 | Prepare RGS | 2024-10-27 A → 2024-10-29 A (+2d) | 2024-10-30 A → 2024-11-27 (+28d) | 3d → 12.9d | 100% → 10% | none → 0d | Integration with DMS → 47 | constraint none → finish no earlier than 2024-11-27; baseline start 2024-10-16 → 2024-10-12; baseline finish 2024-10-18 → 2024-10-15 |
| 77 | Submit RGS |  | 2024-10-30 A → 2024-11-28 (+29d) | 0d → 1d | 100% → 25% | none → 0d |  | constraint none → finish no earlier than 2024-11-18; baseline start 2024-10-21 → 2024-10-16; baseline finish 2024-10-21 → 2024-10-16 |
| 78 | **Functional Specifications** | 2024-10-26 A → 2024-11-19 A (+24d) | 2024-11-11 → 2024-12-03 (+22d) | 9d → 12.75d | 0% → 33% | 61d → 348.15d |  | baseline start 2024-10-22 → 2024-10-16; baseline finish 2024-10-29 → 2024-10-22 |
| 79 | Prepare functional specfications | 2024-10-31 A → 2024-11-25 A (+25d) | 2024-11-07 → 2024-12-03 (+26d) |  |  | 0d → 348.15d |  | constraint none → start no earlier than 2024-11-25; baseline start 2024-10-22 → 2024-10-16; baseline finish 2024-10-25 → 2024-10-19 |
| 80 | Finalize development tracker | 2024-10-26 A → 2024-11-19 A (+24d) | 2024-11-11 → 2024-11-20 A (+9d) |  | 0% → 100% | 61d → none | 79 → none | constraint none → start no earlier than 2024-11-19; baseline start 2024-10-28 → 2024-10-21; baseline finish 2024-10-29 → 2024-10-22 |
| 81 | **Solution Configuration** | 2024-10-25 A → 2024-10-29 A (+4d) | 2024-11-08 A → 2024-11-28 (+20d) | 9d → 25d | 100% → 58% | none → 351.9d |  | baseline start 2024-10-28 → 2024-10-21; baseline finish 2024-11-12 → 2024-11-02 |
| 82 | Configure Processes and Functions in golden master (100) | 2024-10-25 A → 2024-10-29 A (+4d) | 2024-10-31 A → 2024-11-19 A (+19d) | 0d → 17d |  |  | 79 → none | constraint none → start no earlier than 2024-11-19; baseline start 2024-10-28 → 2024-10-21; baseline finish 2024-11-05 → 2024-10-25 |
| 83 | Transfer of Configuration to Dev testing | 2024-10-31 A → 2024-11-19 A (+19d) | 2024-10-31 A → 2024-11-20 A (+20d) | 0d → 2d |  |  |  | constraint none → start no earlier than 2024-11-21; baseline start 2024-11-06 → 2024-10-26; baseline finish 2024-11-06 → 2024-10-26 |
| 84 | Unit testing-1 (Consultant) | 2024-10-31 A → 2024-11-20 A (+20d) | 2024-11-04 A → 2024-11-27 (+23d) | 1d → 6d | 100% → 0% | none → 352.9d |  | constraint none → finish no earlier than 2024-11-27; baseline start 2024-11-07 → 2024-10-28; baseline finish 2024-11-11 → 2024-10-30 |
| 85 | Document and Resolve Issues | 2024-11-04 A → 2024-11-20 A (+16d) | 2024-11-07 A → 2024-11-27 (+20d) | 4d → 7d | 100% → 0% | none → 324.9d |  | constraint none → finish no earlier than 2024-11-27; baseline start 2024-11-07 → 2024-10-28; baseline finish 2024-11-11 → 2024-10-30 |
| 86 | Submit Unit Testing result & completion of baseline config | 2024-11-08 A → 2024-11-28 (+20d) | 2024-11-08 A → 2024-11-28 (+20d) |  | 100% → 0% | none → 324.9d |  | baseline start 2024-11-12 → 2024-11-02; baseline finish 2024-11-12 → 2024-11-02 |
| 87 | **Core team training & UT** | 2024-11-13 A → 2024-11-28 (+15d) | 2024-11-28 → 2024-12-11 (+13d) |  | 25% → 0% | 42d → 324.9d |  | baseline start 2024-11-13 → 2024-11-02; baseline finish 2024-11-28 → 2024-11-15 |
| 88 | Plan for CTM training | 2024-11-13 A → 2024-11-28 (+15d) | 2024-11-13 A → 2024-11-28 (+15d) |  | 100% → 0% | none → 324.9d | 86 → 86FF | constraint none → start no earlier than 2024-11-26; baseline start 2024-11-13 → 2024-11-02; baseline finish 2024-11-13 → 2024-11-02 |
| 89 | Making necessery training arrangement - PPT + tutorial | 2024-11-14 A → 2024-11-29 (+15d) | 2024-11-16 A → 2024-11-30 (+14d) |  | 100% → 0% | none → 324.9d |  | baseline start 2024-11-14 → 2024-11-04; baseline finish 2024-11-15 → 2024-11-05 |
| 90 | Conducting CTM Training (Module wise) | 2024-11-18 → 2024-12-02 (+14d) | 2024-11-20 → 2024-12-04 (+14d) |  |  | 3d → 324.9d |  | baseline start 2024-11-18 → 2024-11-06; baseline finish 2024-11-20 → 2024-11-08 |
| 91 | Unit Testing by Core team | 2024-11-21 → 2024-12-05 (+14d) | 2024-11-28 → 2024-12-11 (+13d) |  |  | 42d → 330.9d |  | baseline start 2024-11-21 → 2024-11-09; baseline finish 2024-11-28 → 2024-11-15 |
| 92 | **Quality System Request / Initial Setup** | 2024-11-11 A → 2024-11-18 A (+7d) | 2024-11-13 A → 2024-11-18 A (+5d) | 3d → 1d |  |  |  | baseline start 2024-10-17 → 2024-10-12; baseline finish 2024-10-17 → 2024-10-12 |
| 93 | Execute Initial Setup of the Quality System via SAP Central Business Configuration | 2024-11-11 A → 2024-11-18 A (+7d) | 2024-11-13 A → 2024-11-18 A (+5d) | 3d → 1d |  |  |  | baseline start 2024-10-17 → 2024-10-12; baseline finish 2024-10-17 → 2024-10-12 |
| 94 | Request Quality System via Manage Your Solution App | 2024-11-13 A → 2024-11-18 A (+5d) | 2024-11-13 A → 2024-11-18 A (+5d) |  |  |  |  | baseline start 2024-10-17 → 2024-10-12; baseline finish 2024-10-17 → 2024-10-12 |
| 95 | **Quality System Initial Access** | 2024-10-25 A → 2024-11-14 A (+20d) | 2024-11-14 → 2024-11-27 (+13d) | 13d → 12d | 22% → 33% | 58d → 352.9d |  | baseline start 2024-10-17 → 2024-10-12; baseline finish 2024-10-25 → 2024-10-19 |
| 96 | Receive Quality System and Reset Password | 2024-11-13 A → 2024-11-18 A (+5d) | 2024-11-13 A → 2024-11-21 A (+8d) | 0d → 4d |  |  |  | baseline start 2024-10-18 → 2024-10-14; baseline finish 2024-10-18 → 2024-10-14 |
| 97 | Create Preset Configuration User in the Quality System via Manage Your Solution App | 2024-11-13 A → 2024-11-26 (+13d) | 2024-11-13 A → 2024-11-26 (+13d) |  | 100% → 0% | none → 352.9d |  | constraint none → start no earlier than 2024-11-26; baseline start 2024-10-21 → 2024-10-15; baseline finish 2024-10-21 → 2024-10-15 |
| 98 | Define Preset Parameters and Trigger System Activation via Manage Your Solution App | 2024-11-14 A → 2024-11-27 (+13d) | 2024-11-14 A → 2024-11-27 (+13d) |  | 100% → 0% | none → 352.9d |  | baseline start 2024-10-22 → 2024-10-16; baseline finish 2024-10-22 → 2024-10-16 |
| 99 | **Create Users in the Quality Server** | 2024-10-25 → 2024-11-14 (+20d) | 2024-11-05 → 2024-11-19 (+14d) | 6d → 5d |  | 64d → 358.9d |  | baseline start 2024-10-17 → 2024-10-12; baseline finish 2024-10-24 → 2024-10-18 |
| 100 | **Finalize list of users for QAS** | 2024-10-25 → 2024-11-14 (+20d) | 2024-11-05 → 2024-11-19 (+14d) | 6d → 5d |  | 64d → 358.9d |  | baseline start 2024-10-17 → 2024-10-12; baseline finish 2024-10-24 → 2024-10-18 |
| 101 | **Provide user authorization** | 2024-10-25 → 2024-11-14 (+20d) | 2024-11-05 → 2024-11-19 (+14d) | 6d → 5d |  | 64d → 358.9d |  | baseline start 2024-10-17 → 2024-10-12; baseline finish 2024-10-24 → 2024-10-18 |
| 102 | Finalize user authorization | 2024-10-25 → 2024-11-14 (+20d) | 2024-10-28 → 2024-11-14 (+17d) | 2d → 1d |  | 64d → 358.9d |  | baseline start 2024-10-17 → 2024-10-12; baseline finish 2024-10-18 → 2024-10-14 |
| 103 | Create roles and authorization | 2024-10-29 → 2024-11-15 (+17d) | 2024-10-29 → 2024-11-15 (+17d) |  |  | 64d → 358.9d |  | baseline start 2024-10-21 → 2024-10-15; baseline finish 2024-10-21 → 2024-10-15 |
| 104 | Testing of roles and authorization | 2024-10-30 → 2024-11-16 (+17d) | 2024-11-04 → 2024-11-18 (+14d) |  |  | 64d → 358.9d |  | baseline start 2024-10-22 → 2024-10-16; baseline finish 2024-10-23 → 2024-10-17 |
| 105 | Deployment of roles to users | 2024-11-05 → 2024-11-19 (+14d) | 2024-11-05 → 2024-11-19 (+14d) |  |  | 64d → 358.9d |  | baseline start 2024-10-24 → 2024-10-18; baseline finish 2024-10-24 → 2024-10-18 |
| 106 | Self-Activation of Project Team Members in the Identity Authentication Service | 2024-11-06 → 2024-11-20 (+14d) | 2024-11-06 → 2024-11-20 (+14d) |  |  | 64d → 358.9d |  | baseline start 2024-10-25 → 2024-10-19; baseline finish 2024-10-25 → 2024-10-19 |
| 107 | **Required Configuration Before System Use - SAP S/4HANA Cloud** | 2024-11-14 A → 2024-11-28 (+14d) | 2024-11-14 A → 2024-11-28 (+14d) |  | 100% → 0% | none → 348.9d |  | baseline start 2024-10-21 → 2024-10-15; baseline finish 2024-10-21 → 2024-10-15 |
| 108 | Configure system | 2024-11-14 A → 2024-11-28 (+14d) | 2024-11-14 A → 2024-11-28 (+14d) |  | 100% → 0% | none → 348.9d |  | constraint none → start no earlier than 2024-11-28; baseline start 2024-10-21 → 2024-10-15; baseline finish 2024-10-21 → 2024-10-15 |
| 109 | **Standard Integration Setup in the Quality/Test System** | 2024-11-14 A → 2024-11-29 (+15d) | 2024-11-15 A → 2024-12-02 (+17d) | 2d → 3d | 100% → 0% | none → 348.9d |  | baseline start 2024-10-22 → 2024-10-16; baseline finish 2024-10-24 → 2024-10-18 |
| 110 | Set Up Integration using Cloud Integration Automation Service (CIAS) | 2024-11-14 A → 2024-11-29 (+15d) | 2024-11-14 A → 2024-11-29 (+15d) |  | 100% → 0% | none → 348.9d |  | baseline start 2024-10-22 → 2024-10-16; baseline finish 2024-10-22 → 2024-10-16 |
| 111 | Set Up Employee Central Integration (JB1) | 2024-11-15 A → 2024-11-30 (+15d) | 2024-11-15 A → 2024-11-30 (+15d) |  | 100% → 0% | none → 348.9d |  | baseline start 2024-10-23 → 2024-10-17; baseline finish 2024-10-23 → 2024-10-17 |
| 112 | Set Up Integrations in the Quality/Test System | 2024-11-15 A → 2024-12-02 (+17d) | 2024-11-15 A → 2024-12-02 (+17d) | 0d → 1d | 100% → 0% | none → 348.9d |  | baseline start 2024-10-24 → 2024-10-18; baseline finish 2024-10-24 → 2024-10-18 |
| 113 | **System Integration Test** | 2024-10-21 A → 2024-11-15 (+25d) | 2024-12-18 → 2024-12-30 (+12d) | 41d → 38d |  | 34d → 4d |  | baseline start 2024-10-15 → 2024-10-12; baseline finish 2024-12-18 → 2024-12-04 |
| 114 | **Integration test Plan** | 2024-10-21 → 2024-11-15 (+25d) | 2024-11-25 → 2024-12-05 (+10d) | 24d → 18d |  | 11d → 338.9d |  | baseline start 2024-10-15 → 2024-10-12; baseline finish 2024-11-22 → 2024-11-11 |
| 115 | Identify scenerios for Integration test | 2024-11-21 → 2024-12-05 (+14d) | 2024-11-22 → 2024-12-05 (+13d) | 2d → 1d |  | 3d → 324.9d |  | baseline start 2024-11-21 → 2024-11-09; baseline finish 2024-11-22 → 2024-11-11 |
| 116 | Write scripts for Integration test | 2024-11-21 → 2024-12-05 (+14d) | 2024-11-21 → 2024-12-05 (+14d) |  |  | 3d → 324.9d |  | baseline start 2024-11-21 → 2024-11-09; baseline finish 2024-11-21 → 2024-11-11 |
| 117 | **Master data** | 2024-10-21 → 2024-11-21 (+31d) | 2024-11-22 → 2024-12-03 (+11d) | 23d → 11d |  | 52d → 347.9d |  | baseline start 2024-10-15 → 2024-10-22; baseline finish 2024-11-18 → 2024-11-07 |
| 118 | Receipt Master Data from PA | 2024-10-21 → 2024-11-21 (+31d) | 2024-11-19 → 2024-11-29 (+10d) | 20d → 8d |  | 52d → 347.9d | 46 → 46FS+10d | was named Receipt Master Data from NL; constraint none → finish no earlier than 2024-11-29; baseline start 2024-10-15 → 2024-10-22; baseline finish 2024-11-13 → 2024-11-04 |
| 119 | Upload Master data in QAS | 2024-11-20 → 2024-11-30 (+10d) | 2024-11-22 → 2024-12-03 (+11d) |  |  | 52d → 347.9d |  | baseline start 2024-11-14 → 2024-11-05; baseline finish 2024-11-18 → 2024-11-07 |
| 120 | **Identity and Access Management Planning and Design** | 2024-10-25 → 2024-11-15 (+21d) | 2024-11-25 → 2024-11-26 (+1d) | 20d → 10d |  | 7d → 338.9d |  | baseline start 2024-10-17 → 2024-10-12; baseline finish 2024-11-15 → 2024-11-06 |
| 121 | Finalize list of users | 2024-10-25 → 2024-11-15 (+21d) | 2024-11-18 → 2024-11-20 (+2d) | 15d → 5d |  | 7d → 338.9d |  | constraint none → finish no earlier than 2024-11-20; baseline start 2024-10-17 → 2024-10-12; baseline finish 2024-11-08 → 2024-10-29 |
| 122 | Provide & Check roles and authorization | 2024-11-19 → 2024-11-21 (+2d) | 2024-11-25 → 2024-11-26 (+1d) |  |  | 7d → 338.9d |  | baseline start 2024-11-11 → 2024-10-30; baseline finish 2024-11-15 → 2024-11-06 |
| 123 | **Conduct System integration test** | 2024-11-22 → 2024-12-09 (+17d) | 2024-12-11 → 2024-12-30 (+19d) | 14d → 18d |  | 3d → 322.9d |  | baseline start 2024-11-22 → 2024-11-12; baseline finish 2024-12-11 → 2024-12-04 |
| 124 | Perform Integration testing by Consultant | 2024-11-22 → 2024-12-09 (+17d) | 2024-11-29 → 2024-12-14 (+15d) |  |  | 3d → 322.9d |  | constraint none → start no earlier than 2024-12-09; baseline start 2024-11-22 → 2024-11-12; baseline finish 2024-11-29 → 2024-11-19 |
| 125 | Perform User Acceptance test - CTM | 2024-12-02 → 2024-12-16 (+14d) | 2024-12-09 → 2024-12-27 (+18d) | 6d → 10d |  | 3d → 322.9d |  | baseline start 2024-12-02 → 2024-11-20; baseline finish 2024-12-09 → 2024-11-30 |
| 126 | Resolving the issues, if any | 2024-12-02 → 2024-12-16 (+14d) | 2024-12-09 → 2024-12-27 (+18d) | 6d → 10d |  | 3d → 322.9d |  | baseline start 2024-12-02 → 2024-11-20; baseline finish 2024-12-09 → 2024-11-30 |
| 127 | Retesting of scenarios | 2024-12-10 → 2024-12-28 (+18d) | 2024-12-11 → 2024-12-30 (+19d) |  |  | 36d → 322.9d |  | baseline start 2024-12-10 → 2024-12-02; baseline finish 2024-12-11 → 2024-12-04 |
| 128 | UAT (by CTM) signoff | 2024-12-11 → 2024-12-30 (+19d) | 2024-12-11 → 2024-12-30 (+19d) |  |  | 36d → 322.9d |  | baseline start 2024-12-11 → 2024-12-04; baseline finish 2024-12-11 → 2024-12-04 |
| 129 | **ABAP Development - SIT Critical** | 2024-11-06 A → 2024-11-20 (+14d) | 2024-12-18 → 2024-12-21 (+3d) | 31d → 28d |  | 34d → 0d |  | baseline start 2024-11-06 → 2024-10-26; baseline finish 2024-12-18 → 2024-12-03 |
| 130 | Develop reports | 2024-11-06 A → 2024-11-20 (+14d) | 2024-12-10 → 2024-12-14 (+4d) | 25d → 22d |  | 26d → 0d |  | baseline start 2024-11-06 → 2024-10-26; baseline finish 2024-12-10 → 2024-11-26 |
| 131 | Testing by consultant | 2024-11-11 → 2024-11-23 (+12d) | 2024-12-13 → 2024-12-18 (+5d) | 25d → 22d |  | 34d → 331.9d |  | baseline start 2024-11-11 → 2024-10-30; baseline finish 2024-12-13 → 2024-11-29 |
| 132 | Testing by CTM | 2024-11-14 → 2024-11-27 (+13d) | 2024-12-18 → 2024-12-21 (+3d) | 25d → 22d |  | 34d → 331.9d |  | baseline start 2024-11-14 → 2024-11-05; baseline finish 2024-12-18 → 2024-12-03 |
| 133 | Sign off Development | 2024-12-18 → 2024-12-21 (+3d) | 2024-12-18 → 2024-12-21 (+3d) |  |  | 34d → 331.9d |  | baseline start 2024-12-18 → 2024-12-03; baseline finish 2024-12-18 → 2024-12-03 |
| 134 | **Cutover Strategy** | 2024-12-10 → 2024-12-20 (+10d) | 2024-12-12 → 2024-12-20 (+8d) | 3d → 1d |  | 3d → 4d |  | baseline start 2024-12-10 → 2024-12-05; baseline finish 2024-12-12 → 2024-12-05 |
| 135 | Discussion on cutover strategy | 2024-12-10 → 2024-12-20 (+10d) | 2024-12-11 → 2024-12-20 (+9d) | 2d → 1d |  | 3d → 4d | 126 → none | constraint none → start no earlier than 2024-12-20; baseline start 2024-12-10 → 2024-12-05; baseline finish 2024-12-11 → 2024-12-05 |
| 136 | Cutover & data responsibility Plan | 2024-12-12 → 2024-12-20 (+8d) | 2024-12-12 → 2024-12-20 (+8d) |  |  | 3d → 4d | 135 → 135FF | baseline start 2024-12-12 → 2024-12-05; baseline finish 2024-12-12 → 2024-12-05 |
| 137 | Communication to Organisation for Cutover | 2024-12-12 → 2024-12-20 (+8d) | 2024-12-12 → 2024-12-20 (+8d) |  |  | 3d → 4d |  | baseline start 2024-12-12 → 2024-12-05; baseline finish 2024-12-12 → 2024-12-05 |
| 138 | **End user training plan** | 2024-11-29 → 2024-12-12 (+13d) | 2024-12-02 → 2024-12-13 (+11d) |  |  | 42d → 330.9d |  | baseline start 2024-11-29 → 2024-11-16; baseline finish 2024-12-02 → 2024-11-18 |
| 139 | Preparation of End User training plan | 2024-11-29 → 2024-12-12 (+13d) | 2024-12-02 → 2024-12-13 (+11d) |  |  | 42d → 330.9d |  | baseline start 2024-11-29 → 2024-11-16; baseline finish 2024-12-02 → 2024-11-18 |
| 140 | Communicate plan to PA | 2024-12-02 → 2024-12-13 (+11d) | 2024-12-02 → 2024-12-13 (+11d) |  |  | 42d → 330.9d |  | was named Communicate plan to NL; baseline start 2024-12-02 → 2024-11-18; baseline finish 2024-12-02 → 2024-11-18 |
| 141 | **Production System Request** | 2024-10-25 → 2024-12-05 (+41d) | 2024-10-28 → 2024-12-06 (+39d) |  |  | 67d → 342.9d |  | baseline start 2024-10-17 → 2024-10-12; baseline finish 2024-10-18 → 2024-10-14 |
| 142 | Request for Production System | 2024-10-25 → 2024-12-05 (+41d) | 2024-10-25 → 2024-12-05 (+41d) |  |  | 67d → 342.9d |  | constraint none → start no earlier than 2024-12-05; baseline start 2024-10-17 → 2024-10-12; baseline finish 2024-10-17 → 2024-10-12 |
| 143 | Request Access to the SAP S/4HANA Cloud Release Assessment Tool. | 2024-10-28 → 2024-12-06 (+39d) | 2024-10-28 → 2024-12-06 (+39d) |  |  | 67d → 342.9d |  | baseline start 2024-10-18 → 2024-10-14; baseline finish 2024-10-18 → 2024-10-14 |
| 144 | **Production System Initial Access** | 2024-10-29 → 2024-12-07 (+39d) | 2024-10-30 → 2024-12-09 (+40d) |  |  | 67d → 342.9d |  | baseline start 2024-10-21 → 2024-10-15; baseline finish 2024-10-22 → 2024-10-16 |

| ID | Task | Start | Finish | Duration | Complete | Total float | Predecessors | Other |
| --- | --- | --- | --- | --- | --- | --- | --- | --- |
| 145 | Receive Production System and Reset Password | 2024-10-29 → 2024-12-07 (+39d) | 2024-10-29 → 2024-12-07 (+39d) |  |  | 67d → 342.9d |  | baseline start 2024-10-21 → 2024-10-15; baseline finish 2024-10-21 → 2024-10-15 |
| 146 | Transport Initial Change Project from Q-System to P-System | 2024-10-30 → 2024-12-09 (+40d) | 2024-10-30 → 2024-12-09 (+40d) |  |  | 67d → 342.9d |  | baseline start 2024-10-22 → 2024-10-16; baseline finish 2024-10-22 → 2024-10-16 |
| 147 | Phase Closure & Signoff Phase deliverables | 2024-12-12 → 2024-12-31 (+19d) | 2024-12-12 → 2024-12-31 (+19d) |  |  | 38d → 324.9d |  | baseline start 2024-12-12 → 2024-12-05; baseline finish 2024-12-12 → 2024-12-05 |
| 148 | **Deliverables** | 2024-11-11 → 2024-11-29 (+18d) | 2024-12-12 → 2024-12-30 (+18d) | 24d → 26d |  | 38d → 325.9d |  | baseline start 2024-11-13 → 2024-11-04; baseline finish 2024-12-12 → 2024-12-05 |
| 149 | D: Test scripts | 2024-11-22 → 2024-12-06 (+14d) | 2024-11-22 → 2024-12-06 (+14d) |  |  | 52d → 344.9d |  | baseline start 2024-11-22 → 2024-11-12; baseline finish 2024-11-22 → 2024-11-12 |
| 150 | D: Unit test result document | 2024-11-11 → 2024-11-29 (+18d) | 2024-11-11 → 2024-11-29 (+18d) |  |  | 61d → 350.9d |  | baseline start 2024-11-13 → 2024-11-04; baseline finish 2024-11-13 → 2024-11-04 |
| 151 | D: Integration testing document | 2024-12-02 → 2024-12-16 (+14d) | 2024-12-02 → 2024-12-16 (+14d) |  |  | 46d → 336.9d |  | baseline start 2024-12-02 → 2024-11-20; baseline finish 2024-12-02 → 2024-11-20 |
| 152 | D: User Acceptance testing document | 2024-12-11 → 2024-12-30 (+19d) | 2024-12-11 → 2024-12-30 (+19d) |  |  | 39d → 325.9d |  | baseline start 2024-12-11 → 2024-12-04; baseline finish 2024-12-11 → 2024-12-04 |
| 153 | D: Final master data templates | 2024-12-12 → 2024-12-20 (+8d) | 2024-12-12 → 2024-12-20 (+8d) |  |  | 38d → 332.9d |  | baseline start 2024-12-12 → 2024-12-05; baseline finish 2024-12-12 → 2024-12-05 |
| 154 | D: Data migration strategy document | 2024-12-12 → 2024-12-20 (+8d) | 2024-12-12 → 2024-12-20 (+8d) |  |  | 38d → 332.9d |  | baseline start 2024-12-12 → 2024-12-05; baseline finish 2024-12-12 → 2024-12-05 |
| 155 | **Deploy** | 2024-10-21 → 2024-12-09 (+49d) | 2025-01-02 → 2025-01-15 (+13d) | 51d → 31.9d |  | 0d → 6d |  | baseline start 2024-10-15 → 2024-11-19; baseline finish 2024-12-31 → 2025-01-07 |
| 156 | **ABAP Developments Pre Go Live** | 2024-12-02 → 2024-12-16 (+14d) | 2024-12-31 → 2025-01-14 (+14d) | 21d → 25d |  | 26d → 0d |  | baseline start 2024-12-02 → 2024-11-27; baseline finish 2024-12-31 → 2025-01-06 |
| 157 | Develop reports | 2024-12-02 → 2024-12-16 (+14d) | 2024-12-20 → 2025-01-08 (+19d) | 15d → 20d |  | 26d → 0d | 130FS-7d → 130 | baseline start 2024-12-02 → 2024-11-27; baseline finish 2024-12-20 → 2024-12-28 |
| 158 | Testing by consultant | 2024-12-05 → 2024-12-19 (+14d) | 2024-12-26 → 2025-01-09 (+14d) | 15d → 18d |  | 26d → 0d |  | baseline start 2024-12-05 → 2024-11-30; baseline finish 2024-12-26 → 2025-01-01 |
| 159 | Testing by CTM | 2024-12-09 → 2024-12-21 (+12d) | 2024-12-30 → 2025-01-11 (+12d) | 15d → 18d |  | 26d → 0d |  | baseline start 2024-12-09 → 2024-12-03; baseline finish 2024-12-30 → 2025-01-03 |
| 160 | Sign off Development | 2024-12-31 → 2025-01-13 (+13d) | 2024-12-31 → 2025-01-14 (+14d) | 1d → 2d |  | 26d → 0d |  | baseline start 2024-12-31 → 2025-01-04; baseline finish 2024-12-31 → 2025-01-06 |
| 161 | **End User Training** | 2024-12-13 → 2024-12-21 (+8d) | 2024-12-27 → 2025-01-02 (+6d) |  |  | 27d → 322.9d |  | baseline start 2024-12-13 → 2024-12-06; baseline finish 2024-12-27 → 2024-12-17 |
| 162 | Prepare end user training manual | 2024-12-13 → 2024-12-21 (+8d) | 2024-12-16 → 2024-12-23 (+7d) |  |  | 27d → 322.9d |  | baseline start 2024-12-13 → 2024-12-06; baseline finish 2024-12-16 → 2024-12-07 |
| 163 | Conduct end user training | 2024-12-17 → 2024-12-24 (+7d) | 2024-12-23 → 2024-12-30 (+7d) |  |  | 27d → 322.9d |  | baseline start 2024-12-17 → 2024-12-09; baseline finish 2024-12-23 → 2024-12-13 |
| 164 | Conduct training to HODs/Management | 2024-12-24 → 2024-12-31 (+7d) | 2024-12-27 → 2025-01-02 (+6d) |  |  | 28d → 322.9d |  | baseline start 2024-12-24 → 2024-12-14; baseline finish 2024-12-27 → 2024-12-17 |
| 165 | **Production Environment Preparation** | 2024-12-12 → 2024-12-31 (+19d) | 2024-12-16 → 2025-01-02 (+17d) |  |  | 36d → 322.9d |  | baseline start 2024-12-12 → 2024-12-05; baseline finish 2024-12-16 → 2024-12-07 |
| 166 | Transport final configurations | 2024-12-12 → 2024-12-31 (+19d) | 2024-12-12 → 2024-12-31 (+19d) |  |  | 36d → 322.9d |  | baseline start 2024-12-12 → 2024-12-05; baseline finish 2024-12-12 → 2024-12-05 |
| 167 | Maintain number ranges | 2024-12-13 → 2025-01-01 (+19d) | 2024-12-13 → 2025-01-01 (+19d) |  |  | 36d → 322.9d |  | baseline start 2024-12-13 → 2024-12-06; baseline finish 2024-12-13 → 2024-12-06 |
| 168 | Maintain client specific data | 2024-12-16 → 2025-01-02 (+17d) | 2024-12-16 → 2025-01-02 (+17d) |  |  | 36d → 322.9d |  | baseline start 2024-12-16 → 2024-12-07; baseline finish 2024-12-16 → 2024-12-07 |
| 169 | **User creation** | 2024-12-03 → 2024-12-14 (+11d) | 2024-12-30 → 2024-12-23 (-7d) | 19d → 8d |  | 27d → 330.9d |  | baseline start 2024-12-03 → 2024-11-19; baseline finish 2024-12-30 → 2024-12-18 |
| 170 | Finalize list of users for production enviornment | 2024-12-03 → 2024-12-14 (+11d) | 2024-12-04 → 2024-12-16 (+12d) |  |  | 42d → 330.9d |  | baseline start 2024-12-03 → 2024-11-19; baseline finish 2024-12-04 → 2024-11-20 |
| 171 | Finalise Authorization Matrix | 2024-12-05 → 2024-12-17 (+12d) | 2024-12-06 → 2024-12-18 (+12d) |  |  | 42d → 330.9d |  | baseline start 2024-12-05 → 2024-11-21; baseline finish 2024-12-06 → 2024-11-22 |
| 172 | Check roles and authorization | 2024-12-24 → 2024-12-19 (-5d) | 2024-12-30 → 2024-12-23 (-7d) |  |  | 27d → 330.9d | 163 → 171 | baseline start 2024-12-24 → 2024-12-14; baseline finish 2024-12-30 → 2024-12-18 |
| 173 | **Data preparation and upload** | 2024-10-21 → 2024-12-09 (+49d) | 2024-12-31 → 2025-01-09 (+9d) | 49d → 27d |  | 0d → 14d |  | baseline start 2024-10-15 → 2024-11-28; baseline finish 2024-12-26 → 2025-01-06 |
| 174 | Receipt of master data | 2024-10-21 → 2024-12-09 (+49d) | 2024-12-17 → 2024-12-14 (-3d) | 40d → 6d |  | 0d → 14d | 46 → 46FS+38d | baseline start 2024-10-15 → 2024-11-28; baseline finish 2024-12-11 → 2024-12-20 |
| 175 | Validate & cleanse master data | 2024-12-18 → 2024-12-16 (-2d) | 2024-12-19 → 2024-12-16 (-3d) | 2d → 1d |  | 0d → 14d |  | baseline start 2024-12-12 → 2024-12-21; baseline finish 2024-12-13 → 2024-12-21 |
| 176 | Upload master data in Production | 2024-12-20 → 2024-12-17 (-3d) | 2024-12-26 → 2024-12-20 (-6d) |  |  | 0d → 14d |  | baseline start 2024-12-16 → 2024-12-23; baseline finish 2024-12-19 → 2024-12-27 |
| 177 | Confirm uploaded master data | 2024-12-27 → 2024-12-21 (-6d) | 2024-12-27 → 2024-12-21 (-6d) |  |  | 28d → 331.9d |  | baseline start 2024-12-20 → 2024-12-28; baseline finish 2024-12-20 → 2024-12-28 |
| 178 | Receipt of cutover data | 2024-12-13 → 2024-12-21 (+8d) | 2024-12-20 → 2025-01-02 (+13d) | 6d → 10d |  | 3d → 4d |  | baseline start 2024-12-13 → 2024-12-06; baseline finish 2024-12-20 → 2024-12-30 |
| 179 | Validate & cleanse cutover data | 2024-12-13 → 2025-01-03 (+21d) | 2024-12-20 → 2025-01-09 (+20d) |  |  | 32d → 316.9d | 137 → 178 | baseline start 2024-12-13 → 2024-12-31; baseline finish 2024-12-20 → 2025-01-06 |
| 180 | Upload cutover data in production | 2024-12-27 → 2025-01-03 (+7d) | 2024-12-31 → 2025-01-09 (+9d) | 3d → 6d |  | 0d → 4d |  | baseline start 2024-12-23 → 2024-12-31; baseline finish 2024-12-26 → 2025-01-06 |
| 181 | Check and validate uploaded data | 2024-12-31 → 2025-01-09 (+9d) | 2024-12-31 → 2025-01-09 (+9d) |  |  | 0d → 4d |  | baseline start 2024-12-26 → 2025-01-06; baseline finish 2024-12-26 → 2025-01-06 |
| 182 | **Deliverables** | 2024-12-05 → 2024-12-16 (+11d) | 2024-12-31 → 2024-12-27 (-4d) | 18d → 10d |  | 26d → 327.9d |  | baseline start 2024-12-05 → 2024-11-21; baseline finish 2024-12-24 → 2024-12-31 |
| 183 | D: End user training manual | 2024-12-17 → 2024-12-24 (+7d) | 2024-12-19 → 2024-12-27 (+8d) |  |  | 33d → 327.9d |  | baseline start 2024-12-17 → 2024-12-09; baseline finish 2024-12-19 → 2024-12-11 |
| 184 | D: Data migration plan & checklist | 2024-12-18 → 2024-12-16 (-2d) | 2024-12-20 → 2024-12-18 (-2d) |  |  | 32d → 334.9d |  | baseline start 2024-12-12 → 2024-12-21; baseline finish 2024-12-16 → 2024-12-24 |
| 185 | D: Master data upload programs | 2024-12-27 → 2024-12-21 (-6d) | 2024-12-31 → 2024-12-24 (-7d) |  |  | 26d → 329.9d |  | baseline start 2024-12-20 → 2024-12-28; baseline finish 2024-12-24 → 2024-12-31 |
| 186 | D: Sample data upload validation | 2024-12-27 → 2024-12-21 (-6d) | 2024-12-27 → 2024-12-21 (-6d) |  |  | 28d → 331.9d |  | baseline start 2024-12-20 → 2024-12-28; baseline finish 2024-12-20 → 2024-12-28 |
| 187 | D: Final SAP Authorization matrix | 2024-12-05 → 2024-12-17 (+12d) | 2024-12-05 → 2024-12-17 (+12d) |  |  | 43d → 335.9d |  | baseline start 2024-12-05 → 2024-11-21; baseline finish 2024-12-05 → 2024-11-21 |
| 188 | **Phase Closure & Sign Off Phase Deliverables** | 2025-01-01 → 2025-01-15 (+14d) | 2025-01-02 → 2025-01-15 (+13d) | 2d → 0.9d |  |  |  | baseline start 2024-12-27 → 2025-01-07; baseline finish 2024-12-30 → 2025-01-07 |
| 189 | Deploy signoff | 2025-01-01 → 2025-01-15 (+14d) | 2025-01-01 → 2025-01-15 (+14d) | 1d → 0.9d |  |  | 181 → 181, 160 | baseline start 2024-12-27 → 2025-01-07; baseline finish 2024-12-27 → 2025-01-07 |
| 190 | Completion of Final Preparation (Deploy) Phase | 2025-01-02 → 2025-01-15 (+13d) | 2025-01-02 → 2025-01-15 (+13d) | 1d → 0.9d |  |  | 189 → 189FF | baseline start 2024-12-30 → 2025-01-07; baseline finish 2024-12-30 → 2025-01-07 |
| 191 | Go Live | 2025-01-03 → 2025-01-15 (+12d) | 2025-01-03 → 2025-01-15 (+12d) | 1d → 0.1d |  |  | 190 → 190FF | baseline start 2024-12-31 → 2025-01-08; baseline finish 2024-12-31 → 2025-01-08 |
| 192 | **Stabilization** | 2025-01-06 → 2025-01-15 (+9d) | 2025-02-05 → 2025-02-15 (+10d) | 23d → 27d |  |  |  | baseline start 2025-01-01 → 2025-01-09; baseline finish 2025-01-31 → 2025-02-08 |
| 193 | Stabilization | 2025-01-06 → 2025-01-15 (+9d) | 2025-02-05 → 2025-02-15 (+10d) | 23d → 27d |  |  |  | was named Stabilization (Post Go live Support); baseline start 2025-01-01 → 2025-01-09; baseline finish 2025-01-31 → 2025-02-08 |
| 194 | **Deliverables** | 2025-01-06 → 2025-01-15 (+9d) | 2025-02-05 → 2025-02-15 (+10d) | 23d → 27d |  | 0d → 285d |  | baseline start 2025-01-01 → 2025-01-09; baseline finish 2025-01-31 → 2025-02-08 |
| 195 | D: Issue list with resolution status | 2025-01-06 → 2025-01-15 (+9d) | 2025-02-05 → 2025-02-15 (+10d) | 23d → 27d |  | 0d → 285d |  | baseline start 2025-01-01 → 2025-01-09; baseline finish 2025-01-31 → 2025-02-08 |
| 196 | D: Configuration documents | 2025-01-06 → 2025-01-15 (+9d) | 2025-02-05 → 2025-02-15 (+10d) | 23d → 27d |  | 0d → 285d |  | baseline start 2025-01-01 → 2025-01-09; baseline finish 2025-01-31 → 2025-02-08 |
| 197 | D: FS & TS | 2025-01-06 → 2025-01-15 (+9d) | 2025-02-05 → 2025-02-15 (+10d) | 23d → 27d |  | 0d → 285d |  | baseline start 2025-01-01 → 2025-01-09; baseline finish 2025-01-31 → 2025-02-08 |
| 198 | D: Cre team training document | 2025-01-06 → 2025-01-15 (+9d) | 2025-02-05 → 2025-02-15 (+10d) | 23d → 27d |  | 0d → 285d |  | baseline start 2025-01-01 → 2025-01-09; baseline finish 2025-01-31 → 2025-02-08 |
| 199 | **Extended Support** | 2024-09-23 A → 2025-02-15 (+145d) | 2024-09-23 A → 2025-03-15 (+173d) | 1d → 24d | 100% → 0% | none → 0d | 23FF → none | was named D: Training Plan; constraint start no earlier than 2022-11-07 → none; baseline start 2024-09-11 → 2025-02-10; baseline finish 2024-09-11 → 2025-03-08 |

## Version 9 (data date 2022-10-13, saved 2024-12-01, file TASK_00631268_1_01122024235621.mpp)

Note of the change: Add project files.

Last finish 2026-03-12 → 2025-02-05 (-400d). Complete tasks 55 → 61.

Added:

| ID | Task | Duration | Start | Finish | Predecessors |
| --- | --- | --- | --- | --- | --- |
| 50 | Integration with bank host to host (upto2) | 5d | 2024-10-21 | 2024-10-25 | 41 |
| 51 | Integration with HRMS (Payroll) | 5d | 2024-10-21 | 2024-10-25 | 41 |
| 52 | Integration with Cloud Steer CRM | 0d | 2024-11-07 A | 2024-11-07 A | 41 |
| 53 | Integration with DMS | 5d | 2024-10-21 | 2024-10-25 | 41 |
| 135 | **Third Party Interface** | 31d | 2024-11-04 | 2024-12-16 |  |
| 136 | Development | 25d | 2024-11-04 | 2024-12-06 | 83 |
| 137 | Testing by consultant | 25d | 2024-11-07 | 2024-12-11 | 136SS+3d |
| 138 | Testing by CTM | 25d | 2024-11-12 | 2024-12-16 | 137SS+3d |
| 139 | Sign off Development | 1d | 2024-12-16 | 2024-12-16 | 138FF |

Removed: 49 Integration with ASP/GSP; 50 Integration with bank host to host (upto 3); 51 Integration with Primavera; 52 Integration with third party payroll; 200 One month extended support; 201 Phase 2: One Year AMC; 202 AMC Support

Changed:

| ID | Task | Start | Finish | Duration | Complete | Total float | Predecessors | Other |
| --- | --- | --- | --- | --- | --- | --- | --- | --- |
| 1 | **SAP Implementation at NEO LIV** | 2024-09-02 A → 2024-09-05 A (+3d) | 2026-03-12 → 2025-02-05 (-400d) | 420.9d → 105d | 24% → 15% |  |  | was named SAP Implementation at PA; baseline start 2024-09-02 → 2024-09-05; baseline finish 2026-03-09 → 2025-01-31 |
| 2 | **Wave 1A: S4 HANA Implementation (Public Cloud)** | 2024-09-02 A → 2024-09-05 A (+3d) | 2025-03-15 → 2025-02-05 (-38d) | 159.9d → 105d | 32% → 15% | 261d → 0d |  | was named Phase 1: S4 HANA Implementation (Public Cloud); baseline start 2024-09-02 → 2024-09-05; baseline finish 2025-03-08 → 2025-01-31 |
| 3 | **Implementation** | 2024-09-02 A → 2024-09-05 A (+3d) | 2025-01-15 → 2025-01-02 (-13d) | 108.9d → 81d | 42% → 18% | 312d → 24d |  | baseline start 2024-09-02 → 2024-09-05; baseline finish 2025-01-07 → 2024-12-31 |
| 4 | **Prepare** | 2024-09-02 A → 2024-09-05 A (+3d) | 2024-09-10 A → 2024-09-23 A (+13d) | 7d → 12d |  |  |  | baseline start 2024-09-02 → 2024-09-05; baseline finish 2024-09-10 → 2024-09-11 |
| 5 | **Project Kick Off and On-Boarding** | 2024-09-02 A → 2024-09-05 A (+3d) | 2024-09-10 A → 2024-09-05 A (-5d) | 7d → 1d |  |  |  | baseline start 2024-09-02 → 2024-09-05; baseline finish 2024-09-09 → 2024-09-05 |
| 6 | On-board Project Team | 2024-09-02 A → 2024-09-05 A (+3d) | 2024-09-10 A → 2024-09-05 A (-5d) | 7d → 1d |  |  |  | constraint finish no earlier than 2024-09-09 → start no earlier than 2024-09-05; baseline start 2024-09-02 → 2024-09-05; baseline finish 2024-09-09 → 2024-09-05 |
| 7 | Conduct Kickoff Workshop |  |  |  |  |  | 6SS+3d → 6SS | was named Conduct project kickoff; constraint start no earlier than 2024-09-05 → none |
| 8 | **Project Plan** | 2024-09-02 A → 2024-09-05 A (+3d) | 2024-09-05 A → 2024-09-19 A (+14d) | 4d → 10d |  |  |  | baseline start 2024-09-02 → 2024-09-05; baseline finish 2024-09-05 → 2024-09-11 |
| 9 | Prepare & submit Initial project plan | 2024-09-02 A → 2024-09-05 A (+3d) | 2024-09-02 A → 2024-09-06 A (+4d) | 1d → 2d |  |  |  | baseline start 2024-09-02 → 2024-09-05; baseline finish 2024-09-02 → 2024-09-06 |
| 10 | Review project plan | 2024-09-03 A → 2024-09-09 A (+6d) | 2024-09-03 A → 2024-09-09 A (+6d) |  |  |  |  | baseline start 2024-09-03 → 2024-09-09; baseline finish 2024-09-03 → 2024-09-09 |
| 11 | Make necessary changes in the plan | 2024-09-04 A → 2024-09-10 A (+6d) | 2024-09-04 A → 2024-09-10 A (+6d) |  |  |  |  | baseline start 2024-09-04 → 2024-09-10; baseline finish 2024-09-04 → 2024-09-10 |
| 12 | Submit revised plan | 2024-09-04 A → 2024-09-10 A (+6d) | 2024-09-04 A → 2024-09-10 A (+6d) |  |  |  |  | baseline start 2024-09-04 → 2024-09-10; baseline finish 2024-09-04 → 2024-09-10 |
| 13 | Approval of project plan by NL | 2024-09-05 A → 2024-09-11 A (+6d) | 2024-09-05 A → 2024-09-19 A (+14d) | 1d → 6d |  |  |  | was named Approval of project plan by PA; baseline start 2024-09-05 → 2024-09-11; baseline finish 2024-09-05 → 2024-09-11 |
| 14 | **Project Governance** | 2024-09-06 A → 2024-09-09 A (+3d) |  | 2d → 1d |  |  |  |  |
| 15 | Establish Project Governance Mechanism | 2024-09-06 A → 2024-09-09 A (+3d) |  |  |  |  |  |  |
| 16 | Define Project Communications and Reporting | 2024-09-06 A → 2024-09-09 A (+3d) |  |  |  |  |  |  |
| 17 | **Project Standards, Infrastructure & Solution** |  | 2024-09-06 A → 2024-09-09 A (+3d) | 1d → 2d |  |  |  | baseline finish 2024-09-06 → 2024-09-09 |
| 18 | Set Up Project Team Logistics and Infrastructure |  | 2024-09-06 A → 2024-09-09 A (+3d) | 1d → 2d |  |  |  | baseline finish 2024-09-06 → 2024-09-09 |
| 19 | Create a Document Repository for the Implementation Project Team |  | 2024-09-06 A → 2024-09-09 A (+3d) | 1d → 2d |  |  |  | baseline finish 2024-09-06 → 2024-09-09 |
| 20 | **Fit-to-Standard Analysis Preparation** | 2024-09-09 A → 2024-09-10 A (+1d) | 2024-09-09 A → 2024-09-12 A (+3d) | 1d → 3d |  |  |  | baseline start 2024-09-09 → 2024-09-10; baseline finish 2024-09-09 → 2024-09-10 |
| 21 | Prepare for Fit-to-Standard Workshops | 2024-09-09 A → 2024-09-10 A (+1d) | 2024-09-09 A → 2024-09-12 A (+3d) | 1d → 3d |  |  |  | baseline start 2024-09-09 → 2024-09-10; baseline finish 2024-09-09 → 2024-09-10 |
| 22 | **Phase Closure and Sign-Off Phase Deliverables** | 2024-09-10 A → 2024-09-23 A (+13d) | 2024-09-10 A → 2024-09-23 A (+13d) |  |  |  |  | baseline start 2024-09-10 → 2024-09-11; baseline finish 2024-09-10 → 2024-09-11 |
| 23 | Prepare Phase Signoff | 2024-09-10 A → 2024-09-23 A (+13d) | 2024-09-10 A → 2024-09-23 A (+13d) | 0d → 1d |  |  |  | baseline start 2024-09-10 → 2024-09-11; baseline finish 2024-09-10 → 2024-09-11 |
| 24 | **Deliverables** | 2024-09-10 A → 2024-09-23 A (+13d) | 2024-09-10 A → 2024-09-23 A (+13d) |  |  |  |  | baseline start 2024-09-10 → 2024-09-11; baseline finish 2024-09-10 → 2024-09-11 |
| 25 | D: Baseline Project Plan | 2024-09-10 A → 2024-09-23 A (+13d) | 2024-09-10 A → 2024-09-23 A (+13d) |  |  |  |  | baseline start 2024-09-10 → 2024-09-11; baseline finish 2024-09-10 → 2024-09-11 |
| 26 | D: Project kickoff presentation | 2024-09-10 A → 2024-09-23 A (+13d) | 2024-09-10 A → 2024-09-23 A (+13d) |  |  |  |  | baseline start 2024-09-10 → 2024-09-11; baseline finish 2024-09-10 → 2024-09-11 |
| 27 | D: Training Plan | 2025-02-15 → 2024-09-23 A (-145d) | 2025-03-15 → 2024-09-23 A (-173d) | 24d → 1d | 0% → 100% | 0d → none | none → 23FF | was named Extended Support; constraint none → start no earlier than 2022-11-07; baseline start 2025-02-10 → 2024-09-11; baseline finish 2025-03-08 → 2024-09-11 |
| 28 | **Explore** | 2024-09-02 A → 2024-09-09 A (+7d) | 2024-11-23 A → 2024-11-07 (-16d) | 65d → 40d | 100% → 63% | none → 63d |  | baseline start 2024-09-10 → 2024-09-09; baseline finish 2024-10-11 → 2024-10-16 |
| 29 | **Requirement gathering** | 2024-09-02 A → 2024-09-09 A (+7d) | 2024-09-17 A → 2024-09-12 A (-5d) | 12d → 4d |  |  |  | baseline start 2024-09-10 → 2024-09-09; baseline finish 2024-09-11 → 2024-09-12 |
| 30 | Review AS IS document | 2024-09-02 A → 2024-09-09 A (+7d) | 2024-09-17 A → 2024-09-10 A (-7d) | 6d → 2d |  |  | 21 → 7SS+2d | baseline start 2024-09-10 → 2024-09-09; baseline finish 2024-09-11 → 2024-09-10 |
| 31 | Update AS IS document as per discussion | 2024-09-02 A → 2024-09-11 A (+9d) | 2024-09-17 A → 2024-09-12 A (-5d) | 12d → 2d |  |  | 30SS → 30 | baseline start 2024-09-10 → 2024-09-11; baseline finish 2024-09-11 → 2024-09-12 |
| 32 | **Fit-to-Standard analysis** | 2024-09-17 A → 2024-09-16 A (-1d) | 2024-09-27 A → 2024-09-19 A (-8d) | 9d → 3d |  |  |  | baseline start 2024-09-12 → 2024-09-16; baseline finish 2024-09-16 → 2024-09-19 |
| 33 | Conduct workshop for all modules | 2024-09-17 A → 2024-09-16 A (-1d) | 2024-09-27 A → 2024-09-19 A (-8d) | 8d → 3d |  |  | 31 → 31FS+1d | baseline start 2024-09-12 → 2024-09-16; baseline finish 2024-09-16 → 2024-09-19 |
| 34 | **Fit to Standard analysis documentation** | 2024-09-16 A → 2024-09-20 A (+4d) | 2024-11-23 A → 2024-11-05 (-18d) | 55d → 30d | 100% → 89% | none → 65d |  | baseline start 2024-09-17 → 2024-09-20; baseline finish 2024-10-11 → 2024-10-15 |
| 35 | Document Initial Configuration Settings for SAP Central Business Configuration | 2024-09-16 A → 2024-09-20 A (+4d) | 2024-09-16 A → 2024-09-23 A (+7d) | 1d → 2d |  |  |  | baseline start 2024-09-17 → 2024-09-20; baseline finish 2024-09-18 → 2024-09-23 |
| 36 | Document Scope via SAP Central Business Configuration | 2024-09-17 A → 2024-09-24 A (+7d) | 2024-09-19 A → 2024-09-25 A (+6d) | 3d → 2d |  |  |  | baseline start 2024-09-19 → 2024-09-24; baseline finish 2024-09-20 → 2024-09-25 |
| 37 | **Document and Maintain Business Process Flows** | 2024-09-20 A → 2024-09-24 A (+4d) | 2024-11-07 A → 2024-10-21 (-17d) | 37d → 19d | 100% → 94% | none → 74d |  | baseline start 2024-09-17 → 2024-09-20; baseline finish 2024-10-04 → 2024-10-09 |
| 38 | Prepare BBP Document and KDS | 2024-09-20 A → 2024-09-24 A (+4d) | 2024-10-01 A → 2024-09-28 A (-3d) | 2.5d → 4d |  |  |  | was named Prepare fit-to-standard Document and KDS; baseline start 2024-09-17 → 2024-09-20; baseline finish 2024-09-23 → 2024-09-26 |
| 39 | Submition of BBP and KDS | 2024-09-23 A → 2024-09-30 A (+7d) | 2024-10-01 A → 2024-09-30 A (-1d) | 0d → 1d |  |  |  | was named Submition of Fit-to-standard and KDS; baseline start 2024-09-24 → 2024-09-27; baseline finish 2024-09-24 → 2024-09-27 |
| 40 | Review of BBP & KDS by CTM | 2024-09-25 A → 2024-10-04 A (+9d) | 2024-10-02 A → 2024-10-14 A (+12d) | 0d → 7d |  |  |  | was named Review of fit-to-standard & KDS by CTM; baseline start 2024-09-25 → 2024-09-30; baseline finish 2024-10-01 → 2024-10-07 |
| 41 | BBP Walkthrough | 2024-10-03 A → 2024-10-15 A (+12d) | 2024-10-21 A → 2024-10-18 A (-3d) | 16d → 4d |  |  |  | was named Solution Walkthrough; constraint finish no earlier than 2024-10-21 → none; baseline start 2024-10-03 → 2024-10-08; baseline finish 2024-10-03 → 2024-10-08 |
| 42 | BBP Signff | 2024-10-22 A → 2024-10-21 (-1d) | 2024-11-07 A → 2024-10-21 (-17d) | 13d → 1d | 100% → 0% | none → 78d |  | was named Fit-to-Standard document Signoff; constraint finish no earlier than 2024-11-04 → none; baseline start 2024-10-04 → 2024-10-09; baseline finish 2024-10-04 → 2024-10-09 |
| 43 | Document Configuration Values | 2024-10-14 A → 2024-10-21 (+7d) | 2024-11-23 A → 2024-10-22 (-32d) | 27d → 2d | 100% → 0% | none → 78d |  | constraint finish no earlier than 2024-11-08 → none; baseline start 2024-10-04 → 2024-10-09; baseline finish 2024-10-05 → 2024-10-10 |
| 44 | **Document Master Data Requirements** | 2024-10-07 A → 2024-10-16 A (+9d) | 2024-10-22 A → 2024-10-18 A (-4d) | 14d → 3d |  |  |  | was named Data migration requirements; baseline start 2024-10-07 → 2024-10-11; baseline finish 2024-10-09 → 2024-10-14 |
| 45 | Identify masterdata requirement | 2024-10-07 A → 2024-10-16 A (+9d) | 2024-10-07 A → 2024-10-17 A (+10d) |  |  |  |  | was named Identify master data requirement; baseline start 2024-10-07 → 2024-10-11; baseline finish 2024-10-07 → 2024-10-11 |
| 46 | Prepare and explain masterdata template | 2024-10-10 A → 2024-10-17 A (+7d) | 2024-10-22 A → 2024-10-17 A (-5d) | 11d → 1d |  |  | 45 → 45SS | was named Prepare and explain master data template; constraint as late as possible → none; baseline start 2024-10-08 → 2024-10-11; baseline finish 2024-10-09 → 2024-10-11 |
| 47 | Circulate masterdata template | 2024-10-10 A → 2024-10-18 A (+8d) | 2024-10-22 A → 2024-10-18 A (-4d) | 8d → 1d |  |  | 46FF → 46 | was named Circulate master data template; baseline start 2024-10-09 → 2024-10-14; baseline finish 2024-10-09 → 2024-10-14 |
| 48 | Confirm Backlog and prioritise (SIT/UAT, Golive, Post-Golive) | 2024-10-11 A → 2024-11-05 A (+25d) | 2024-11-12 A → 2024-11-05 A (-7d) | 10d → 1d |  |  |  | constraint as late as possible → none; baseline start 2024-10-10 → 2024-10-15; baseline finish 2024-10-11 → 2024-10-15 |
| 49 | **Integration Planning and Design** | 2024-10-09 A → 2024-10-21 A (+12d) | 2024-11-12 A → 2024-11-07 (-5d) | 28d → 12d | 100% → 0% | none → 63d |  | baseline start 2024-10-04 → 2024-10-09; baseline finish 2024-10-09 → 2024-10-15 |
| 54 | **Getting Started with your SAP Implementation** | 2024-10-07 A → 2024-09-26 (-11d) | 2024-10-07 A → 2024-10-04 (-3d) | 1d → 6d | 100% → 0% | none → 85d |  | baseline start 2024-09-23 → 2024-09-26; baseline finish 2024-10-01 → 2024-10-04 |
| 55 | Review Overview Documentation | 2024-10-07 A → 2024-09-26 (-11d) | 2024-10-07 A → 2024-09-27 (-10d) | 1d → 2d | 100% → 0% | none → 90d |  | baseline start 2024-09-23 → 2024-09-26; baseline finish 2024-09-24 → 2024-09-27 |
| 56 | Organize Provisioning Emails | 2024-10-07 A → 2024-09-30 (-7d) | 2024-10-07 A → 2024-10-01 (-6d) | 1d → 2d | 100% → 0% | none → 90d |  | baseline start 2024-09-25 → 2024-09-30; baseline finish 2024-09-27 → 2024-10-01 |
| 57 | Ensure Project Team Members Access to the SAP Support Portal, SAP Best Practices Explorer, and SAP Customer Communities | 2024-10-07 A → 2024-10-03 (-4d) | 2024-10-07 A → 2024-10-04 (-3d) | 1d → 2d | 100% → 0% | none → 90d |  | baseline start 2024-09-30 → 2024-10-03; baseline finish 2024-10-01 → 2024-10-04 |
| 58 | **SAP Cloud ALM Onboarding** | 2024-09-03 A → 2024-10-07 A (+34d) | 2024-09-13 A → 2024-10-09 A (+26d) | 9d → 3d |  |  |  | baseline start 2024-10-03 → 2024-10-07; baseline finish 2024-10-04 → 2024-10-08 |
| 59 | Request SAP Cloud ALM Tenant | 2024-09-03 A → 2024-10-07 A (+34d) | 2024-09-13 A → 2024-10-08 A (+25d) | 9d → 2d |  |  |  | baseline start 2024-10-03 → 2024-10-07; baseline finish 2024-10-03 → 2024-10-07 |
| 60 | Access SAP Cloud ALM and Create Users | 2024-09-13 A → 2024-10-08 A (+25d) | 2024-09-13 A → 2024-10-09 A (+26d) |  |  |  |  | baseline start 2024-10-04 → 2024-10-08; baseline finish 2024-10-04 → 2024-10-08 |
| 61 | **Initial System Access for Central Business Configuration** | 2024-09-03 A → 2024-10-15 A (+42d) | 2024-09-19 A → 2024-10-17 A (+28d) | 13d → 3d |  |  |  | baseline start 2024-10-05 → 2024-10-09; baseline finish 2024-10-08 → 2024-10-11 |
| 62 | Access the SAP Central Business Configuration | 2024-09-03 A → 2024-10-15 A (+42d) | 2024-09-10 A → 2024-10-15 A (+35d) | 6d → 1d |  |  |  | baseline start 2024-10-05 → 2024-10-09; baseline finish 2024-10-05 → 2024-10-09 |
| 63 | Set Up Starter Project in SAP Central Business Configuration | 2024-09-11 A → 2024-10-16 A (+35d) | 2024-09-11 A → 2024-10-16 A (+35d) |  |  |  |  | baseline start 2024-10-07 → 2024-10-10; baseline finish 2024-10-07 → 2024-10-10 |
| 64 | Set Up SAP Central Business Configuration Integration | 2024-09-13 A → 2024-10-17 A (+34d) | 2024-09-19 A → 2024-10-17 A (+28d) | 5d → 1d |  |  |  | baseline start 2024-10-08 → 2024-10-11; baseline finish 2024-10-08 → 2024-10-11 |
| 65 | **Initial System Access for SAP S/4HANA Cloud** | 2024-09-03 A → 2024-10-17 A (+44d) | 2024-09-20 A → 2024-10-18 A (+28d) | 14d → 2d |  |  |  | baseline start 2024-09-12 → 2024-10-14; baseline finish 2024-09-16 → 2024-10-16 |
| 66 | Access Starter System and Reset Password | 2024-09-03 A → 2024-10-17 A (+44d) | 2024-09-10 A → 2024-10-18 A (+38d) | 6d → 1d |  |  | 30 → 64 | baseline start 2024-09-12 → 2024-10-14; baseline finish 2024-09-12 → 2024-10-14 |
| 67 | Create Users in the Starter System | 2024-09-10 A → 2024-10-17 A (+37d) | 2024-09-11 A → 2024-10-18 A (+37d) | 1d → 0d |  |  |  | baseline start 2024-09-13 → 2024-10-15; baseline finish 2024-09-13 → 2024-10-15 |
| 68 | Self-Activation of Project Team Members in the Identity Authentication Service | 2024-09-20 A → 2024-10-18 A (+28d) | 2024-09-20 A → 2024-10-18 A (+28d) | 1d → 0d |  |  |  | baseline start 2024-09-16 → 2024-10-16; baseline finish 2024-09-16 → 2024-10-16 |
| 69 | **Phase Closure and Sign-Off Phase Deliverables** | 2024-11-12 A → 2024-10-25 A (-18d) | 2024-11-13 A → 2024-10-25 A (-19d) | 2d → 0d |  |  |  | baseline start 2024-10-11 → 2024-10-16; baseline finish 2024-10-11 → 2024-10-16 |
| 70 | Explore Phase Signoff | 2024-11-12 A → 2024-10-25 A (-18d) | 2024-11-13 A → 2024-10-25 A (-19d) | 2d → 0d |  |  | 48FF → 53 | baseline start 2024-10-11 → 2024-10-16; baseline finish 2024-10-11 → 2024-10-16 |
| 71 | **Deliverables** | 2024-09-27 A → 2024-10-25 A (+28d) | 2024-10-21 A → 2024-10-25 A (+4d) | 19d → 1d |  |  |  | baseline start 2024-10-05 → 2024-10-10; baseline finish 2024-10-10 → 2024-10-15 |
| 72 | Fit to Standard documents with Process flow diagram, Gap Analysis | 2024-10-21 A → 2024-10-25 A (+4d) | 2024-10-21 A → 2024-10-25 A (+4d) |  |  |  |  | baseline start 2024-10-05 → 2024-10-10; baseline finish 2024-10-05 → 2024-10-10 |
| 73 | Core team training/ presentation | 2024-09-27 A → 2024-10-25 A (+28d) | 2024-09-27 A → 2024-10-25 A (+28d) |  |  |  |  | baseline start 2024-10-05 → 2024-10-10; baseline finish 2024-10-05 → 2024-10-10 |
| 74 | Initial Master data templates | 2024-10-18 A → 2024-10-25 A (+7d) | 2024-10-18 A → 2024-10-25 A (+7d) | 0d → 1d |  |  |  | baseline start 2024-10-10 → 2024-10-15; baseline finish 2024-10-10 → 2024-10-15 |

| ID | Task | Start | Finish | Duration | Complete | Total float | Predecessors | Other |
| --- | --- | --- | --- | --- | --- | --- | --- | --- |
| 75 | **Realize** | 2024-10-29 A → 2024-10-21 A (-8d) | 2024-12-31 → 2024-12-18 (-13d) | 52d → 41d | 13% → 9% | 324.9d → 34d |  | baseline start 2024-10-12 → 2024-10-15; baseline finish 2024-12-05 → 2024-12-18 |
| 76 | **Requirement gathering sheet (RGS)** | 2024-10-29 A → 2024-10-27 A (-2d) | 2024-11-28 → 2024-10-30 A (-29d) | 24.75d → 3d | 12% → 100% | 0d → none |  | baseline start 2024-10-12 → 2024-10-16; baseline finish 2024-10-16 → 2024-10-21 |
| 77 | Prepare RGS | 2024-10-29 A → 2024-10-27 A (-2d) | 2024-11-27 → 2024-10-30 A (-28d) | 12.9d → 3d | 10% → 100% | 0d → none | 48 → 53 | constraint finish no earlier than 2024-11-27 → none; baseline start 2024-10-12 → 2024-10-16; baseline finish 2024-10-15 → 2024-10-18 |
| 78 | Submit RGS |  | 2024-11-28 → 2024-10-30 A (-29d) | 1d → 0d | 25% → 100% | 0d → none |  | constraint finish no earlier than 2024-11-18 → none; baseline start 2024-10-16 → 2024-10-21; baseline finish 2024-10-16 → 2024-10-21 |
| 79 | **Functional Specifications** | 2024-11-19 A → 2024-10-26 A (-24d) | 2024-12-03 → 2024-11-13 (-20d) | 12.75d → 11d | 33% → 50% | 348.15d → 59d |  | baseline start 2024-10-16 → 2024-10-22; baseline finish 2024-10-22 → 2024-10-29 |
| 80 | Prepare functional specfications | 2024-11-25 A → 2024-10-31 A (-25d) | 2024-12-03 → 2024-11-07 (-26d) |  |  | 348.15d → 63d |  | constraint start no earlier than 2024-11-25 → none; baseline start 2024-10-16 → 2024-10-22; baseline finish 2024-10-19 → 2024-10-25 |
| 81 | Finalize development tracker | 2024-11-19 A → 2024-10-26 A (-24d) | 2024-11-20 A → 2024-11-13 A (-7d) | 2d → 4d |  |  | none → 80 | constraint start no earlier than 2024-11-19 → none; baseline start 2024-10-21 → 2024-10-28; baseline finish 2024-10-22 → 2024-10-29 |
| 82 | **Solution Configuration** | 2024-10-29 A → 2024-10-25 A (-4d) | 2024-11-28 → 2024-11-08 A (-20d) | 25d → 9d | 58% → 100% | 351.9d → none |  | baseline start 2024-10-21 → 2024-10-28; baseline finish 2024-11-02 → 2024-11-12 |
| 83 | Configure Processes and Functions in golden master (100) | 2024-10-29 A → 2024-10-25 A (-4d) | 2024-11-19 A → 2024-10-31 A (-19d) | 17d → 0d |  |  | none → 80 | constraint start no earlier than 2024-11-19 → none; baseline start 2024-10-21 → 2024-10-28; baseline finish 2024-10-25 → 2024-11-05 |
| 84 | Transfer of Configuration to Dev testing | 2024-11-19 A → 2024-10-31 A (-19d) | 2024-11-20 A → 2024-10-31 A (-20d) | 2d → 0d |  |  |  | constraint start no earlier than 2024-11-21 → none; baseline start 2024-10-26 → 2024-11-06; baseline finish 2024-10-26 → 2024-11-06 |
| 85 | Unit testing-1 (Consultant) | 2024-11-20 A → 2024-10-31 A (-20d) | 2024-11-27 → 2024-11-04 A (-23d) | 6d → 1d | 0% → 100% | 352.9d → none |  | constraint finish no earlier than 2024-11-27 → none; baseline start 2024-10-28 → 2024-11-07; baseline finish 2024-10-30 → 2024-11-11 |
| 86 | Document and Resolve Issues | 2024-11-20 A → 2024-11-04 A (-16d) | 2024-11-27 → 2024-11-07 A (-20d) | 7d → 4d | 0% → 100% | 324.9d → none |  | constraint finish no earlier than 2024-11-27 → none; baseline start 2024-10-28 → 2024-11-07; baseline finish 2024-10-30 → 2024-11-11 |
| 87 | Submit Unit Testing result & completion of baseline config | 2024-11-28 → 2024-11-08 A (-20d) | 2024-11-28 → 2024-11-08 A (-20d) |  | 0% → 100% | 324.9d → none |  | baseline start 2024-11-02 → 2024-11-12; baseline finish 2024-11-02 → 2024-11-12 |
| 88 | **Core team training & UT** | 2024-11-28 → 2024-11-13 A (-15d) | 2024-12-11 → 2024-11-28 (-13d) |  | 0% → 25% | 324.9d → 42d |  | baseline start 2024-11-02 → 2024-11-13; baseline finish 2024-11-15 → 2024-11-28 |
| 89 | Plan for CTM training | 2024-11-28 → 2024-11-13 A (-15d) | 2024-11-28 → 2024-11-13 A (-15d) |  | 0% → 100% | 324.9d → none | 87FF → 87 | constraint start no earlier than 2024-11-26 → none; baseline start 2024-11-02 → 2024-11-13; baseline finish 2024-11-02 → 2024-11-13 |
| 90 | Making necessery training arrangement - PPT + tutorial | 2024-11-29 → 2024-11-14 A (-15d) | 2024-11-30 → 2024-11-16 A (-14d) |  | 0% → 100% | 324.9d → none |  | baseline start 2024-11-04 → 2024-11-14; baseline finish 2024-11-05 → 2024-11-15 |
| 91 | Conducting CTM Training (Module wise) | 2024-12-02 → 2024-11-18 (-14d) | 2024-12-04 → 2024-11-20 (-14d) |  |  | 324.9d → 3d |  | baseline start 2024-11-06 → 2024-11-18; baseline finish 2024-11-08 → 2024-11-20 |
| 92 | Unit Testing by Core team | 2024-12-05 → 2024-11-21 (-14d) | 2024-12-11 → 2024-11-28 (-13d) |  |  | 330.9d → 42d |  | baseline start 2024-11-09 → 2024-11-21; baseline finish 2024-11-15 → 2024-11-28 |
| 93 | **Quality System Request / Initial Setup** | 2024-11-18 A → 2024-11-11 A (-7d) | 2024-11-18 A → 2024-11-13 A (-5d) | 1d → 3d |  |  |  | baseline start 2024-10-12 → 2024-10-17; baseline finish 2024-10-12 → 2024-10-17 |
| 94 | Execute Initial Setup of the Quality System via SAP Central Business Configuration | 2024-11-18 A → 2024-11-11 A (-7d) | 2024-11-18 A → 2024-11-13 A (-5d) | 1d → 3d |  |  |  | baseline start 2024-10-12 → 2024-10-17; baseline finish 2024-10-12 → 2024-10-17 |
| 95 | Request Quality System via Manage Your Solution App | 2024-11-18 A → 2024-11-13 A (-5d) | 2024-11-18 A → 2024-11-13 A (-5d) |  |  |  |  | baseline start 2024-10-12 → 2024-10-17; baseline finish 2024-10-12 → 2024-10-17 |
| 96 | **Quality System Initial Access** | 2024-11-14 A → 2024-10-25 A (-20d) | 2024-11-27 → 2024-11-14 (-13d) | 12d → 13d | 33% → 22% | 352.9d → 58d |  | baseline start 2024-10-12 → 2024-10-17; baseline finish 2024-10-19 → 2024-10-25 |
| 97 | Receive Quality System and Reset Password | 2024-11-18 A → 2024-11-13 A (-5d) | 2024-11-21 A → 2024-11-13 A (-8d) | 4d → 0d |  |  |  | baseline start 2024-10-14 → 2024-10-18; baseline finish 2024-10-14 → 2024-10-18 |
| 98 | Create Preset Configuration User in the Quality System via Manage Your Solution App | 2024-11-26 → 2024-11-13 A (-13d) | 2024-11-26 → 2024-11-13 A (-13d) |  | 0% → 100% | 352.9d → none |  | constraint start no earlier than 2024-11-26 → none; baseline start 2024-10-15 → 2024-10-21; baseline finish 2024-10-15 → 2024-10-21 |
| 99 | Define Preset Parameters and Trigger System Activation via Manage Your Solution App | 2024-11-27 → 2024-11-14 A (-13d) | 2024-11-27 → 2024-11-14 A (-13d) |  | 0% → 100% | 352.9d → none |  | baseline start 2024-10-16 → 2024-10-22; baseline finish 2024-10-16 → 2024-10-22 |
| 100 | **Create Users in the Quality Server** | 2024-11-14 → 2024-10-25 (-20d) | 2024-11-19 → 2024-11-05 (-14d) | 5d → 6d |  | 358.9d → 64d |  | baseline start 2024-10-12 → 2024-10-17; baseline finish 2024-10-18 → 2024-10-24 |
| 101 | **Finalize list of users for QAS** | 2024-11-14 → 2024-10-25 (-20d) | 2024-11-19 → 2024-11-05 (-14d) | 5d → 6d |  | 358.9d → 64d |  | baseline start 2024-10-12 → 2024-10-17; baseline finish 2024-10-18 → 2024-10-24 |
| 102 | **Provide user authorization** | 2024-11-14 → 2024-10-25 (-20d) | 2024-11-19 → 2024-11-05 (-14d) | 5d → 6d |  | 358.9d → 64d |  | baseline start 2024-10-12 → 2024-10-17; baseline finish 2024-10-18 → 2024-10-24 |
| 103 | Finalize user authorization | 2024-11-14 → 2024-10-25 (-20d) | 2024-11-14 → 2024-10-28 (-17d) | 1d → 2d |  | 358.9d → 64d |  | baseline start 2024-10-12 → 2024-10-17; baseline finish 2024-10-14 → 2024-10-18 |
| 104 | Create roles and authorization | 2024-11-15 → 2024-10-29 (-17d) | 2024-11-15 → 2024-10-29 (-17d) |  |  | 358.9d → 64d |  | baseline start 2024-10-15 → 2024-10-21; baseline finish 2024-10-15 → 2024-10-21 |
| 105 | Testing of roles and authorization | 2024-11-16 → 2024-10-30 (-17d) | 2024-11-18 → 2024-11-04 (-14d) |  |  | 358.9d → 64d |  | baseline start 2024-10-16 → 2024-10-22; baseline finish 2024-10-17 → 2024-10-23 |
| 106 | Deployment of roles to users | 2024-11-19 → 2024-11-05 (-14d) | 2024-11-19 → 2024-11-05 (-14d) |  |  | 358.9d → 64d |  | baseline start 2024-10-18 → 2024-10-24; baseline finish 2024-10-18 → 2024-10-24 |
| 107 | Self-Activation of Project Team Members in the Identity Authentication Service | 2024-11-20 → 2024-11-06 (-14d) | 2024-11-20 → 2024-11-06 (-14d) |  |  | 358.9d → 64d |  | baseline start 2024-10-19 → 2024-10-25; baseline finish 2024-10-19 → 2024-10-25 |
| 108 | **Required Configuration Before System Use - SAP S/4HANA Cloud** | 2024-11-28 → 2024-11-14 A (-14d) | 2024-11-28 → 2024-11-14 A (-14d) |  | 0% → 100% | 348.9d → none |  | baseline start 2024-10-15 → 2024-10-21; baseline finish 2024-10-15 → 2024-10-21 |
| 109 | Configure system | 2024-11-28 → 2024-11-14 A (-14d) | 2024-11-28 → 2024-11-14 A (-14d) |  | 0% → 100% | 348.9d → none |  | constraint start no earlier than 2024-11-28 → none; baseline start 2024-10-15 → 2024-10-21; baseline finish 2024-10-15 → 2024-10-21 |
| 110 | **Standard Integration Setup in the Quality/Test System** | 2024-11-29 → 2024-11-14 A (-15d) | 2024-12-02 → 2024-11-15 A (-17d) | 3d → 2d | 0% → 100% | 348.9d → none |  | baseline start 2024-10-16 → 2024-10-22; baseline finish 2024-10-18 → 2024-10-24 |
| 111 | Set Up Integration using Cloud Integration Automation Service (CIAS) | 2024-11-29 → 2024-11-14 A (-15d) | 2024-11-29 → 2024-11-14 A (-15d) |  | 0% → 100% | 348.9d → none |  | baseline start 2024-10-16 → 2024-10-22; baseline finish 2024-10-16 → 2024-10-22 |
| 112 | Set Up Employee Central Integration (JB1) | 2024-11-30 → 2024-11-15 A (-15d) | 2024-11-30 → 2024-11-15 A (-15d) |  | 0% → 100% | 348.9d → none |  | baseline start 2024-10-17 → 2024-10-23; baseline finish 2024-10-17 → 2024-10-23 |
| 113 | Set Up Integrations in the Quality/Test System | 2024-12-02 → 2024-11-15 A (-17d) | 2024-12-02 → 2024-11-15 A (-17d) | 1d → 0d | 0% → 100% | 348.9d → none |  | baseline start 2024-10-18 → 2024-10-24; baseline finish 2024-10-18 → 2024-10-24 |
| 114 | **System Integration Test** | 2024-11-15 → 2024-10-21 A (-25d) | 2024-12-30 → 2024-12-18 (-12d) | 38d → 41d |  | 4d → 34d |  | baseline start 2024-10-12 → 2024-10-15; baseline finish 2024-12-04 → 2024-12-18 |
| 115 | **Integration test Plan** | 2024-11-15 → 2024-10-21 (-25d) | 2024-12-05 → 2024-11-25 (-10d) | 18d → 24d |  | 338.9d → 11d |  | baseline start 2024-10-12 → 2024-10-15; baseline finish 2024-11-11 → 2024-11-22 |
| 116 | Identify scenerios for Integration test | 2024-12-05 → 2024-11-21 (-14d) | 2024-12-05 → 2024-11-22 (-13d) | 1d → 2d |  | 324.9d → 3d |  | baseline start 2024-11-09 → 2024-11-21; baseline finish 2024-11-11 → 2024-11-22 |
| 117 | Write scripts for Integration test | 2024-12-05 → 2024-11-21 (-14d) | 2024-12-05 → 2024-11-21 (-14d) |  |  | 324.9d → 3d |  | baseline start 2024-11-09 → 2024-11-21; baseline finish 2024-11-11 → 2024-11-21 |
| 118 | **Master data** | 2024-11-21 → 2024-10-21 (-31d) | 2024-12-03 → 2024-11-22 (-11d) | 11d → 23d |  | 347.9d → 52d |  | baseline start 2024-10-22 → 2024-10-15; baseline finish 2024-11-07 → 2024-11-18 |
| 119 | Receipt Master Data from NL | 2024-11-21 → 2024-10-21 (-31d) | 2024-11-29 → 2024-11-19 (-10d) | 8d → 20d |  | 347.9d → 52d | 47FS+10d → 47 | was named Receipt Master Data from PA; constraint finish no earlier than 2024-11-29 → none; baseline start 2024-10-22 → 2024-10-15; baseline finish 2024-11-04 → 2024-11-13 |
| 120 | Upload Master data in QAS | 2024-11-30 → 2024-11-20 (-10d) | 2024-12-03 → 2024-11-22 (-11d) |  |  | 347.9d → 52d |  | baseline start 2024-11-05 → 2024-11-14; baseline finish 2024-11-07 → 2024-11-18 |
| 121 | **Identity and Access Management Planning and Design** | 2024-11-15 → 2024-10-25 (-21d) | 2024-11-26 → 2024-11-25 (-1d) | 10d → 20d |  | 338.9d → 7d |  | baseline start 2024-10-12 → 2024-10-17; baseline finish 2024-11-06 → 2024-11-15 |
| 122 | Finalize list of users | 2024-11-15 → 2024-10-25 (-21d) | 2024-11-20 → 2024-11-18 (-2d) | 5d → 15d |  | 338.9d → 7d |  | constraint finish no earlier than 2024-11-20 → none; baseline start 2024-10-12 → 2024-10-17; baseline finish 2024-10-29 → 2024-11-08 |
| 123 | Provide & Check roles and authorization | 2024-11-21 → 2024-11-19 (-2d) | 2024-11-26 → 2024-11-25 (-1d) |  |  | 338.9d → 7d |  | baseline start 2024-10-30 → 2024-11-11; baseline finish 2024-11-06 → 2024-11-15 |
| 124 | **Conduct System integration test** | 2024-12-09 → 2024-11-22 (-17d) | 2024-12-30 → 2024-12-11 (-19d) | 18d → 14d |  | 322.9d → 3d |  | baseline start 2024-11-12 → 2024-11-22; baseline finish 2024-12-04 → 2024-12-11 |
| 125 | Perform Integration testing by Consultant | 2024-12-09 → 2024-11-22 (-17d) | 2024-12-14 → 2024-11-29 (-15d) |  |  | 322.9d → 3d |  | constraint start no earlier than 2024-12-09 → none; baseline start 2024-11-12 → 2024-11-22; baseline finish 2024-11-19 → 2024-11-29 |
| 126 | Perform User Acceptance test - CTM | 2024-12-16 → 2024-12-02 (-14d) | 2024-12-27 → 2024-12-09 (-18d) | 10d → 6d |  | 322.9d → 3d |  | baseline start 2024-11-20 → 2024-12-02; baseline finish 2024-11-30 → 2024-12-09 |
| 127 | Resolving the issues, if any | 2024-12-16 → 2024-12-02 (-14d) | 2024-12-27 → 2024-12-09 (-18d) | 10d → 6d |  | 322.9d → 3d |  | baseline start 2024-11-20 → 2024-12-02; baseline finish 2024-11-30 → 2024-12-09 |
| 128 | Retesting of scenarios | 2024-12-28 → 2024-12-10 (-18d) | 2024-12-30 → 2024-12-11 (-19d) |  |  | 322.9d → 36d |  | baseline start 2024-12-02 → 2024-12-10; baseline finish 2024-12-04 → 2024-12-11 |
| 129 | UAT (by CTM) signoff | 2024-12-30 → 2024-12-11 (-19d) | 2024-12-30 → 2024-12-11 (-19d) |  |  | 322.9d → 36d |  | baseline start 2024-12-04 → 2024-12-11; baseline finish 2024-12-04 → 2024-12-11 |
| 130 | **ABAP Development - SIT Critical** | 2024-11-20 → 2024-11-06 A (-14d) | 2024-12-21 → 2024-12-18 (-3d) | 28d → 31d |  | 0d → 34d |  | baseline start 2024-10-26 → 2024-11-06; baseline finish 2024-12-03 → 2024-12-18 |
| 131 | Develop reports | 2024-11-20 → 2024-11-06 A (-14d) | 2024-12-14 → 2024-12-10 (-4d) | 22d → 25d |  | 0d → 26d |  | baseline start 2024-10-26 → 2024-11-06; baseline finish 2024-11-26 → 2024-12-10 |
| 132 | Testing by consultant | 2024-11-23 → 2024-11-11 (-12d) | 2024-12-18 → 2024-12-13 (-5d) | 22d → 25d |  | 331.9d → 34d |  | baseline start 2024-10-30 → 2024-11-11; baseline finish 2024-11-29 → 2024-12-13 |
| 133 | Testing by CTM | 2024-11-27 → 2024-11-14 (-13d) | 2024-12-21 → 2024-12-18 (-3d) | 22d → 25d |  | 331.9d → 34d |  | baseline start 2024-11-05 → 2024-11-14; baseline finish 2024-12-03 → 2024-12-18 |
| 134 | Sign off Development | 2024-12-21 → 2024-12-18 (-3d) | 2024-12-21 → 2024-12-18 (-3d) |  |  | 331.9d → 34d |  | baseline start 2024-12-03 → 2024-12-18; baseline finish 2024-12-03 → 2024-12-18 |
| 140 | **Cutover Strategy** | 2024-12-20 → 2024-12-10 (-10d) | 2024-12-20 → 2024-12-12 (-8d) | 1d → 3d |  | 4d → 3d |  | baseline start 2024-12-05 → 2024-12-10; baseline finish 2024-12-05 → 2024-12-12 |
| 141 | Discussion on cutover strategy | 2024-12-20 → 2024-12-10 (-10d) | 2024-12-20 → 2024-12-11 (-9d) | 1d → 2d |  | 4d → 3d | none → 127 | constraint start no earlier than 2024-12-20 → none; baseline start 2024-12-05 → 2024-12-10; baseline finish 2024-12-05 → 2024-12-11 |
| 142 | Cutover & data responsibility Plan | 2024-12-20 → 2024-12-12 (-8d) | 2024-12-20 → 2024-12-12 (-8d) |  |  | 4d → 3d | 141FF → 141 | baseline start 2024-12-05 → 2024-12-12; baseline finish 2024-12-05 → 2024-12-12 |
| 143 | Communication to Organisation for Cutover | 2024-12-20 → 2024-12-12 (-8d) | 2024-12-20 → 2024-12-12 (-8d) |  |  | 4d → 3d |  | baseline start 2024-12-05 → 2024-12-12; baseline finish 2024-12-05 → 2024-12-12 |
| 144 | **End user training plan** | 2024-12-12 → 2024-11-29 (-13d) | 2024-12-13 → 2024-12-02 (-11d) |  |  | 330.9d → 42d |  | baseline start 2024-11-16 → 2024-11-29; baseline finish 2024-11-18 → 2024-12-02 |
| 145 | Preparation of End User training plan | 2024-12-12 → 2024-11-29 (-13d) | 2024-12-13 → 2024-12-02 (-11d) |  |  | 330.9d → 42d |  | baseline start 2024-11-16 → 2024-11-29; baseline finish 2024-11-18 → 2024-12-02 |
| 146 | Communicate plan to NL | 2024-12-13 → 2024-12-02 (-11d) | 2024-12-13 → 2024-12-02 (-11d) |  |  | 330.9d → 42d |  | was named Communicate plan to PA; baseline start 2024-11-18 → 2024-12-02; baseline finish 2024-11-18 → 2024-12-02 |
| 147 | **Production System Request** | 2024-12-05 → 2024-10-25 (-41d) | 2024-12-06 → 2024-10-28 (-39d) |  |  | 342.9d → 67d |  | baseline start 2024-10-12 → 2024-10-17; baseline finish 2024-10-14 → 2024-10-18 |
| 148 | Request for Production System | 2024-12-05 → 2024-10-25 (-41d) | 2024-12-05 → 2024-10-25 (-41d) |  |  | 342.9d → 67d |  | constraint start no earlier than 2024-12-05 → none; baseline start 2024-10-12 → 2024-10-17; baseline finish 2024-10-12 → 2024-10-17 |
| 149 | Request Access to the SAP S/4HANA Cloud Release Assessment Tool. | 2024-12-06 → 2024-10-28 (-39d) | 2024-12-06 → 2024-10-28 (-39d) |  |  | 342.9d → 67d |  | baseline start 2024-10-14 → 2024-10-18; baseline finish 2024-10-14 → 2024-10-18 |

| ID | Task | Start | Finish | Duration | Total float | Predecessors | Other |
| --- | --- | --- | --- | --- | --- | --- | --- |
| 150 | **Production System Initial Access** | 2024-12-07 → 2024-10-29 (-39d) | 2024-12-09 → 2024-10-30 (-40d) |  | 342.9d → 67d |  | baseline start 2024-10-15 → 2024-10-21; baseline finish 2024-10-16 → 2024-10-22 |
| 151 | Receive Production System and Reset Password | 2024-12-07 → 2024-10-29 (-39d) | 2024-12-07 → 2024-10-29 (-39d) |  | 342.9d → 67d |  | baseline start 2024-10-15 → 2024-10-21; baseline finish 2024-10-15 → 2024-10-21 |
| 152 | Transport Initial Change Project from Q-System to P-System | 2024-12-09 → 2024-10-30 (-40d) | 2024-12-09 → 2024-10-30 (-40d) |  | 342.9d → 67d |  | baseline start 2024-10-16 → 2024-10-22; baseline finish 2024-10-16 → 2024-10-22 |
| 153 | Phase Closure & Signoff Phase deliverables | 2024-12-31 → 2024-12-12 (-19d) | 2024-12-31 → 2024-12-12 (-19d) |  | 324.9d → 38d |  | baseline start 2024-12-05 → 2024-12-12; baseline finish 2024-12-05 → 2024-12-12 |
| 154 | **Deliverables** | 2024-11-29 → 2024-11-11 (-18d) | 2024-12-30 → 2024-12-12 (-18d) | 26d → 24d | 325.9d → 38d |  | baseline start 2024-11-04 → 2024-11-13; baseline finish 2024-12-05 → 2024-12-12 |
| 155 | D: Test scripts | 2024-12-06 → 2024-11-22 (-14d) | 2024-12-06 → 2024-11-22 (-14d) |  | 344.9d → 52d |  | baseline start 2024-11-12 → 2024-11-22; baseline finish 2024-11-12 → 2024-11-22 |
| 156 | D: Unit test result document | 2024-11-29 → 2024-11-11 (-18d) | 2024-11-29 → 2024-11-11 (-18d) |  | 350.9d → 61d |  | baseline start 2024-11-04 → 2024-11-13; baseline finish 2024-11-04 → 2024-11-13 |
| 157 | D: Integration testing document | 2024-12-16 → 2024-12-02 (-14d) | 2024-12-16 → 2024-12-02 (-14d) |  | 336.9d → 46d |  | baseline start 2024-11-20 → 2024-12-02; baseline finish 2024-11-20 → 2024-12-02 |
| 158 | D: User Acceptance testing document | 2024-12-30 → 2024-12-11 (-19d) | 2024-12-30 → 2024-12-11 (-19d) |  | 325.9d → 39d |  | baseline start 2024-12-04 → 2024-12-11; baseline finish 2024-12-04 → 2024-12-11 |
| 159 | D: Final master data templates | 2024-12-20 → 2024-12-12 (-8d) | 2024-12-20 → 2024-12-12 (-8d) |  | 332.9d → 38d |  | baseline start 2024-12-05 → 2024-12-12; baseline finish 2024-12-05 → 2024-12-12 |
| 160 | D: Data migration strategy document | 2024-12-20 → 2024-12-12 (-8d) | 2024-12-20 → 2024-12-12 (-8d) |  | 332.9d → 38d |  | baseline start 2024-12-05 → 2024-12-12; baseline finish 2024-12-05 → 2024-12-12 |
| 161 | **Deploy** | 2024-12-09 → 2024-10-21 (-49d) | 2025-01-15 → 2025-01-02 (-13d) | 31.9d → 51d | 6d → 0d |  | baseline start 2024-11-19 → 2024-10-15; baseline finish 2025-01-07 → 2024-12-31 |
| 162 | **ABAP Developments Pre Go Live** | 2024-12-16 → 2024-12-02 (-14d) | 2025-01-14 → 2024-12-31 (-14d) | 25d → 21d | 0d → 26d |  | baseline start 2024-11-27 → 2024-12-02; baseline finish 2025-01-06 → 2024-12-31 |
| 163 | Develop reports | 2024-12-16 → 2024-12-02 (-14d) | 2025-01-08 → 2024-12-20 (-19d) | 20d → 15d | 0d → 26d | 131 → 131FS-7d | baseline start 2024-11-27 → 2024-12-02; baseline finish 2024-12-28 → 2024-12-20 |
| 164 | Testing by consultant | 2024-12-19 → 2024-12-05 (-14d) | 2025-01-09 → 2024-12-26 (-14d) | 18d → 15d | 0d → 26d |  | baseline start 2024-11-30 → 2024-12-05; baseline finish 2025-01-01 → 2024-12-26 |
| 165 | Testing by CTM | 2024-12-21 → 2024-12-09 (-12d) | 2025-01-11 → 2024-12-30 (-12d) | 18d → 15d | 0d → 26d |  | baseline start 2024-12-03 → 2024-12-09; baseline finish 2025-01-03 → 2024-12-30 |
| 166 | Sign off Development | 2025-01-13 → 2024-12-31 (-13d) | 2025-01-14 → 2024-12-31 (-14d) | 2d → 1d | 0d → 26d |  | baseline start 2025-01-04 → 2024-12-31; baseline finish 2025-01-06 → 2024-12-31 |
| 167 | **End User Training** | 2024-12-21 → 2024-12-13 (-8d) | 2025-01-02 → 2024-12-27 (-6d) |  | 322.9d → 27d |  | baseline start 2024-12-06 → 2024-12-13; baseline finish 2024-12-17 → 2024-12-27 |
| 168 | Prepare end user training manual | 2024-12-21 → 2024-12-13 (-8d) | 2024-12-23 → 2024-12-16 (-7d) |  | 322.9d → 27d |  | baseline start 2024-12-06 → 2024-12-13; baseline finish 2024-12-07 → 2024-12-16 |
| 169 | Conduct end user training | 2024-12-24 → 2024-12-17 (-7d) | 2024-12-30 → 2024-12-23 (-7d) |  | 322.9d → 27d |  | baseline start 2024-12-09 → 2024-12-17; baseline finish 2024-12-13 → 2024-12-23 |
| 170 | Conduct training to HODs/Management | 2024-12-31 → 2024-12-24 (-7d) | 2025-01-02 → 2024-12-27 (-6d) |  | 322.9d → 28d |  | baseline start 2024-12-14 → 2024-12-24; baseline finish 2024-12-17 → 2024-12-27 |
| 171 | **Production Environment Preparation** | 2024-12-31 → 2024-12-12 (-19d) | 2025-01-02 → 2024-12-16 (-17d) |  | 322.9d → 36d |  | baseline start 2024-12-05 → 2024-12-12; baseline finish 2024-12-07 → 2024-12-16 |
| 172 | Transport final configurations | 2024-12-31 → 2024-12-12 (-19d) | 2024-12-31 → 2024-12-12 (-19d) |  | 322.9d → 36d |  | baseline start 2024-12-05 → 2024-12-12; baseline finish 2024-12-05 → 2024-12-12 |
| 173 | Maintain number ranges | 2025-01-01 → 2024-12-13 (-19d) | 2025-01-01 → 2024-12-13 (-19d) |  | 322.9d → 36d |  | baseline start 2024-12-06 → 2024-12-13; baseline finish 2024-12-06 → 2024-12-13 |
| 174 | Maintain client specific data | 2025-01-02 → 2024-12-16 (-17d) | 2025-01-02 → 2024-12-16 (-17d) |  | 322.9d → 36d |  | baseline start 2024-12-07 → 2024-12-16; baseline finish 2024-12-07 → 2024-12-16 |
| 175 | **User creation** | 2024-12-14 → 2024-12-03 (-11d) | 2024-12-23 → 2024-12-30 (+7d) | 8d → 19d | 330.9d → 27d |  | baseline start 2024-11-19 → 2024-12-03; baseline finish 2024-12-18 → 2024-12-30 |
| 176 | Finalize list of users for production enviornment | 2024-12-14 → 2024-12-03 (-11d) | 2024-12-16 → 2024-12-04 (-12d) |  | 330.9d → 42d |  | baseline start 2024-11-19 → 2024-12-03; baseline finish 2024-11-20 → 2024-12-04 |
| 177 | Finalise Authorization Matrix | 2024-12-17 → 2024-12-05 (-12d) | 2024-12-18 → 2024-12-06 (-12d) |  | 330.9d → 42d |  | baseline start 2024-11-21 → 2024-12-05; baseline finish 2024-11-22 → 2024-12-06 |
| 178 | Check roles and authorization | 2024-12-19 → 2024-12-24 (+5d) | 2024-12-23 → 2024-12-30 (+7d) |  | 330.9d → 27d | 177 → 169 | baseline start 2024-12-14 → 2024-12-24; baseline finish 2024-12-18 → 2024-12-30 |
| 179 | **Data preparation and upload** | 2024-12-09 → 2024-10-21 (-49d) | 2025-01-09 → 2024-12-31 (-9d) | 27d → 49d | 14d → 0d |  | baseline start 2024-11-28 → 2024-10-15; baseline finish 2025-01-06 → 2024-12-26 |
| 180 | Receipt of master data | 2024-12-09 → 2024-10-21 (-49d) | 2024-12-14 → 2024-12-17 (+3d) | 6d → 40d | 14d → 0d | 47FS+38d → 47 | baseline start 2024-11-28 → 2024-10-15; baseline finish 2024-12-20 → 2024-12-11 |
| 181 | Validate & cleanse master data | 2024-12-16 → 2024-12-18 (+2d) | 2024-12-16 → 2024-12-19 (+3d) | 1d → 2d | 14d → 0d |  | baseline start 2024-12-21 → 2024-12-12; baseline finish 2024-12-21 → 2024-12-13 |
| 182 | Upload master data in Production | 2024-12-17 → 2024-12-20 (+3d) | 2024-12-20 → 2024-12-26 (+6d) |  | 14d → 0d |  | baseline start 2024-12-23 → 2024-12-16; baseline finish 2024-12-27 → 2024-12-19 |
| 183 | Confirm uploaded master data | 2024-12-21 → 2024-12-27 (+6d) | 2024-12-21 → 2024-12-27 (+6d) |  | 331.9d → 28d |  | baseline start 2024-12-28 → 2024-12-20; baseline finish 2024-12-28 → 2024-12-20 |
| 184 | Receipt of cutover data | 2024-12-21 → 2024-12-13 (-8d) | 2025-01-02 → 2024-12-20 (-13d) | 10d → 6d | 4d → 3d |  | baseline start 2024-12-06 → 2024-12-13; baseline finish 2024-12-30 → 2024-12-20 |
| 185 | Validate & cleanse cutover data | 2025-01-03 → 2024-12-13 (-21d) | 2025-01-09 → 2024-12-20 (-20d) |  | 316.9d → 32d | 184 → 143 | baseline start 2024-12-31 → 2024-12-13; baseline finish 2025-01-06 → 2024-12-20 |
| 186 | Upload cutover data in production | 2025-01-03 → 2024-12-27 (-7d) | 2025-01-09 → 2024-12-31 (-9d) | 6d → 3d | 4d → 0d |  | baseline start 2024-12-31 → 2024-12-23; baseline finish 2025-01-06 → 2024-12-26 |
| 187 | Check and validate uploaded data | 2025-01-09 → 2024-12-31 (-9d) | 2025-01-09 → 2024-12-31 (-9d) |  | 4d → 0d |  | baseline start 2025-01-06 → 2024-12-26; baseline finish 2025-01-06 → 2024-12-26 |
| 188 | **Deliverables** | 2024-12-16 → 2024-12-05 (-11d) | 2024-12-27 → 2024-12-31 (+4d) | 10d → 18d | 327.9d → 26d |  | baseline start 2024-11-21 → 2024-12-05; baseline finish 2024-12-31 → 2024-12-24 |
| 189 | D: End user training manual | 2024-12-24 → 2024-12-17 (-7d) | 2024-12-27 → 2024-12-19 (-8d) |  | 327.9d → 33d |  | baseline start 2024-12-09 → 2024-12-17; baseline finish 2024-12-11 → 2024-12-19 |
| 190 | D: Data migration plan & checklist | 2024-12-16 → 2024-12-18 (+2d) | 2024-12-18 → 2024-12-20 (+2d) |  | 334.9d → 32d |  | baseline start 2024-12-21 → 2024-12-12; baseline finish 2024-12-24 → 2024-12-16 |
| 191 | D: Master data upload programs | 2024-12-21 → 2024-12-27 (+6d) | 2024-12-24 → 2024-12-31 (+7d) |  | 329.9d → 26d |  | baseline start 2024-12-28 → 2024-12-20; baseline finish 2024-12-31 → 2024-12-24 |
| 192 | D: Sample data upload validation | 2024-12-21 → 2024-12-27 (+6d) | 2024-12-21 → 2024-12-27 (+6d) |  | 331.9d → 28d |  | baseline start 2024-12-28 → 2024-12-20; baseline finish 2024-12-28 → 2024-12-20 |
| 193 | D: Final SAP Authorization matrix | 2024-12-17 → 2024-12-05 (-12d) | 2024-12-17 → 2024-12-05 (-12d) |  | 335.9d → 43d |  | baseline start 2024-11-21 → 2024-12-05; baseline finish 2024-11-21 → 2024-12-05 |
| 194 | **Phase Closure & Sign Off Phase Deliverables** | 2025-01-15 → 2025-01-01 (-14d) | 2025-01-15 → 2025-01-02 (-13d) | 0.9d → 2d |  |  | baseline start 2025-01-07 → 2024-12-27; baseline finish 2025-01-07 → 2024-12-30 |
| 195 | Deploy signoff | 2025-01-15 → 2025-01-01 (-14d) | 2025-01-15 → 2025-01-01 (-14d) | 0.9d → 1d |  | 187, 166 → 187 | baseline start 2025-01-07 → 2024-12-27; baseline finish 2025-01-07 → 2024-12-27 |
| 196 | Completion of Final Preparation (Deploy) Phase | 2025-01-15 → 2025-01-02 (-13d) | 2025-01-15 → 2025-01-02 (-13d) | 0.9d → 1d |  | 195FF → 195 | baseline start 2025-01-07 → 2024-12-30; baseline finish 2025-01-07 → 2024-12-30 |
| 197 | Go Live | 2025-01-15 → 2025-01-03 (-12d) | 2025-01-15 → 2025-01-03 (-12d) | 0.1d → 1d |  | 196FF → 196 | baseline start 2025-01-08 → 2024-12-31; baseline finish 2025-01-08 → 2024-12-31 |
| 198 | **Stabilization** | 2025-01-15 → 2025-01-06 (-9d) | 2025-02-15 → 2025-02-05 (-10d) | 27d → 23d |  |  | baseline start 2025-01-09 → 2025-01-01; baseline finish 2025-02-08 → 2025-01-31 |
| 199 | Stabilization (Post Go live Support) | 2025-01-15 → 2025-01-06 (-9d) | 2025-02-15 → 2025-02-05 (-10d) | 27d → 23d |  |  | was named Stabilization; baseline start 2025-01-09 → 2025-01-01; baseline finish 2025-02-08 → 2025-01-31 |
| 200 | **Deliverables** | 2025-01-15 → 2025-01-06 (-9d) | 2025-02-15 → 2025-02-05 (-10d) | 27d → 23d | 285d → 0d |  | baseline start 2025-01-09 → 2025-01-01; baseline finish 2025-02-08 → 2025-01-31 |
| 201 | D: Issue list with resolution status | 2025-01-15 → 2025-01-06 (-9d) | 2025-02-15 → 2025-02-05 (-10d) | 27d → 23d | 285d → 0d |  | baseline start 2025-01-09 → 2025-01-01; baseline finish 2025-02-08 → 2025-01-31 |
| 202 | D: Configuration documents | 2025-01-15 → 2025-01-06 (-9d) | 2025-02-15 → 2025-02-05 (-10d) | 27d → 23d | 285d → 0d |  | baseline start 2025-01-09 → 2025-01-01; baseline finish 2025-02-08 → 2025-01-31 |
| 203 | D: FS & TS | 2025-01-15 → 2025-01-06 (-9d) | 2025-02-15 → 2025-02-05 (-10d) | 27d → 23d | 285d → 0d |  | baseline start 2025-01-09 → 2025-01-01; baseline finish 2025-02-08 → 2025-01-31 |
| 204 | D: Cre team training document | 2025-01-15 → 2025-01-06 (-9d) | 2025-02-15 → 2025-02-05 (-10d) | 27d → 23d | 285d → 0d |  | baseline start 2025-01-09 → 2025-01-01; baseline finish 2025-02-08 → 2025-01-31 |

## Version 10 (data date 2022-10-13, saved 2024-12-10, file TASK_00631268_1_16122024104426.mpp)

Note of the change: Add project files.

Last finish 2025-02-05 → 2025-10-21 (+258d). Complete tasks 61 → 69.

Changed:

| ID | Task | Start | Finish | Duration | Complete | Total float |
| --- | --- | --- | --- | --- | --- | --- |
| 1 | **SAP Implementation at NEO LIV** |  | 2025-02-05 → 2025-10-21 (+258d) | 105d → 289d | 15% → 20% |  |
| 2 | **Wave 1A: S4 HANA Implementation (Public Cloud)** |  | 2025-02-05 → 2025-10-21 (+258d) | 105d → 289d | 15% → 20% |  |
| 3 | **Implementation** |  | 2025-01-02 → 2025-10-21 (+292d) | 81d → 289d | 18% → 24% | 24d → 0d |
| 28 | **Explore** |  | 2024-11-07 → 2025-10-21 (+348d) | 40d → 287d | 63% → 67% | 63d → 0d |
| 34 | **Fit to Standard analysis documentation** |  | 2024-11-05 → 2025-10-21 A (+350d) | 30d → 279d | 89% → 100% | 65d → none |
| 37 | **Document and Maintain Business Process Flows** |  | 2024-10-21 → 2025-10-21 A (+365d) | 19d → 277d | 94% → 100% | 74d → none |
| 42 | BBP Signff | 2024-10-21 → 2025-10-21 A (+365d) | 2024-10-21 → 2025-10-21 A (+365d) |  | 0% → 100% | 78d → none |
| 43 | Document Configuration Values | 2024-10-21 → 2025-10-21 A (+365d) | 2024-10-22 → 2025-10-21 A (+364d) | 2d → 1d | 0% → 100% | 78d → none |
| 75 | **Realize** |  | 2024-12-18 → 2024-12-26 (+8d) | 41d → 46d | 9% → 20% | 34d → 213d |
| 79 | **Functional Specifications** |  | 2024-11-13 → 2024-12-07 A (+24d) | 11d → 28d | 50% → 100% | 59d → none |
| 80 | Prepare functional specfications |  | 2024-11-07 → 2024-12-07 A (+30d) | 4d → 25d | 0% → 100% | 63d → none |
| 88 | **Core team training & UT** |  | 2024-11-28 → 2024-11-29 A (+1d) | 12d → 13d | 25% → 100% | 42d → none |
| 91 | Conducting CTM Training (Module wise) | 2024-11-18 → 2024-11-21 A (+3d) | 2024-11-20 → 2024-11-29 A (+9d) | 3d → 7d | 0% → 100% | 3d → none |
| 92 | Unit Testing by Core team | 2024-11-21 → 2024-11-29 A (+8d) | 2024-11-28 → 2024-11-29 A (+1d) | 6d → 0d | 0% → 100% | 42d → none |
| 114 | **System Integration Test** |  | 2024-12-18 → 2024-12-26 (+8d) | 41d → 46d | 0% → 1% | 34d → 213d |
| 115 | **Integration test Plan** | 2024-10-21 A | 2024-11-25 → 2024-11-27 (+2d) | 24d → 26d | 0% → 2% | 11d → 233d |
| 116 | Identify scenerios for Integration test | 2024-11-21 → 2024-11-23 A (+2d) | 2024-11-22 → 2024-11-23 A (+1d) | 2d → 0d | 0% → 100% | 3d → none |
| 117 | Write scripts for Integration test | 2024-11-21 → 2024-11-27 A (+6d) | 2024-11-21 → 2024-11-27 A (+6d) |  | 0% → 100% | 3d → none |
| 124 | **Conduct System integration test** | 2024-11-22 → 2024-11-27 A (+5d) |  | 14d → 11d | 0% → 12% | 3d → 223d |
| 125 | Perform Integration testing by Consultant | 2024-11-22 → 2024-11-27 A (+5d) | 2024-11-29 → 2024-11-30 A (+1d) | 6d → 2d | 0% → 100% | 3d → none |
| 126 | Perform User Acceptance test - CTM | 2024-12-02 A |  |  |  | 3d → 225d |
| 127 | Resolving the issues, if any | 2024-12-02 A |  |  |  | 3d → 187d |
| 130 | **ABAP Development - SIT Critical** |  | 2024-12-18 → 2024-12-26 (+8d) | 31d → 36d |  | 34d → 213d |
| 132 | Testing by consultant | 2024-11-11 → 2024-11-17 A (+6d) | 2024-12-13 → 2024-12-20 (+7d) |  |  | 34d → 216d |
| 133 | Testing by CTM | 2024-11-14 → 2024-11-21 (+7d) | 2024-12-18 → 2024-12-26 (+8d) |  |  | 34d → 213d |
| 134 | Sign off Development | 2024-12-18 → 2024-12-26 (+8d) | 2024-12-18 → 2024-12-26 (+8d) |  |  | 34d → 213d |
| 155 | D: Test scripts | 2024-11-22 → 2024-11-28 (+6d) | 2024-11-22 → 2024-11-28 (+6d) |  |  | 52d → 232d |

## Version 11 (data date 2022-10-13, saved 2024-12-13, file TASK_00631275_1_13122024154418.mpp)

Note of the change: Add project files.

Last finish 2025-10-21 → 2026-04-03 (+164d). Complete tasks 69 → 61.

Added:

| ID | Task | Duration | Start | Finish | Predecessors | Constraint |
| --- | --- | --- | --- | --- | --- | --- |
| 49 | Integration with ASP/GSP | 1d | 2024-10-09 A | 2024-10-09 A | 40 |  |
| 50 | Integration with bank host to host (upto 3) | 1d | 2024-10-09 A | 2024-10-09 A | 40 | as late as possible |
| 51 | Integration with Primavera | 4d | 2024-10-11 A | 2024-10-25 A | 40 |  |
| 52 | Integration with third party payroll | 17d | 2024-10-11 A | 2024-11-12 A | 40 | finish no earlier than 2024-11-12 |
| 200 | One month extended support | 24d | 2025-03-06 | 2025-04-03 | 193 |  |
| 201 | **Phase 2: One Year AMC** | 261d | 2025-04-03 | 2026-04-03 |  |  |
| 202 | AMC Support | 261d | 2025-04-03 | 2026-04-03 | 200 | finish no earlier than 2026-03-09 |

Removed: 50 Integration with bank host to host (upto2); 51 Integration with HRMS (Payroll); 52 Integration with Cloud Steer CRM; 53 Integration with DMS; 135 Third Party Interface; 136 Development; 137 Testing by consultant; 138 Testing by CTM; 139 Sign off Development

Changed:

| ID | Task | Start | Finish | Duration | Complete | Total float | Predecessors | Other |
| --- | --- | --- | --- | --- | --- | --- | --- | --- |
| 1 | **SAP Implementation at PA** | 2024-09-05 A → 2024-09-02 A (-3d) | 2025-10-21 → 2026-04-03 (+164d) | 289d → 436.9d | 20% → 26% |  |  | was named SAP Implementation at NEO LIV; baseline start 2024-09-05 → 2024-09-02; baseline finish 2025-01-31 → 2026-03-09 |
| 2 | **Phase 1: S4 HANA Implementation (Public Cloud)** | 2024-09-05 A → 2024-09-02 A (-3d) | 2025-10-21 → 2025-04-03 (-201d) | 289d → 175.9d | 20% → 35% | 0d → 261d |  | was named Wave 1A: S4 HANA Implementation (Public Cloud); baseline start 2024-09-05 → 2024-09-02; baseline finish 2025-01-31 → 2025-03-08 |
| 3 | **Implementation** | 2024-09-05 A → 2024-09-02 A (-3d) | 2025-10-21 → 2025-02-03 (-260d) | 289d → 124.9d | 24% → 44% | 0d → 312d |  | baseline start 2024-09-05 → 2024-09-02; baseline finish 2024-12-31 → 2025-01-07 |
| 4 | **Prepare** | 2024-09-05 A → 2024-09-02 A (-3d) | 2024-09-23 A → 2024-09-10 A (-13d) | 12d → 7d |  |  |  | baseline start 2024-09-05 → 2024-09-02; baseline finish 2024-09-11 → 2024-09-10 |
| 5 | **Project Kick Off and On-Boarding** | 2024-09-05 A → 2024-09-02 A (-3d) | 2024-09-05 A → 2024-09-10 A (+5d) | 1d → 7d |  |  |  | baseline start 2024-09-05 → 2024-09-02; baseline finish 2024-09-05 → 2024-09-09 |
| 6 | On-board Project Team | 2024-09-05 A → 2024-09-02 A (-3d) | 2024-09-05 A → 2024-09-10 A (+5d) | 1d → 7d |  |  |  | constraint start no earlier than 2024-09-05 → finish no earlier than 2024-09-09; baseline start 2024-09-05 → 2024-09-02; baseline finish 2024-09-05 → 2024-09-09 |
| 7 | Conduct project kickoff |  |  |  |  |  | 6SS → 6SS+3d | was named Conduct Kickoff Workshop; constraint none → start no earlier than 2024-09-05 |
| 8 | **Project Plan** | 2024-09-05 A → 2024-09-02 A (-3d) | 2024-09-19 A → 2024-09-05 A (-14d) | 10d → 4d |  |  |  | baseline start 2024-09-05 → 2024-09-02; baseline finish 2024-09-11 → 2024-09-05 |
| 9 | Prepare & submit Initial project plan | 2024-09-05 A → 2024-09-02 A (-3d) | 2024-09-06 A → 2024-09-02 A (-4d) | 2d → 1d |  |  |  | baseline start 2024-09-05 → 2024-09-02; baseline finish 2024-09-06 → 2024-09-02 |
| 10 | Review project plan | 2024-09-09 A → 2024-09-03 A (-6d) | 2024-09-09 A → 2024-09-03 A (-6d) |  |  |  |  | baseline start 2024-09-09 → 2024-09-03; baseline finish 2024-09-09 → 2024-09-03 |
| 11 | Make necessary changes in the plan | 2024-09-10 A → 2024-09-04 A (-6d) | 2024-09-10 A → 2024-09-04 A (-6d) |  |  |  |  | baseline start 2024-09-10 → 2024-09-04; baseline finish 2024-09-10 → 2024-09-04 |
| 12 | Submit revised plan | 2024-09-10 A → 2024-09-04 A (-6d) | 2024-09-10 A → 2024-09-04 A (-6d) |  |  |  |  | baseline start 2024-09-10 → 2024-09-04; baseline finish 2024-09-10 → 2024-09-04 |
| 13 | Approval of project plan by PA | 2024-09-11 A → 2024-09-05 A (-6d) | 2024-09-19 A → 2024-09-05 A (-14d) | 6d → 1d |  |  |  | was named Approval of project plan by NL; baseline start 2024-09-11 → 2024-09-05; baseline finish 2024-09-11 → 2024-09-05 |
| 14 | **Project Governance** | 2024-09-09 A → 2024-09-06 A (-3d) |  | 1d → 2d |  |  |  |  |
| 15 | Establish Project Governance Mechanism | 2024-09-09 A → 2024-09-06 A (-3d) |  |  |  |  |  |  |
| 16 | Define Project Communications and Reporting | 2024-09-09 A → 2024-09-06 A (-3d) |  |  |  |  |  |  |
| 17 | **Project Standards, Infrastructure & Solution** |  | 2024-09-09 A → 2024-09-06 A (-3d) | 2d → 1d |  |  |  | baseline finish 2024-09-09 → 2024-09-06 |
| 18 | Set Up Project Team Logistics and Infrastructure |  | 2024-09-09 A → 2024-09-06 A (-3d) | 2d → 1d |  |  |  | baseline finish 2024-09-09 → 2024-09-06 |
| 19 | Create a Document Repository for the Implementation Project Team |  | 2024-09-09 A → 2024-09-06 A (-3d) | 2d → 1d |  |  |  | baseline finish 2024-09-09 → 2024-09-06 |
| 20 | **Fit-to-Standard Analysis Preparation** | 2024-09-10 A → 2024-09-09 A (-1d) | 2024-09-12 A → 2024-09-09 A (-3d) | 3d → 1d |  |  |  | baseline start 2024-09-10 → 2024-09-09; baseline finish 2024-09-10 → 2024-09-09 |
| 21 | Prepare for Fit-to-Standard Workshops | 2024-09-10 A → 2024-09-09 A (-1d) | 2024-09-12 A → 2024-09-09 A (-3d) | 3d → 1d |  |  |  | baseline start 2024-09-10 → 2024-09-09; baseline finish 2024-09-10 → 2024-09-09 |
| 22 | **Phase Closure and Sign-Off Phase Deliverables** | 2024-09-23 A → 2024-09-10 A (-13d) | 2024-09-23 A → 2024-09-10 A (-13d) |  |  |  |  | baseline start 2024-09-11 → 2024-09-10; baseline finish 2024-09-11 → 2024-09-10 |
| 23 | Prepare Phase Signoff | 2024-09-23 A → 2024-09-10 A (-13d) | 2024-09-23 A → 2024-09-10 A (-13d) | 1d → 0d |  |  |  | baseline start 2024-09-11 → 2024-09-10; baseline finish 2024-09-11 → 2024-09-10 |
| 24 | **Deliverables** | 2024-09-23 A → 2024-09-10 A (-13d) | 2024-09-23 A → 2024-09-10 A (-13d) |  |  |  |  | baseline start 2024-09-11 → 2024-09-10; baseline finish 2024-09-11 → 2024-09-10 |
| 25 | D: Baseline Project Plan | 2024-09-23 A → 2024-09-10 A (-13d) | 2024-09-23 A → 2024-09-10 A (-13d) |  |  |  |  | baseline start 2024-09-11 → 2024-09-10; baseline finish 2024-09-11 → 2024-09-10 |
| 26 | D: Project kickoff presentation | 2024-09-23 A → 2024-09-10 A (-13d) | 2024-09-23 A → 2024-09-10 A (-13d) |  |  |  |  | baseline start 2024-09-11 → 2024-09-10; baseline finish 2024-09-11 → 2024-09-10 |
| 27 | **Explore** | 2024-09-09 A → 2024-09-02 A (-7d) | 2025-10-21 → 2024-11-23 A (-332d) | 287d → 65d | 67% → 100% | 0d → none |  | baseline start 2024-09-09 → 2024-09-10; baseline finish 2024-10-16 → 2024-10-11 |
| 28 | **Requirement gathering** | 2024-09-09 A → 2024-09-02 A (-7d) | 2024-09-12 A → 2024-09-17 A (+5d) | 4d → 12d |  |  |  | baseline start 2024-09-09 → 2024-09-10; baseline finish 2024-09-12 → 2024-09-11 |
| 29 | Review AS IS document | 2024-09-09 A → 2024-09-02 A (-7d) | 2024-09-10 A → 2024-09-17 A (+7d) | 2d → 6d |  |  | 7SS+2d → 21 | baseline start 2024-09-09 → 2024-09-10; baseline finish 2024-09-10 → 2024-09-11 |
| 30 | Update AS IS document as per discussion | 2024-09-11 A → 2024-09-02 A (-9d) | 2024-09-12 A → 2024-09-17 A (+5d) | 2d → 12d |  |  | 29 → 29SS | baseline start 2024-09-11 → 2024-09-10; baseline finish 2024-09-12 → 2024-09-11 |
| 31 | **Fit-to-Standard analysis** | 2024-09-16 A → 2024-09-17 A (+1d) | 2024-09-19 A → 2024-09-27 A (+8d) | 3d → 9d |  |  |  | baseline start 2024-09-16 → 2024-09-12; baseline finish 2024-09-19 → 2024-09-16 |
| 32 | Conduct workshop for all modules | 2024-09-16 A → 2024-09-17 A (+1d) | 2024-09-19 A → 2024-09-27 A (+8d) | 3d → 8d |  |  | 30FS+1d → 30 | baseline start 2024-09-16 → 2024-09-12; baseline finish 2024-09-19 → 2024-09-16 |
| 33 | **Fit to Standard analysis documentation** | 2024-09-20 A → 2024-09-16 A (-4d) | 2025-10-21 A → 2024-11-23 A (-332d) | 279d → 55d |  |  |  | baseline start 2024-09-20 → 2024-09-17; baseline finish 2024-10-15 → 2024-10-11 |
| 34 | Document Initial Configuration Settings for SAP Central Business Configuration | 2024-09-20 A → 2024-09-16 A (-4d) | 2024-09-23 A → 2024-09-16 A (-7d) | 2d → 1d |  |  |  | baseline start 2024-09-20 → 2024-09-17; baseline finish 2024-09-23 → 2024-09-18 |
| 35 | Document Scope via SAP Central Business Configuration | 2024-09-24 A → 2024-09-17 A (-7d) | 2024-09-25 A → 2024-09-19 A (-6d) | 2d → 3d |  |  |  | baseline start 2024-09-24 → 2024-09-19; baseline finish 2024-09-25 → 2024-09-20 |
| 36 | **Document and Maintain Business Process Flows** | 2024-09-24 A → 2024-09-20 A (-4d) | 2025-10-21 A → 2024-11-07 A (-348d) | 277d → 37d |  |  |  | baseline start 2024-09-20 → 2024-09-17; baseline finish 2024-10-09 → 2024-10-04 |
| 37 | Prepare fit-to-standard Document and KDS | 2024-09-24 A → 2024-09-20 A (-4d) | 2024-09-28 A → 2024-10-01 A (+3d) | 4d → 2.5d |  |  |  | was named Prepare BBP Document and KDS; baseline start 2024-09-20 → 2024-09-17; baseline finish 2024-09-26 → 2024-09-23 |
| 38 | Submition of Fit-to-standard and KDS | 2024-09-30 A → 2024-09-23 A (-7d) | 2024-09-30 A → 2024-10-01 A (+1d) | 1d → 0d |  |  |  | was named Submition of BBP and KDS; baseline start 2024-09-27 → 2024-09-24; baseline finish 2024-09-27 → 2024-09-24 |
| 39 | Review of fit-to-standard & KDS by CTM | 2024-10-04 A → 2024-09-25 A (-9d) | 2024-10-14 A → 2024-10-02 A (-12d) | 7d → 0d |  |  |  | was named Review of BBP & KDS by CTM; baseline start 2024-09-30 → 2024-09-25; baseline finish 2024-10-07 → 2024-10-01 |
| 40 | Solution Walkthrough | 2024-10-15 A → 2024-10-03 A (-12d) | 2024-10-18 A → 2024-10-21 A (+3d) | 4d → 16d |  |  |  | was named BBP Walkthrough; constraint none → finish no earlier than 2024-10-21; baseline start 2024-10-08 → 2024-10-03; baseline finish 2024-10-08 → 2024-10-03 |
| 41 | Fit-to-Standard document Signoff | 2025-10-21 A → 2024-10-22 A (-364d) | 2025-10-21 A → 2024-11-07 A (-348d) | 1d → 13d |  |  |  | was named BBP Signff; constraint none → finish no earlier than 2024-11-04; baseline start 2024-10-09 → 2024-10-04; baseline finish 2024-10-09 → 2024-10-04 |
| 42 | Document Configuration Values | 2025-10-21 A → 2024-10-14 A (-372d) | 2025-10-21 A → 2024-11-23 A (-332d) | 1d → 27d |  |  |  | constraint none → finish no earlier than 2024-11-08; baseline start 2024-10-09 → 2024-10-04; baseline finish 2024-10-10 → 2024-10-05 |
| 43 | **Data migration requirements** | 2024-10-16 A → 2024-10-07 A (-9d) | 2024-10-18 A → 2024-10-22 A (+4d) | 3d → 14d |  |  |  | was named Document Master Data Requirements; baseline start 2024-10-11 → 2024-10-07; baseline finish 2024-10-14 → 2024-10-09 |
| 44 | Identify master data requirement | 2024-10-16 A → 2024-10-07 A (-9d) | 2024-10-17 A → 2024-10-07 A (-10d) |  |  |  |  | was named Identify masterdata requirement; baseline start 2024-10-11 → 2024-10-07; baseline finish 2024-10-11 → 2024-10-07 |
| 45 | Prepare and explain master data template | 2024-10-17 A → 2024-10-10 A (-7d) | 2024-10-17 A → 2024-10-22 A (+5d) | 1d → 11d |  |  | 44SS → 44 | was named Prepare and explain masterdata template; constraint none → as late as possible; baseline start 2024-10-11 → 2024-10-08; baseline finish 2024-10-11 → 2024-10-09 |
| 46 | Circulate master data template | 2024-10-18 A → 2024-10-10 A (-8d) | 2024-10-18 A → 2024-10-22 A (+4d) | 1d → 8d |  |  | 45 → 45FF | was named Circulate masterdata template; baseline start 2024-10-14 → 2024-10-09; baseline finish 2024-10-14 → 2024-10-09 |
| 47 | Confirm Backlog and prioritise (SIT/UAT, Golive, Post-Golive) | 2024-11-05 A → 2024-10-11 A (-25d) | 2024-11-05 A → 2024-11-12 A (+7d) | 1d → 10d |  |  |  | constraint none → as late as possible; baseline start 2024-10-15 → 2024-10-10; baseline finish 2024-10-15 → 2024-10-11 |
| 48 | **Integration Planning and Design** | 2024-10-21 A → 2024-10-09 A (-12d) | 2024-11-07 → 2024-11-12 A (+5d) | 12d → 28d | 0% → 100% | 247d → none |  | baseline start 2024-10-09 → 2024-10-04; baseline finish 2024-10-15 → 2024-10-09 |
| 53 | **Getting Started with your SAP Implementation** | 2024-09-26 → 2024-10-07 A (+11d) | 2024-10-04 → 2024-10-07 A (+3d) | 6d → 1d | 0% → 100% | 269d → none |  | baseline start 2024-09-26 → 2024-09-23; baseline finish 2024-10-04 → 2024-10-01 |
| 54 | Review Overview Documentation | 2024-09-26 → 2024-10-07 A (+11d) | 2024-09-27 → 2024-10-07 A (+10d) | 2d → 1d | 0% → 100% | 90d → none |  | baseline start 2024-09-26 → 2024-09-23; baseline finish 2024-09-27 → 2024-09-24 |
| 55 | Organize Provisioning Emails | 2024-09-30 → 2024-10-07 A (+7d) | 2024-10-01 → 2024-10-07 A (+6d) | 2d → 1d | 0% → 100% | 90d → none |  | baseline start 2024-09-30 → 2024-09-25; baseline finish 2024-10-01 → 2024-09-27 |
| 56 | Ensure Project Team Members Access to the SAP Support Portal, SAP Best Practices Explorer, and SAP Customer Communities | 2024-10-03 → 2024-10-07 A (+4d) | 2024-10-04 → 2024-10-07 A (+3d) | 2d → 1d | 0% → 100% | 90d → none |  | baseline start 2024-10-03 → 2024-09-30; baseline finish 2024-10-04 → 2024-10-01 |
| 57 | **SAP Cloud ALM Onboarding** | 2024-10-07 A → 2024-09-03 A (-34d) | 2024-10-09 A → 2024-09-13 A (-26d) | 3d → 9d |  |  |  | baseline start 2024-10-07 → 2024-10-03; baseline finish 2024-10-08 → 2024-10-04 |
| 58 | Request SAP Cloud ALM Tenant | 2024-10-07 A → 2024-09-03 A (-34d) | 2024-10-08 A → 2024-09-13 A (-25d) | 2d → 9d |  |  |  | baseline start 2024-10-07 → 2024-10-03; baseline finish 2024-10-07 → 2024-10-03 |
| 59 | Access SAP Cloud ALM and Create Users | 2024-10-08 A → 2024-09-13 A (-25d) | 2024-10-09 A → 2024-09-13 A (-26d) |  |  |  |  | baseline start 2024-10-08 → 2024-10-04; baseline finish 2024-10-08 → 2024-10-04 |
| 60 | **Initial System Access for Central Business Configuration** | 2024-10-15 A → 2024-09-03 A (-42d) | 2024-10-17 A → 2024-09-19 A (-28d) | 3d → 13d |  |  |  | baseline start 2024-10-09 → 2024-10-05; baseline finish 2024-10-11 → 2024-10-08 |
| 61 | Access the SAP Central Business Configuration | 2024-10-15 A → 2024-09-03 A (-42d) | 2024-10-15 A → 2024-09-10 A (-35d) | 1d → 6d |  |  |  | baseline start 2024-10-09 → 2024-10-05; baseline finish 2024-10-09 → 2024-10-05 |
| 62 | Set Up Starter Project in SAP Central Business Configuration | 2024-10-16 A → 2024-09-11 A (-35d) | 2024-10-16 A → 2024-09-11 A (-35d) |  |  |  |  | baseline start 2024-10-10 → 2024-10-07; baseline finish 2024-10-10 → 2024-10-07 |
| 63 | Set Up SAP Central Business Configuration Integration | 2024-10-17 A → 2024-09-13 A (-34d) | 2024-10-17 A → 2024-09-19 A (-28d) | 1d → 5d |  |  |  | baseline start 2024-10-11 → 2024-10-08; baseline finish 2024-10-11 → 2024-10-08 |
| 64 | **Initial System Access for SAP S/4HANA Cloud** | 2024-10-17 A → 2024-09-03 A (-44d) | 2024-10-18 A → 2024-09-20 A (-28d) | 2d → 14d |  |  |  | baseline start 2024-10-14 → 2024-09-12; baseline finish 2024-10-16 → 2024-09-16 |
| 65 | Access Starter System and Reset Password | 2024-10-17 A → 2024-09-03 A (-44d) | 2024-10-18 A → 2024-09-10 A (-38d) | 1d → 6d |  |  | 63 → 29 | baseline start 2024-10-14 → 2024-09-12; baseline finish 2024-10-14 → 2024-09-12 |
| 66 | Create Users in the Starter System | 2024-10-17 A → 2024-09-10 A (-37d) | 2024-10-18 A → 2024-09-11 A (-37d) | 0d → 1d |  |  |  | baseline start 2024-10-15 → 2024-09-13; baseline finish 2024-10-15 → 2024-09-13 |
| 67 | Self-Activation of Project Team Members in the Identity Authentication Service | 2024-10-18 A → 2024-09-20 A (-28d) | 2024-10-18 A → 2024-09-20 A (-28d) | 0d → 1d |  |  |  | baseline start 2024-10-16 → 2024-09-16; baseline finish 2024-10-16 → 2024-09-16 |
| 68 | **Phase Closure and Sign-Off Phase Deliverables** | 2024-10-25 A → 2024-11-12 A (+18d) | 2024-10-25 A → 2024-11-13 A (+19d) | 0d → 2d |  |  |  | baseline start 2024-10-16 → 2024-10-11; baseline finish 2024-10-16 → 2024-10-11 |
| 69 | Explore Phase Signoff | 2024-10-25 A → 2024-11-12 A (+18d) | 2024-10-25 A → 2024-11-13 A (+19d) | 0d → 2d |  |  | Integration with DMS → 47FF | baseline start 2024-10-16 → 2024-10-11; baseline finish 2024-10-16 → 2024-10-11 |
| 70 | **Deliverables** | 2024-10-25 A → 2024-09-27 A (-28d) | 2024-10-25 A → 2024-10-21 A (-4d) | 1d → 19d |  |  |  | baseline start 2024-10-10 → 2024-10-05; baseline finish 2024-10-15 → 2024-10-10 |
| 71 | Fit to Standard documents with Process flow diagram, Gap Analysis | 2024-10-25 A → 2024-10-21 A (-4d) | 2024-10-25 A → 2024-10-21 A (-4d) |  |  |  |  | baseline start 2024-10-10 → 2024-10-05; baseline finish 2024-10-10 → 2024-10-05 |
| 72 | Core team training/ presentation | 2024-10-25 A → 2024-09-27 A (-28d) | 2024-10-25 A → 2024-09-27 A (-28d) |  |  |  |  | baseline start 2024-10-10 → 2024-10-05; baseline finish 2024-10-10 → 2024-10-05 |
| 73 | Initial Master data templates | 2024-10-25 A → 2024-10-18 A (-7d) | 2024-10-25 A → 2024-10-18 A (-7d) | 1d → 0d |  |  |  | baseline start 2024-10-15 → 2024-10-10; baseline finish 2024-10-15 → 2024-10-10 |
| 74 | **Realize** | 2024-10-21 A → 2024-10-29 A (+8d) | 2024-12-26 → 2025-01-11 (+16d) | 46d → 62d | 20% → 30% | 213d → 330.9d |  | baseline start 2024-10-15 → 2024-10-12; baseline finish 2024-12-18 → 2024-12-05 |

| ID | Task | Start | Finish | Duration | Complete | Total float | Predecessors | Other |
| --- | --- | --- | --- | --- | --- | --- | --- | --- |
| 75 | **Requirement gathering sheet (RGS)** | 2024-10-27 A → 2024-10-29 A (+2d) | 2024-10-30 A → 2024-11-28 A (+29d) | 3d → 25d |  |  |  | baseline start 2024-10-16 → 2024-10-12; baseline finish 2024-10-21 → 2024-10-16 |
| 76 | Prepare RGS | 2024-10-27 A → 2024-10-29 A (+2d) | 2024-10-30 A → 2024-11-27 A (+28d) | 3d → 12.9d |  |  | Integration with DMS → 47 | constraint none → finish no earlier than 2024-11-27; baseline start 2024-10-16 → 2024-10-12; baseline finish 2024-10-18 → 2024-10-15 |
| 77 | Submit RGS |  | 2024-10-30 A → 2024-11-28 A (+29d) | 0d → 1.25d |  |  |  | constraint none → finish no earlier than 2024-11-18; baseline start 2024-10-21 → 2024-10-16; baseline finish 2024-10-21 → 2024-10-16 |
| 78 | **Functional Specifications** | 2024-10-26 A → 2024-11-19 A (+24d) | 2024-12-07 A → 2024-12-20 (+13d) |  | 100% → 44% | none → 348.9d |  | baseline start 2024-10-22 → 2024-10-16; baseline finish 2024-10-29 → 2024-10-22 |
| 79 | Prepare functional specfications | 2024-10-31 A → 2024-11-25 A (+25d) | 2024-12-07 A → 2024-12-20 (+13d) | 25d → 19d | 100% → 38% | none → 348.9d |  | constraint none → finish no earlier than 2024-12-20; baseline start 2024-10-22 → 2024-10-16; baseline finish 2024-10-25 → 2024-10-19 |
| 80 | Finalize development tracker | 2024-10-26 A → 2024-11-19 A (+24d) | 2024-11-13 A → 2024-11-20 A (+7d) | 4d → 2d |  |  | 79 → none | constraint none → start no earlier than 2024-11-19; baseline start 2024-10-28 → 2024-10-21; baseline finish 2024-10-29 → 2024-10-22 |
| 81 | **Solution Configuration** | 2024-10-25 A → 2024-10-29 A (+4d) | 2024-11-08 A → 2024-12-03 (+25d) | 9d → 29d | 100% → 98% | none → 362.9d |  | baseline start 2024-10-28 → 2024-10-21; baseline finish 2024-11-12 → 2024-11-02 |
| 82 | Configure Processes and Functions in golden master (100) | 2024-10-25 A → 2024-10-29 A (+4d) | 2024-10-31 A → 2024-11-19 A (+19d) | 0d → 17d |  |  | 79 → none | constraint none → start no earlier than 2024-11-19; baseline start 2024-10-28 → 2024-10-21; baseline finish 2024-11-05 → 2024-10-25 |
| 83 | Transfer of Configuration to Dev testing | 2024-10-31 A → 2024-11-19 A (+19d) | 2024-10-31 A → 2024-11-20 A (+20d) | 0d → 2d |  |  |  | constraint none → start no earlier than 2024-11-21; baseline start 2024-11-06 → 2024-10-26; baseline finish 2024-11-06 → 2024-10-26 |
| 84 | Unit testing-1 (Consultant) | 2024-10-31 A → 2024-11-20 A (+20d) | 2024-11-04 A → 2024-12-02 A (+28d) | 1d → 10d |  |  |  | constraint none → finish no earlier than 2024-11-27; baseline start 2024-11-07 → 2024-10-28; baseline finish 2024-11-11 → 2024-10-30 |
| 85 | Document and Resolve Issues | 2024-11-04 A → 2024-11-20 A (+16d) | 2024-11-07 A → 2024-12-02 A (+25d) | 4d → 11d |  |  |  | constraint none → finish no earlier than 2024-11-27; baseline start 2024-11-07 → 2024-10-28; baseline finish 2024-11-11 → 2024-10-30 |
| 86 | Submit Unit Testing result & completion of baseline config | 2024-11-08 A → 2024-12-03 A (+25d) | 2024-11-08 A → 2024-12-03 (+25d) |  | 100% → 0% | none → 362.9d |  | baseline start 2024-11-12 → 2024-11-02; baseline finish 2024-11-12 → 2024-11-02 |
| 87 | **Core team training & UT** | 2024-11-13 A → 2024-11-28 A (+15d) | 2024-11-29 A → 2024-12-10 (+11d) | 13d → 11d | 100% → 87% | none → 347.9d |  | baseline start 2024-11-13 → 2024-11-02; baseline finish 2024-11-28 → 2024-11-15 |
| 88 | Plan for CTM training | 2024-11-13 A → 2024-11-28 A (+15d) | 2024-11-13 A → 2024-11-28 A (+15d) |  |  |  | 86 → 86FF | constraint none → start no earlier than 2024-11-26; baseline start 2024-11-13 → 2024-11-02; baseline finish 2024-11-13 → 2024-11-02 |
| 89 | Making necessery training arrangement - PPT + tutorial | 2024-11-14 A → 2024-11-29 A (+15d) | 2024-11-16 A → 2024-12-02 A (+16d) | 2d → 3d |  |  |  | baseline start 2024-11-14 → 2024-11-04; baseline finish 2024-11-15 → 2024-11-05 |
| 90 | Conducting CTM Training (Module wise) | 2024-11-21 A → 2024-12-02 A (+11d) | 2024-11-29 A → 2024-12-09 (+10d) | 7d → 6d | 100% → 81% | none → 0.53d |  | constraint none → finish no earlier than 2024-12-09; baseline start 2024-11-18 → 2024-11-06; baseline finish 2024-11-20 → 2024-11-08 |
| 91 | Unit Testing by Core team | 2024-11-29 A → 2024-12-03 A (+4d) | 2024-11-29 A → 2024-12-10 (+11d) | 0d → 2.5d | 100% → 81% | none → 347.9d |  | constraint none → finish no earlier than 2024-12-10; baseline start 2024-11-21 → 2024-11-09; baseline finish 2024-11-28 → 2024-11-15 |
| 92 | **Quality System Request / Initial Setup** | 2024-11-11 A → 2024-11-18 A (+7d) | 2024-11-13 A → 2024-11-18 A (+5d) | 3d → 1d |  |  |  | baseline start 2024-10-17 → 2024-10-12; baseline finish 2024-10-17 → 2024-10-12 |
| 93 | Execute Initial Setup of the Quality System via SAP Central Business Configuration | 2024-11-11 A → 2024-11-18 A (+7d) | 2024-11-13 A → 2024-11-18 A (+5d) | 3d → 1d |  |  |  | baseline start 2024-10-17 → 2024-10-12; baseline finish 2024-10-17 → 2024-10-12 |
| 94 | Request Quality System via Manage Your Solution App | 2024-11-13 A → 2024-11-18 A (+5d) | 2024-11-13 A → 2024-11-18 A (+5d) |  |  |  |  | baseline start 2024-10-17 → 2024-10-12; baseline finish 2024-10-17 → 2024-10-12 |
| 95 | **Quality System Initial Access** | 2024-10-25 A → 2024-11-18 A (+24d) | 2024-11-14 → 2024-12-20 (+36d) | 13d → 29d | 22% → 33% | 242d → 348.9d |  | baseline start 2024-10-17 → 2024-10-12; baseline finish 2024-10-25 → 2024-10-19 |
| 96 | Receive Quality System and Reset Password | 2024-11-13 A → 2024-11-18 A (+5d) | 2024-11-13 A → 2024-11-21 A (+8d) | 0d → 4d |  |  |  | baseline start 2024-10-18 → 2024-10-14; baseline finish 2024-10-18 → 2024-10-14 |
| 97 | Create Preset Configuration User in the Quality System via Manage Your Solution App | 2024-11-13 A → 2024-12-17 (+34d) | 2024-11-13 A → 2024-12-17 (+34d) |  | 100% → 0% | none → 350.9d |  | constraint none → start no earlier than 2024-12-17; baseline start 2024-10-21 → 2024-10-15; baseline finish 2024-10-21 → 2024-10-15 |
| 98 | Define Preset Parameters and Trigger System Activation via Manage Your Solution App | 2024-11-14 A → 2024-12-18 (+34d) | 2024-11-14 A → 2024-12-18 (+34d) |  | 100% → 0% | none → 350.9d |  | baseline start 2024-10-22 → 2024-10-16; baseline finish 2024-10-22 → 2024-10-16 |
| 99 | **Create Users in the Quality Server** | 2024-10-25 → 2024-11-28 A (+34d) | 2024-11-05 → 2024-12-19 (+44d) | 6d → 19d |  | 248d → 348.9d |  | baseline start 2024-10-17 → 2024-10-12; baseline finish 2024-10-24 → 2024-10-18 |
| 100 | **Finalize list of users for QAS** | 2024-10-25 → 2024-11-28 A (+34d) | 2024-11-05 → 2024-12-19 (+44d) | 6d → 19d |  | 248d → 348.9d |  | baseline start 2024-10-17 → 2024-10-12; baseline finish 2024-10-24 → 2024-10-18 |
| 101 | **Provide user authorization** | 2024-10-25 → 2024-11-28 A (+34d) | 2024-11-05 → 2024-12-19 (+44d) | 6d → 19d |  | 248d → 348.9d |  | baseline start 2024-10-17 → 2024-10-12; baseline finish 2024-10-24 → 2024-10-18 |
| 102 | Finalize user authorization | 2024-10-25 → 2024-11-28 A (+34d) | 2024-10-28 → 2024-11-28 (+31d) | 2d → 1d |  | 64d → 362.9d |  | baseline start 2024-10-17 → 2024-10-12; baseline finish 2024-10-18 → 2024-10-14 |
| 103 | Create roles and authorization | 2024-10-29 → 2024-12-16 (+48d) | 2024-10-29 → 2024-12-16 (+48d) |  |  | 64d → 348.9d |  | constraint none → start no earlier than 2024-12-16; baseline start 2024-10-21 → 2024-10-15; baseline finish 2024-10-21 → 2024-10-15 |
| 104 | Testing of roles and authorization | 2024-10-30 → 2024-12-17 (+48d) | 2024-11-04 → 2024-12-18 (+44d) |  |  | 64d → 348.9d |  | baseline start 2024-10-22 → 2024-10-16; baseline finish 2024-10-23 → 2024-10-17 |
| 105 | Deployment of roles to users | 2024-11-05 → 2024-12-19 (+44d) | 2024-11-05 → 2024-12-19 (+44d) |  |  | 64d → 348.9d |  | baseline start 2024-10-24 → 2024-10-18; baseline finish 2024-10-24 → 2024-10-18 |
| 106 | Self-Activation of Project Team Members in the Identity Authentication Service | 2024-11-06 → 2024-12-20 (+44d) | 2024-11-06 → 2024-12-20 (+44d) |  |  | 64d → 348.9d |  | baseline start 2024-10-25 → 2024-10-19; baseline finish 2024-10-25 → 2024-10-19 |
| 107 | **Required Configuration Before System Use - SAP S/4HANA Cloud** | 2024-11-14 A → 2024-12-17 (+33d) | 2024-11-14 A → 2024-12-17 (+33d) |  | 100% → 0% | none → 348.9d |  | baseline start 2024-10-21 → 2024-10-15; baseline finish 2024-10-21 → 2024-10-15 |
| 108 | Configure system | 2024-11-14 A → 2024-12-17 (+33d) | 2024-11-14 A → 2024-12-17 (+33d) |  | 100% → 0% | none → 348.9d |  | constraint none → start no earlier than 2024-12-17; baseline start 2024-10-21 → 2024-10-15; baseline finish 2024-10-21 → 2024-10-15 |
| 109 | **Standard Integration Setup in the Quality/Test System** | 2024-11-14 A → 2024-12-18 (+34d) | 2024-11-15 A → 2024-12-20 (+35d) | 2d → 3d | 100% → 0% | none → 348.9d |  | baseline start 2024-10-22 → 2024-10-16; baseline finish 2024-10-24 → 2024-10-18 |
| 110 | Set Up Integration using Cloud Integration Automation Service (CIAS) | 2024-11-14 A → 2024-12-18 (+34d) | 2024-11-14 A → 2024-12-18 (+34d) |  | 100% → 0% | none → 348.9d |  | baseline start 2024-10-22 → 2024-10-16; baseline finish 2024-10-22 → 2024-10-16 |
| 111 | Set Up Employee Central Integration (JB1) | 2024-11-15 A → 2024-12-19 (+34d) | 2024-11-15 A → 2024-12-19 (+34d) |  | 100% → 0% | none → 348.9d |  | baseline start 2024-10-23 → 2024-10-17; baseline finish 2024-10-23 → 2024-10-17 |
| 112 | Set Up Integrations in the Quality/Test System | 2024-11-15 A → 2024-12-20 (+35d) | 2024-11-15 A → 2024-12-20 (+35d) | 0d → 1d | 100% → 0% | none → 348.9d |  | baseline start 2024-10-24 → 2024-10-18; baseline finish 2024-10-24 → 2024-10-18 |
| 113 | **System Integration Test** | 2024-10-21 A → 2024-11-21 A (+31d) | 2024-12-26 → 2025-01-10 (+15d) | 46d → 43d | 1% → 0% | 213d → 331.9d |  | baseline start 2024-10-15 → 2024-10-12; baseline finish 2024-12-18 → 2024-12-04 |
| 114 | **Integration test Plan** | 2024-10-21 A → 2024-11-28 A (+38d) | 2024-11-27 → 2024-12-28 (+31d) |  | 2% → 0% | 233d → 342.9d |  | baseline start 2024-10-15 → 2024-10-12; baseline finish 2024-11-22 → 2024-11-11 |
| 115 | Identify scenerios for Integration test | 2024-11-23 A → 2024-12-16 (+23d) | 2024-11-23 A → 2024-12-16 (+23d) | 0d → 1d | 100% → 0% | none → 334.9d |  | constraint none → start no earlier than 2024-12-16; baseline start 2024-11-21 → 2024-11-09; baseline finish 2024-11-22 → 2024-11-11 |
| 116 | Write scripts for Integration test | 2024-11-27 A → 2024-12-16 (+19d) | 2024-11-27 A → 2024-12-16 (+19d) |  | 100% → 0% | none → 334.9d |  | baseline start 2024-11-21 → 2024-11-09; baseline finish 2024-11-21 → 2024-11-11 |
| 117 | **Master data** | 2024-10-21 → 2024-12-16 (+56d) | 2024-11-22 → 2024-12-28 (+36d) | 23d → 11d |  | 236d → 342.9d |  | baseline start 2024-10-15 → 2024-10-22; baseline finish 2024-11-18 → 2024-11-07 |
| 118 | Receipt Master Data from PA | 2024-10-21 → 2024-12-16 (+56d) | 2024-11-19 → 2024-12-24 (+35d) | 20d → 8d |  | 236d → 342.9d | 46 → 46FS+10d | was named Receipt Master Data from NL; constraint none → start no earlier than 2024-12-16; baseline start 2024-10-15 → 2024-10-22; baseline finish 2024-11-13 → 2024-11-04 |
| 119 | Upload Master data in QAS | 2024-11-20 → 2024-12-26 (+36d) | 2024-11-22 → 2024-12-28 (+36d) |  |  | 236d → 342.9d |  | baseline start 2024-11-14 → 2024-11-05; baseline finish 2024-11-18 → 2024-11-07 |
| 120 | **Identity and Access Management Planning and Design** | 2024-10-25 → 2024-11-28 A (+34d) | 2024-11-25 → 2024-12-21 (+26d) | 20d → 21d |  | 4d → 336.9d |  | baseline start 2024-10-17 → 2024-10-12; baseline finish 2024-11-15 → 2024-11-06 |
| 121 | Finalize list of users | 2024-10-25 → 2024-11-28 A (+34d) | 2024-11-18 → 2024-12-16 (+28d) | 15d → 16d |  | 7d → 336.9d |  | constraint none → finish no earlier than 2024-12-16; baseline start 2024-10-17 → 2024-10-12; baseline finish 2024-11-08 → 2024-10-29 |
| 122 | Provide & Check roles and authorization | 2024-11-19 → 2024-12-17 (+28d) | 2024-11-25 → 2024-12-21 (+26d) |  |  | 7d → 336.9d |  | baseline start 2024-11-11 → 2024-10-30; baseline finish 2024-11-15 → 2024-11-06 |
| 123 | **Conduct System integration test** | 2024-11-27 A → 2024-12-23 (+26d) | 2024-12-11 → 2025-01-10 (+30d) | 11d → 16d | 12% → 0% | 223d → 328.9d |  | baseline start 2024-11-22 → 2024-11-12; baseline finish 2024-12-11 → 2024-12-04 |
| 124 | Perform Integration testing by Consultant | 2024-11-27 A → 2024-12-23 (+26d) | 2024-11-30 A → 2024-12-31 (+31d) | 2d → 7d | 100% → 0% | none → 329.9d |  | constraint none → start no earlier than 2024-12-23; baseline start 2024-11-22 → 2024-11-12; baseline finish 2024-11-29 → 2024-11-19 |
| 125 | Perform User Acceptance test - CTM | 2024-12-02 A → 2025-01-02 (+31d) | 2024-12-09 → 2025-01-08 (+30d) |  |  | 225d → 328.9d |  | constraint none → start no earlier than 2025-01-02; baseline start 2024-12-02 → 2024-11-20; baseline finish 2024-12-09 → 2024-11-30 |
| 126 | Resolving the issues, if any | 2024-12-02 A → 2025-01-02 (+31d) | 2024-12-09 → 2025-01-08 (+30d) |  |  | 187d → 328.9d |  | baseline start 2024-12-02 → 2024-11-20; baseline finish 2024-12-09 → 2024-11-30 |
| 127 | Retesting of scenarios | 2024-12-10 → 2025-01-09 (+30d) | 2024-12-11 → 2025-01-10 (+30d) |  |  | 220d → 328.9d |  | baseline start 2024-12-10 → 2024-12-02; baseline finish 2024-12-11 → 2024-12-04 |
| 128 | UAT (by CTM) signoff | 2024-12-11 → 2025-01-10 (+30d) | 2024-12-11 → 2025-01-10 (+30d) |  |  | 220d → 328.9d |  | baseline start 2024-12-11 → 2024-12-04; baseline finish 2024-12-11 → 2024-12-04 |
| 129 | **ABAP Development - SIT Critical** | 2024-11-06 A → 2024-11-21 (+15d) | 2024-12-26 → 2024-12-31 (+5d) | 36d → 34d |  | 213d → -5d |  | baseline start 2024-11-06 → 2024-10-26; baseline finish 2024-12-18 → 2024-12-03 |
| 130 | Develop reports | 2024-11-06 A → 2024-11-21 (+15d) | 2024-12-10 → 2024-12-26 (+16d) | 25d → 30d |  | 210d → -5d |  | constraint none → start no earlier than 2024-11-21; baseline start 2024-11-06 → 2024-10-26; baseline finish 2024-12-10 → 2024-11-26 |
| 131 | Testing by consultant | 2024-11-17 A → 2024-11-25 (+8d) | 2024-12-20 → 2024-12-27 (+7d) | 25d → 28d |  | 216d → 340.9d |  | baseline start 2024-11-11 → 2024-10-30; baseline finish 2024-12-13 → 2024-11-29 |
| 132 | Testing by CTM | 2024-11-21 → 2024-11-28 (+7d) | 2024-12-26 → 2024-12-31 (+5d) | 25d → 28d |  | 213d → 340.9d |  | baseline start 2024-11-14 → 2024-11-05; baseline finish 2024-12-18 → 2024-12-03 |
| 133 | Sign off Development | 2024-12-26 → 2024-12-31 (+5d) | 2024-12-26 → 2024-12-31 (+5d) |  |  | 213d → 340.9d |  | baseline start 2024-12-18 → 2024-12-03; baseline finish 2024-12-18 → 2024-12-03 |
| 134 | **Cutover Strategy** | 2024-12-10 → 2024-12-20 (+10d) | 2024-12-12 → 2024-12-20 (+8d) | 3d → 1d |  | 187d → 10d |  | baseline start 2024-12-10 → 2024-12-05; baseline finish 2024-12-12 → 2024-12-05 |
| 135 | Discussion on cutover strategy | 2024-12-10 → 2024-12-20 (+10d) | 2024-12-11 → 2024-12-20 (+9d) | 2d → 1d |  | 187d → 10d | 126 → none | constraint none → start no earlier than 2024-12-20; baseline start 2024-12-10 → 2024-12-05; baseline finish 2024-12-11 → 2024-12-05 |
| 136 | Cutover & data responsibility Plan | 2024-12-12 → 2024-12-20 (+8d) | 2024-12-12 → 2024-12-20 (+8d) |  |  | 187d → 10d | 135 → 135FF | baseline start 2024-12-12 → 2024-12-05; baseline finish 2024-12-12 → 2024-12-05 |
| 137 | Communication to Organisation for Cutover | 2024-12-12 → 2024-12-20 (+8d) | 2024-12-12 → 2024-12-20 (+8d) |  |  | 187d → 10d |  | baseline start 2024-12-12 → 2024-12-05; baseline finish 2024-12-12 → 2024-12-05 |
| 138 | **End user training plan** | 2024-11-29 → 2024-12-18 (+19d) | 2024-12-02 → 2024-12-19 (+17d) |  |  | 226d → 341.9d |  | baseline start 2024-11-29 → 2024-11-16; baseline finish 2024-12-02 → 2024-11-18 |
| 139 | Preparation of End User training plan | 2024-11-29 → 2024-12-18 (+19d) | 2024-12-02 → 2024-12-19 (+17d) |  |  | 226d → 341.9d |  | constraint none → start no earlier than 2024-12-18; baseline start 2024-11-29 → 2024-11-16; baseline finish 2024-12-02 → 2024-11-18 |
| 140 | Communicate plan to PA | 2024-12-02 → 2024-12-19 (+17d) | 2024-12-02 → 2024-12-19 (+17d) |  |  | 226d → 341.9d |  | was named Communicate plan to NL; baseline start 2024-12-02 → 2024-11-18; baseline finish 2024-12-02 → 2024-11-18 |
| 141 | **Production System Request** | 2024-10-25 → 2024-12-20 (+56d) | 2024-10-28 → 2024-12-21 (+54d) |  |  | 251d → 345.9d |  | baseline start 2024-10-17 → 2024-10-12; baseline finish 2024-10-18 → 2024-10-14 |
| 142 | Request for Production System | 2024-10-25 → 2024-12-20 (+56d) | 2024-10-25 → 2024-12-20 (+56d) |  |  | 67d → 345.9d |  | constraint none → start no earlier than 2024-12-20; baseline start 2024-10-17 → 2024-10-12; baseline finish 2024-10-17 → 2024-10-12 |
| 143 | Request Access to the SAP S/4HANA Cloud Release Assessment Tool. | 2024-10-28 → 2024-12-21 (+54d) | 2024-10-28 → 2024-12-21 (+54d) |  |  | 67d → 345.9d |  | baseline start 2024-10-18 → 2024-10-14; baseline finish 2024-10-18 → 2024-10-14 |
| 144 | **Production System Initial Access** | 2024-10-29 → 2024-12-23 (+55d) | 2024-10-30 → 2024-12-24 (+55d) |  |  | 251d → 345.9d |  | baseline start 2024-10-21 → 2024-10-15; baseline finish 2024-10-22 → 2024-10-16 |

| ID | Task | Start | Finish | Duration | Complete | Total float | Predecessors | Other |
| --- | --- | --- | --- | --- | --- | --- | --- | --- |
| 145 | Receive Production System and Reset Password | 2024-10-29 → 2024-12-23 (+55d) | 2024-10-29 → 2024-12-23 (+55d) |  |  | 67d → 345.9d |  | baseline start 2024-10-21 → 2024-10-15; baseline finish 2024-10-21 → 2024-10-15 |
| 146 | Transport Initial Change Project from Q-System to P-System | 2024-10-30 → 2024-12-24 (+55d) | 2024-10-30 → 2024-12-24 (+55d) |  |  | 67d → 345.9d |  | baseline start 2024-10-22 → 2024-10-16; baseline finish 2024-10-22 → 2024-10-16 |
| 147 | Phase Closure & Signoff Phase deliverables | 2024-12-12 → 2025-01-11 (+30d) | 2024-12-12 → 2025-01-11 (+30d) |  |  | 222d → 330.9d |  | baseline start 2024-12-12 → 2024-12-05; baseline finish 2024-12-12 → 2024-12-05 |
| 148 | **Deliverables** | 2024-11-11 → 2024-12-04 (+23d) | 2024-12-12 → 2025-01-10 (+29d) | 24d → 32d |  | 222d → 331.9d |  | baseline start 2024-11-13 → 2024-11-04; baseline finish 2024-12-12 → 2024-12-05 |
| 149 | D: Test scripts | 2024-11-28 → 2024-12-17 (+19d) | 2024-11-28 → 2024-12-17 (+19d) |  |  | 232d → 351.9d |  | baseline start 2024-11-22 → 2024-11-12; baseline finish 2024-11-22 → 2024-11-12 |
| 150 | D: Unit test result document | 2024-11-11 → 2024-12-04 (+23d) | 2024-11-11 → 2024-12-04 (+23d) |  |  | 245d → 360.9d |  | baseline start 2024-11-13 → 2024-11-04; baseline finish 2024-11-13 → 2024-11-04 |
| 151 | D: Integration testing document | 2024-12-02 → 2025-01-01 (+30d) | 2024-12-02 → 2025-01-01 (+30d) |  |  | 230d → 339.9d |  | baseline start 2024-12-02 → 2024-11-20; baseline finish 2024-12-02 → 2024-11-20 |
| 152 | D: User Acceptance testing document | 2024-12-11 → 2025-01-10 (+30d) | 2024-12-11 → 2025-01-10 (+30d) |  |  | 223d → 331.9d |  | baseline start 2024-12-11 → 2024-12-04; baseline finish 2024-12-11 → 2024-12-04 |
| 153 | D: Final master data templates | 2024-12-12 → 2024-12-20 (+8d) | 2024-12-12 → 2024-12-20 (+8d) |  |  | 222d → 332.9d |  | baseline start 2024-12-12 → 2024-12-05; baseline finish 2024-12-12 → 2024-12-05 |
| 154 | D: Data migration strategy document | 2024-12-12 → 2024-12-20 (+8d) | 2024-12-12 → 2024-12-20 (+8d) |  |  | 222d → 332.9d |  | baseline start 2024-12-12 → 2024-12-05; baseline finish 2024-12-12 → 2024-12-05 |
| 155 | **Deploy** | 2024-10-21 → 2024-12-16 (+56d) | 2025-01-02 → 2025-02-03 (+32d) | 51d → 41.9d |  | 184d → 4d |  | baseline start 2024-10-15 → 2024-11-19; baseline finish 2024-12-31 → 2025-01-07 |
| 156 | **ABAP Developments Pre Go Live** | 2024-12-02 → 2024-12-20 (+18d) | 2024-12-31 → 2025-01-27 (+27d) | 21d → 32d |  | 210d → none |  | baseline start 2024-12-02 → 2024-11-27; baseline finish 2024-12-31 → 2025-01-06 |
| 157 | Develop reports | 2024-12-02 → 2024-12-27 (+25d) | 2024-12-20 → 2025-01-27 (+38d) | 15d → 27d |  | 26d → -5d | 130FS-7d → 130 | baseline start 2024-12-02 → 2024-11-27; baseline finish 2024-12-20 → 2024-12-28 |
| 158 | Testing by consultant | 2024-12-05 → 2024-12-31 (+26d) | 2024-12-26 → 2025-01-28 (+33d) | 15d → 25d |  | 210d → -5d |  | baseline start 2024-12-05 → 2024-11-30; baseline finish 2024-12-26 → 2025-01-01 |
| 159 | Testing by CTM | 2024-12-09 → 2025-01-02 (+24d) | 2024-12-30 → 2025-01-30 (+31d) | 15d → 25d |  | 210d → -5d |  | baseline start 2024-12-09 → 2024-12-03; baseline finish 2024-12-30 → 2025-01-03 |
| 160 | Sign off Development | 2024-12-31 → 2025-01-31 (+31d) | 2024-12-31 → 2025-02-01 (+32d) | 1d → 2d |  | 210d → -5d |  | baseline start 2024-12-31 → 2025-01-04; baseline finish 2024-12-31 → 2025-01-06 |
| 161 | **End User Training** | 2024-12-13 → 2025-01-13 (+31d) | 2024-12-27 → 2025-01-23 (+27d) |  |  | 211d → 320.9d |  | baseline start 2024-12-13 → 2024-12-06; baseline finish 2024-12-27 → 2024-12-17 |
| 162 | Prepare end user training manual | 2024-12-13 → 2025-01-13 (+31d) | 2024-12-16 → 2025-01-14 (+29d) |  |  | 211d → 320.9d |  | constraint none → start no earlier than 2025-01-13; baseline start 2024-12-13 → 2024-12-06; baseline finish 2024-12-16 → 2024-12-07 |
| 163 | Conduct end user training | 2024-12-17 → 2025-01-15 (+29d) | 2024-12-23 → 2025-01-20 (+28d) |  |  | 211d → 320.9d |  | baseline start 2024-12-17 → 2024-12-09; baseline finish 2024-12-23 → 2024-12-13 |
| 164 | Conduct training to HODs/Management | 2024-12-24 → 2025-01-21 (+28d) | 2024-12-27 → 2025-01-23 (+27d) |  |  | 212d → 320.9d |  | baseline start 2024-12-24 → 2024-12-14; baseline finish 2024-12-27 → 2024-12-17 |
| 165 | **Production Environment Preparation** | 2024-12-12 → 2025-01-11 (+30d) | 2024-12-16 → 2025-01-14 (+29d) |  |  | 220d → 328.9d |  | baseline start 2024-12-12 → 2024-12-05; baseline finish 2024-12-16 → 2024-12-07 |
| 166 | Transport final configurations | 2024-12-12 → 2025-01-11 (+30d) | 2024-12-12 → 2025-01-11 (+30d) |  |  | 220d → 328.9d |  | baseline start 2024-12-12 → 2024-12-05; baseline finish 2024-12-12 → 2024-12-05 |
| 167 | Maintain number ranges | 2024-12-13 → 2025-01-13 (+31d) | 2024-12-13 → 2025-01-13 (+31d) |  |  | 220d → 328.9d |  | baseline start 2024-12-13 → 2024-12-06; baseline finish 2024-12-13 → 2024-12-06 |
| 168 | Maintain client specific data | 2024-12-16 → 2025-01-14 (+29d) | 2024-12-16 → 2025-01-14 (+29d) |  |  | 220d → 328.9d |  | baseline start 2024-12-16 → 2024-12-07; baseline finish 2024-12-16 → 2024-12-07 |
| 169 | **User creation** | 2024-12-03 → 2024-12-26 (+23d) | 2024-12-30 → 2025-01-03 (+4d) | 19d → 8d |  | 211d → 337.9d |  | baseline start 2024-12-03 → 2024-11-19; baseline finish 2024-12-30 → 2024-12-18 |
| 170 | Finalize list of users for production enviornment | 2024-12-03 → 2024-12-26 (+23d) | 2024-12-04 → 2024-12-27 (+23d) |  |  | 226d → 337.9d |  | constraint none → start no earlier than 2024-12-26; baseline start 2024-12-03 → 2024-11-19; baseline finish 2024-12-04 → 2024-11-20 |
| 171 | Finalise Authorization Matrix | 2024-12-05 → 2024-12-28 (+23d) | 2024-12-06 → 2024-12-30 (+24d) |  |  | 226d → 337.9d |  | baseline start 2024-12-05 → 2024-11-21; baseline finish 2024-12-06 → 2024-11-22 |
| 172 | Check roles and authorization | 2024-12-24 → 2024-12-31 (+7d) | 2024-12-30 → 2025-01-03 (+4d) |  |  | 211d → 337.9d | 163 → 171 | baseline start 2024-12-24 → 2024-12-14; baseline finish 2024-12-30 → 2024-12-18 |
| 173 | **Data preparation and upload** | 2024-10-21 → 2024-12-16 (+56d) | 2024-12-31 → 2025-01-30 (+30d) | 49d → 39d |  | 184d → 15d |  | baseline start 2024-10-15 → 2024-11-28; baseline finish 2024-12-26 → 2025-01-06 |
| 174 | Receipt of master data | 2024-10-21 → 2024-12-16 (+56d) | 2024-12-17 → 2025-01-02 (+16d) | 40d → 15d |  | 184d → 15d | 46 → 46FS+40d | constraint none → start no earlier than 2024-12-16; baseline start 2024-10-15 → 2024-11-28; baseline finish 2024-12-11 → 2024-12-20 |
| 175 | Validate & cleanse master data | 2024-12-18 → 2025-01-03 (+16d) | 2024-12-19 → 2025-01-03 (+15d) | 2d → 1d |  | 184d → 15d |  | baseline start 2024-12-12 → 2024-12-21; baseline finish 2024-12-13 → 2024-12-21 |
| 176 | Upload master data in Production | 2024-12-20 → 2025-01-04 (+15d) | 2024-12-26 → 2025-01-08 (+13d) |  |  | 184d → 15d |  | baseline start 2024-12-16 → 2024-12-23; baseline finish 2024-12-19 → 2024-12-27 |
| 177 | Confirm uploaded master data | 2024-12-27 → 2025-01-09 (+13d) | 2024-12-27 → 2025-01-09 (+13d) |  |  | 212d → 332.9d |  | baseline start 2024-12-20 → 2024-12-28; baseline finish 2024-12-20 → 2024-12-28 |
| 178 | Receipt of cutover data | 2024-12-13 → 2025-01-01 (+19d) | 2024-12-20 → 2025-01-23 (+34d) | 6d → 20d |  | 187d → 2d |  | constraint none → start no earlier than 2025-01-01; baseline start 2024-12-13 → 2024-12-06; baseline finish 2024-12-20 → 2024-12-30 |
| 179 | Validate & cleanse cutover data | 2024-12-13 → 2025-01-24 (+42d) | 2024-12-20 → 2025-01-30 (+41d) |  |  | 216d → 314.9d | 137 → 178 | baseline start 2024-12-13 → 2024-12-31; baseline finish 2024-12-20 → 2025-01-06 |
| 180 | Upload cutover data in production | 2024-12-27 → 2025-01-24 (+28d) | 2024-12-31 → 2025-01-30 (+30d) | 3d → 6d |  | 184d → 2d |  | baseline start 2024-12-23 → 2024-12-31; baseline finish 2024-12-26 → 2025-01-06 |
| 181 | Check and validate uploaded data | 2024-12-31 → 2025-01-30 (+30d) | 2024-12-31 → 2025-01-30 (+30d) |  |  | 184d → 2d |  | baseline start 2024-12-26 → 2025-01-06; baseline finish 2024-12-26 → 2025-01-06 |
| 182 | **Deliverables** | 2024-12-05 → 2024-12-28 (+23d) | 2024-12-31 → 2025-01-17 (+17d) |  |  | 210d → 325.9d |  | baseline start 2024-12-05 → 2024-11-21; baseline finish 2024-12-24 → 2024-12-31 |
| 183 | D: End user training manual | 2024-12-17 → 2025-01-15 (+29d) | 2024-12-19 → 2025-01-17 (+29d) |  |  | 217d → 325.9d |  | baseline start 2024-12-17 → 2024-12-09; baseline finish 2024-12-19 → 2024-12-11 |
| 184 | D: Data migration plan & checklist | 2024-12-18 → 2025-01-03 (+16d) | 2024-12-20 → 2025-01-06 (+17d) |  |  | 216d → 335.9d |  | baseline start 2024-12-12 → 2024-12-21; baseline finish 2024-12-16 → 2024-12-24 |
| 185 | D: Master data upload programs | 2024-12-27 → 2025-01-09 (+13d) | 2024-12-31 → 2025-01-11 (+11d) |  |  | 210d → 330.9d |  | baseline start 2024-12-20 → 2024-12-28; baseline finish 2024-12-24 → 2024-12-31 |
| 186 | D: Sample data upload validation | 2024-12-27 → 2025-01-09 (+13d) | 2024-12-27 → 2025-01-09 (+13d) |  |  | 212d → 332.9d |  | baseline start 2024-12-20 → 2024-12-28; baseline finish 2024-12-20 → 2024-12-28 |
| 187 | D: Final SAP Authorization matrix | 2024-12-05 → 2024-12-28 (+23d) | 2024-12-05 → 2024-12-28 (+23d) |  |  | 227d → 342.9d |  | baseline start 2024-12-05 → 2024-11-21; baseline finish 2024-12-05 → 2024-11-21 |
| 188 | **Phase Closure & Sign Off Phase Deliverables** | 2025-01-01 → 2025-02-03 (+33d) | 2025-01-02 → 2025-02-03 (+32d) | 2d → 0.9d |  | 184d → 0d |  | baseline start 2024-12-27 → 2025-01-07; baseline finish 2024-12-30 → 2025-01-07 |
| 189 | Deploy signoff | 2025-01-01 → 2025-02-03 (+33d) | 2025-01-01 → 2025-02-03 (+33d) | 1d → 0.9d |  | 184d → 0d | 181 → 181, 160 | baseline start 2024-12-27 → 2025-01-07; baseline finish 2024-12-27 → 2025-01-07 |
| 190 | Completion of Final Preparation (Deploy) Phase | 2025-01-02 → 2025-02-03 (+32d) | 2025-01-02 → 2025-02-03 (+32d) | 1d → 0.9d |  | 184d → 0d | 189 → 189FF | baseline start 2024-12-30 → 2025-01-07; baseline finish 2024-12-30 → 2025-01-07 |
| 191 | Go Live | 2025-01-03 → 2025-02-03 (+31d) | 2025-01-03 → 2025-02-03 (+31d) | 1d → 0.1d |  | 184d → 0d | 190 → 190FF | baseline start 2024-12-31 → 2025-01-08; baseline finish 2024-12-31 → 2025-01-08 |
| 192 | **Stabilization** | 2025-01-06 → 2025-02-03 (+28d) | 2025-02-05 → 2025-03-06 (+29d) | 23d → 27d |  | 184d → 0d |  | baseline start 2025-01-01 → 2025-01-09; baseline finish 2025-01-31 → 2025-02-08 |
| 193 | Stabilization | 2025-01-06 → 2025-02-03 (+28d) | 2025-02-05 → 2025-03-06 (+29d) | 23d → 27d |  | 184d → 0d |  | was named Stabilization (Post Go live Support); baseline start 2025-01-01 → 2025-01-09; baseline finish 2025-01-31 → 2025-02-08 |
| 194 | **Deliverables** | 2025-01-06 → 2025-02-03 (+28d) | 2025-02-05 → 2025-03-06 (+29d) | 23d → 27d |  | 184d → 285d |  | baseline start 2025-01-01 → 2025-01-09; baseline finish 2025-01-31 → 2025-02-08 |
| 195 | D: Issue list with resolution status | 2025-01-06 → 2025-02-03 (+28d) | 2025-02-05 → 2025-03-06 (+29d) | 23d → 27d |  | 184d → 285d |  | baseline start 2025-01-01 → 2025-01-09; baseline finish 2025-01-31 → 2025-02-08 |
| 196 | D: Configuration documents | 2025-01-06 → 2025-02-03 (+28d) | 2025-02-05 → 2025-03-06 (+29d) | 23d → 27d |  | 184d → 285d |  | baseline start 2025-01-01 → 2025-01-09; baseline finish 2025-01-31 → 2025-02-08 |
| 197 | D: FS & TS | 2025-01-06 → 2025-02-03 (+28d) | 2025-02-05 → 2025-03-06 (+29d) | 23d → 27d |  | 184d → 285d |  | baseline start 2025-01-01 → 2025-01-09; baseline finish 2025-01-31 → 2025-02-08 |
| 198 | D: Cre team training document | 2025-01-06 → 2025-02-03 (+28d) | 2025-02-05 → 2025-03-06 (+29d) | 23d → 27d |  | 184d → 285d |  | baseline start 2025-01-01 → 2025-01-09; baseline finish 2025-01-31 → 2025-02-08 |
| 199 | **Extended Support** | 2024-09-23 A → 2025-03-06 (+164d) | 2024-09-23 A → 2025-04-03 (+192d) | 1d → 24d | 100% → 0% | none → 0d | 23FF → none | was named D: Training Plan; constraint start no earlier than 2022-11-07 → none; baseline start 2024-09-11 → 2025-02-10; baseline finish 2024-09-11 → 2025-03-08 |

## Version 12 (data date 2022-10-13, saved 2024-12-27, file TASK_00631275_1_27122024184845.mpp)

Note of the change: Add project files.

Last finish stays 2026-04-03. Complete tasks 61 → 69.

Changed:

| ID | Task | Start | Finish | Duration | Complete | Total float | Predecessors | Other |
| --- | --- | --- | --- | --- | --- | --- | --- | --- |
| 1 | **SAP Implementation at PA** |  |  |  | 26% → 29% |  |  |  |
| 2 | **Phase 1: S4 HANA Implementation (Public Cloud)** |  |  |  | 35% → 38% |  |  |  |
| 3 | **Implementation** |  |  |  | 44% → 48% |  |  |  |
| 74 | **Realize** |  |  |  | 30% → 38% |  |  |  |
| 78 | **Functional Specifications** |  |  |  | 44% → 54% |  |  |  |
| 79 | Prepare functional specfications |  |  |  | 38% → 49% |  |  |  |
| 81 | **Solution Configuration** |  | 2024-12-03 A |  | 98% → 100% | 362.9d → none |  |  |
| 86 | Submit Unit Testing result & completion of baseline config |  | 2024-12-03 A |  | 0% → 100% | 362.9d → none |  |  |
| 87 | **Core team training & UT** |  |  |  | 87% → 88% |  |  |  |
| 90 | Conducting CTM Training (Module wise) |  |  |  | 81% → 82% | 0.53d → 0.55d |  |  |
| 91 | Unit Testing by Core team |  |  |  | 81% → 82% |  |  |  |
| 95 | **Quality System Initial Access** |  | 2024-12-20 → 2024-12-27 (+7d) | 29d → 34d | 33% → 55% | 348.9d → 343.9d |  |  |
| 97 | Create Preset Configuration User in the Quality System via Manage Your Solution App | 2024-12-17 → 2024-12-20 A (+3d) | 2024-12-17 → 2024-12-20 A (+3d) |  | 0% → 100% | 350.9d → none |  |  |
| 98 | Define Preset Parameters and Trigger System Activation via Manage Your Solution App | 2024-12-18 → 2024-12-20 A (+2d) | 2024-12-18 → 2024-12-20 A (+2d) |  | 0% → 100% | 350.9d → none |  |  |
| 99 | **Create Users in the Quality Server** |  | 2024-12-19 → 2024-12-27 (+8d) | 19d → 25d |  | 348.9d → 343.9d |  |  |
| 100 | **Finalize list of users for QAS** |  | 2024-12-19 → 2024-12-27 (+8d) | 19d → 25d |  | 348.9d → 343.9d |  |  |
| 101 | **Provide user authorization** |  | 2024-12-19 → 2024-12-27 (+8d) | 19d → 25d |  | 348.9d → 343.9d |  |  |
| 103 | Create roles and authorization | 2024-12-16 → 2024-12-23 (+7d) | 2024-12-16 → 2024-12-23 (+7d) |  |  | 348.9d → 343.9d |  | constraint start no earlier than 2024-12-16 → start no earlier than 2024-12-23 |
| 104 | Testing of roles and authorization | 2024-12-17 → 2024-12-24 (+7d) | 2024-12-18 → 2024-12-26 (+8d) |  |  | 348.9d → 343.9d |  |  |
| 105 | Deployment of roles to users | 2024-12-19 → 2024-12-27 (+8d) | 2024-12-19 → 2024-12-27 (+8d) |  |  | 348.9d → 343.9d |  |  |
| 106 | Self-Activation of Project Team Members in the Identity Authentication Service | 2024-12-20 → 2024-11-22 A (-28d) | 2024-12-20 → 2024-11-22 A (-28d) | 1d → 0d | 0% → 100% | 348.9d → none |  |  |
| 107 | **Required Configuration Before System Use - SAP S/4HANA Cloud** | 2024-12-17 → 2024-12-20 A (+3d) | 2024-12-17 → 2024-12-20 A (+3d) |  | 0% → 100% | 348.9d → none |  |  |
| 108 | Configure system | 2024-12-17 → 2024-12-20 A (+3d) | 2024-12-17 → 2024-12-20 A (+3d) |  | 0% → 100% | 348.9d → none |  |  |
| 109 | **Standard Integration Setup in the Quality/Test System** | 2024-12-18 → 2024-12-23 (+5d) | 2024-12-20 → 2024-12-26 (+6d) |  |  | 348.9d → 344.9d |  |  |
| 110 | Set Up Integration using Cloud Integration Automation Service (CIAS) | 2024-12-18 → 2024-12-23 (+5d) | 2024-12-18 → 2024-12-23 (+5d) |  |  | 348.9d → 344.9d |  | constraint none → start no earlier than 2024-12-23 |
| 111 | Set Up Employee Central Integration (JB1) | 2024-12-19 → 2024-12-24 (+5d) | 2024-12-19 → 2024-12-24 (+5d) |  |  | 348.9d → 344.9d |  |  |
| 112 | Set Up Integrations in the Quality/Test System | 2024-12-20 → 2024-12-26 (+6d) | 2024-12-20 → 2024-12-26 (+6d) |  |  | 348.9d → 344.9d |  |  |
| 113 | **System Integration Test** |  |  |  | 0% → 9% |  |  |  |
| 114 | **Integration test Plan** |  |  |  | 0% → 20% |  |  |  |
| 115 | Identify scenerios for Integration test | 2024-12-16 → 2024-12-18 A (+2d) | 2024-12-16 → 2024-12-18 A (+2d) |  | 0% → 100% | 334.9d → none |  |  |
| 116 | Write scripts for Integration test | 2024-12-16 → 2024-12-20 A (+4d) | 2024-12-16 → 2024-12-20 A (+4d) |  | 0% → 100% | 334.9d → none |  |  |
| 117 | **Master data** | 2024-12-16 → 2024-12-20 A (+4d) |  | 11d → 7d | 0% → 57% |  |  |  |
| 118 | Receipt Master Data from PA | 2024-12-16 → 2024-12-20 A (+4d) | 2024-12-24 A | 8d → 4d | 0% → 100% | 342.9d → none |  |  |
| 119 | Upload Master data in QAS | 2024-12-26 → 2024-12-23 A (-3d) |  |  |  |  |  |  |
| 123 | **Conduct System integration test** | 2024-12-23 A |  |  |  |  |  |  |
| 124 | Perform Integration testing by Consultant | 2024-12-23 A |  |  |  |  |  |  |
| 129 | **ABAP Development - SIT Critical** | 2024-11-21 A |  |  | 0% → 8% | -5d → 340.9d |  |  |
| 130 | Develop reports | 2024-11-21 A |  |  | 0% → 19% | -5d → 0d |  |  |
| 131 | Testing by consultant | 2024-11-25 A |  |  | 0% → 5% | 340.9d → 343.9d |  |  |
| 134 | **Cutover Strategy** | 2024-12-20 → 2024-12-24 (+4d) | 2024-12-20 → 2024-12-24 (+4d) |  |  | 10d → 7d |  |  |
| 135 | Discussion on cutover strategy | 2024-12-20 → 2024-12-24 (+4d) | 2024-12-20 → 2024-12-24 (+4d) |  |  | 10d → 7d |  | constraint start no earlier than 2024-12-20 → start no earlier than 2024-12-24 |
| 136 | Cutover & data responsibility Plan | 2024-12-20 → 2024-12-24 (+4d) | 2024-12-20 → 2024-12-24 (+4d) |  |  | 10d → 7d |  |  |
| 137 | Communication to Organisation for Cutover | 2024-12-20 → 2024-12-24 (+4d) | 2024-12-20 → 2024-12-24 (+4d) |  |  | 10d → 7d |  |  |
| 138 | **End user training plan** | 2024-12-18 → 2024-12-27 (+9d) | 2024-12-19 → 2024-12-28 (+9d) |  |  | 341.9d → 334.9d |  |  |
| 139 | Preparation of End User training plan | 2024-12-18 → 2024-12-27 (+9d) | 2024-12-19 → 2024-12-28 (+9d) |  |  | 341.9d → 334.9d |  | constraint start no earlier than 2024-12-18 → start no earlier than 2024-12-27 |
| 140 | Communicate plan to PA | 2024-12-19 → 2024-12-28 (+9d) | 2024-12-19 → 2024-12-28 (+9d) |  |  | 341.9d → 334.9d |  |  |
| 141 | **Production System Request** | 2024-12-20 → 2024-12-30 (+10d) | 2024-12-21 → 2024-12-31 (+10d) |  |  | 345.9d → 338.9d |  |  |
| 142 | Request for Production System | 2024-12-20 → 2024-12-30 (+10d) | 2024-12-20 → 2024-12-30 (+10d) |  |  | 345.9d → 338.9d |  | constraint start no earlier than 2024-12-20 → start no earlier than 2024-12-30 |
| 143 | Request Access to the SAP S/4HANA Cloud Release Assessment Tool. | 2024-12-21 → 2024-12-31 (+10d) | 2024-12-21 → 2024-12-31 (+10d) |  |  | 345.9d → 338.9d |  |  |
| 144 | **Production System Initial Access** | 2024-12-23 → 2025-01-01 (+9d) | 2024-12-24 → 2025-01-02 (+9d) |  |  | 345.9d → 338.9d |  |  |
| 145 | Receive Production System and Reset Password | 2024-12-23 → 2025-01-01 (+9d) | 2024-12-23 → 2025-01-01 (+9d) |  |  | 345.9d → 338.9d |  |  |
| 146 | Transport Initial Change Project from Q-System to P-System | 2024-12-24 → 2025-01-02 (+9d) | 2024-12-24 → 2025-01-02 (+9d) |  |  | 345.9d → 338.9d |  |  |
| 149 | D: Test scripts | 2024-12-17 → 2024-12-21 (+4d) | 2024-12-17 → 2024-12-21 (+4d) |  |  | 351.9d → 347.9d |  |  |
| 153 | D: Final master data templates | 2024-12-20 → 2024-12-24 (+4d) | 2024-12-20 → 2024-12-24 (+4d) |  |  | 332.9d → 345.9d |  |  |
| 154 | D: Data migration strategy document | 2024-12-20 → 2024-12-24 (+4d) | 2024-12-20 → 2024-12-24 (+4d) |  |  | 332.9d → 345.9d |  |  |
| 155 | **Deploy** | 2024-12-16 → 2024-12-27 (+11d) |  | 41.9d → 32.9d |  | 4d → 0d |  |  |
| 156 | **ABAP Developments Pre Go Live** | 2024-12-20 → 2024-12-27 (+7d) | 2025-01-27 → 2025-02-01 (+5d) |  |  |  |  |  |
| 157 | Develop reports |  |  |  |  | -5d → 0d |  | constraint start no earlier than 2022-12-20 → start no earlier than 2024-12-27 |
| 169 | **User creation** | 2024-12-26 → 2024-12-30 (+4d) | 2025-01-03 → 2025-01-07 (+4d) |  |  | 337.9d → 334.9d |  |  |
| 170 | Finalize list of users for production enviornment | 2024-12-26 → 2024-12-30 (+4d) | 2024-12-27 → 2024-12-31 (+4d) |  |  | 337.9d → 334.9d |  |  |
| 171 | Finalise Authorization Matrix | 2024-12-28 → 2025-01-01 (+4d) | 2024-12-30 → 2025-01-02 (+3d) |  |  | 337.9d → 334.9d |  |  |
| 172 | Check roles and authorization | 2024-12-31 → 2025-01-03 (+3d) | 2025-01-03 → 2025-01-07 (+4d) |  |  | 337.9d → 334.9d |  |  |
| 173 | **Data preparation and upload** | 2024-12-16 → 2024-12-30 (+14d) |  | 39d → 28d |  | 15d → 4d |  |  |
| 174 | Receipt of master data | 2024-12-16 → 2024-12-30 (+14d) | 2025-01-02 → 2025-01-03 (+1d) | 15d → 5d |  | 15d → 14d | 46FS+40d → 46FS+55d |  |
| 175 | Validate & cleanse master data | 2025-01-03 → 2025-01-04 (+1d) | 2025-01-03 → 2025-01-04 (+1d) |  |  | 15d → 14d |  |  |
| 176 | Upload master data in Production | 2025-01-04 → 2025-01-06 (+2d) | 2025-01-08 → 2025-01-09 (+1d) |  |  | 15d → 14d |  |  |
| 177 | Confirm uploaded master data | 2025-01-09 → 2025-01-10 (+1d) | 2025-01-09 → 2025-01-10 (+1d) |  |  | 332.9d → 331.9d |  |  |
| 182 | **Deliverables** | 2024-12-28 → 2025-01-01 (+4d) |  | 18d → 15d |  |  |  |  |
| 184 | D: Data migration plan & checklist | 2025-01-03 → 2025-01-04 (+1d) | 2025-01-06 → 2025-01-07 (+1d) |  |  | 335.9d → 334.9d |  |  |
| 185 | D: Master data upload programs | 2025-01-09 → 2025-01-10 (+1d) | 2025-01-11 → 2025-01-13 (+2d) |  |  | 330.9d → 329.9d |  |  |

| ID | Task | Start | Finish | Total float |
| --- | --- | --- | --- | --- |
| 186 | D: Sample data upload validation | 2025-01-09 → 2025-01-10 (+1d) | 2025-01-09 → 2025-01-10 (+1d) | 332.9d → 331.9d |
| 187 | D: Final SAP Authorization matrix | 2024-12-28 → 2025-01-01 (+4d) | 2024-12-28 → 2025-01-01 (+4d) | 342.9d → 339.9d |

## Version 13 (data date 2022-10-13, saved 2025-01-02, file TASK_00631268_1_02012025102710.mpp)

Note of the change: Add project files.

Last finish 2026-04-03 → 2026-01-01 (-92d). Complete tasks 69 → 106.

Added:

| ID | Task | Duration | Start | Finish | Predecessors |
| --- | --- | --- | --- | --- | --- |
| 50 | Integration with bank host to host (upto2) | 5d | 2024-10-21 | 2024-10-25 | 41 |
| 51 | Integration with HRMS (Payroll) | 5d | 2024-10-21 | 2024-10-25 | 41 |
| 52 | Integration with Cloud Steer CRM | 0d | 2024-11-07 A | 2024-11-07 A | 41 |
| 53 | Integration with DMS | 5d | 2024-10-21 | 2024-10-25 | 41 |
| 135 | **Third Party Interface** | 282d | 2024-11-20 A | 2025-12-19 |  |
| 136 | Development | 25d | 2025-11-15 A | 2025-12-19 | 83 |
| 137 | Testing by consultant | 0d | 2024-11-20 A | 2024-12-30 A | 136SS+3d |
| 138 | Testing by CTM | 24d | 2024-11-25 A | 2024-12-29 A | 137SS+3d |
| 139 | Sign off Development | 3d | 2024-12-27 A | 2024-12-31 A | 138FF |

Removed: 49 Integration with ASP/GSP; 50 Integration with bank host to host (upto 3); 51 Integration with Primavera; 52 Integration with third party payroll; 200 One month extended support; 201 Phase 2: One Year AMC; 202 AMC Support

Changed:

| ID | Task | Start | Finish | Duration | Complete | Total float | Predecessors | Other |
| --- | --- | --- | --- | --- | --- | --- | --- | --- |
| 1 | **SAP Implementation at NEO LIV** | 2024-09-02 A → 2024-09-05 A (+3d) | 2026-04-03 → 2026-01-01 (-92d) | 436.9d → 341d | 29% → 67% |  |  | was named SAP Implementation at PA; baseline start 2024-09-02 → 2024-09-05; baseline finish 2026-03-09 → 2025-01-31 |
| 2 | **Wave 1A: S4 HANA Implementation (Public Cloud)** | 2024-09-02 A → 2024-09-05 A (+3d) | 2025-04-03 → 2026-01-01 (+273d) | 175.9d → 341d | 38% → 67% | 261d → 0d |  | was named Phase 1: S4 HANA Implementation (Public Cloud); baseline start 2024-09-02 → 2024-09-05; baseline finish 2025-03-08 → 2025-01-31 |
| 3 | **Implementation** | 2024-09-02 A → 2024-09-05 A (+3d) | 2025-02-03 → 2026-01-01 (+332d) | 124.9d → 341d | 48% → 83% | 312d → 0d |  | baseline start 2024-09-02 → 2024-09-05; baseline finish 2025-01-07 → 2024-12-31 |
| 4 | **Prepare** | 2024-09-02 A → 2024-09-05 A (+3d) | 2024-09-10 A → 2024-09-23 A (+13d) | 7d → 12d |  |  |  | baseline start 2024-09-02 → 2024-09-05; baseline finish 2024-09-10 → 2024-09-11 |
| 5 | **Project Kick Off and On-Boarding** | 2024-09-02 A → 2024-09-05 A (+3d) | 2024-09-10 A → 2024-09-05 A (-5d) | 7d → 1d |  |  |  | baseline start 2024-09-02 → 2024-09-05; baseline finish 2024-09-09 → 2024-09-05 |
| 6 | On-board Project Team | 2024-09-02 A → 2024-09-05 A (+3d) | 2024-09-10 A → 2024-09-05 A (-5d) | 7d → 1d |  |  |  | constraint finish no earlier than 2024-09-09 → start no earlier than 2024-09-05; baseline start 2024-09-02 → 2024-09-05; baseline finish 2024-09-09 → 2024-09-05 |
| 7 | Conduct Kickoff Workshop |  |  |  |  |  | 6SS+3d → 6SS | was named Conduct project kickoff; constraint start no earlier than 2024-09-05 → none |
| 8 | **Project Plan** | 2024-09-02 A → 2024-09-05 A (+3d) | 2024-09-05 A → 2024-09-19 A (+14d) | 4d → 10d |  |  |  | baseline start 2024-09-02 → 2024-09-05; baseline finish 2024-09-05 → 2024-09-11 |
| 9 | Prepare & submit Initial project plan | 2024-09-02 A → 2024-09-05 A (+3d) | 2024-09-02 A → 2024-09-06 A (+4d) | 1d → 2d |  |  |  | baseline start 2024-09-02 → 2024-09-05; baseline finish 2024-09-02 → 2024-09-06 |
| 10 | Review project plan | 2024-09-03 A → 2024-09-09 A (+6d) | 2024-09-03 A → 2024-09-09 A (+6d) |  |  |  |  | baseline start 2024-09-03 → 2024-09-09; baseline finish 2024-09-03 → 2024-09-09 |
| 11 | Make necessary changes in the plan | 2024-09-04 A → 2024-09-10 A (+6d) | 2024-09-04 A → 2024-09-10 A (+6d) |  |  |  |  | baseline start 2024-09-04 → 2024-09-10; baseline finish 2024-09-04 → 2024-09-10 |
| 12 | Submit revised plan | 2024-09-04 A → 2024-09-10 A (+6d) | 2024-09-04 A → 2024-09-10 A (+6d) |  |  |  |  | baseline start 2024-09-04 → 2024-09-10; baseline finish 2024-09-04 → 2024-09-10 |
| 13 | Approval of project plan by NL | 2024-09-05 A → 2024-09-11 A (+6d) | 2024-09-05 A → 2024-09-19 A (+14d) | 1d → 6d |  |  |  | was named Approval of project plan by PA; baseline start 2024-09-05 → 2024-09-11; baseline finish 2024-09-05 → 2024-09-11 |
| 14 | **Project Governance** | 2024-09-06 A → 2024-09-09 A (+3d) |  | 2d → 1d |  |  |  |  |
| 15 | Establish Project Governance Mechanism | 2024-09-06 A → 2024-09-09 A (+3d) |  |  |  |  |  |  |
| 16 | Define Project Communications and Reporting | 2024-09-06 A → 2024-09-09 A (+3d) |  |  |  |  |  |  |
| 17 | **Project Standards, Infrastructure & Solution** |  | 2024-09-06 A → 2024-09-09 A (+3d) | 1d → 2d |  |  |  | baseline finish 2024-09-06 → 2024-09-09 |
| 18 | Set Up Project Team Logistics and Infrastructure |  | 2024-09-06 A → 2024-09-09 A (+3d) | 1d → 2d |  |  |  | baseline finish 2024-09-06 → 2024-09-09 |
| 19 | Create a Document Repository for the Implementation Project Team |  | 2024-09-06 A → 2024-09-09 A (+3d) | 1d → 2d |  |  |  | baseline finish 2024-09-06 → 2024-09-09 |
| 20 | **Fit-to-Standard Analysis Preparation** | 2024-09-09 A → 2024-09-10 A (+1d) | 2024-09-09 A → 2024-09-12 A (+3d) | 1d → 3d |  |  |  | baseline start 2024-09-09 → 2024-09-10; baseline finish 2024-09-09 → 2024-09-10 |
| 21 | Prepare for Fit-to-Standard Workshops | 2024-09-09 A → 2024-09-10 A (+1d) | 2024-09-09 A → 2024-09-12 A (+3d) | 1d → 3d |  |  |  | baseline start 2024-09-09 → 2024-09-10; baseline finish 2024-09-09 → 2024-09-10 |
| 22 | **Phase Closure and Sign-Off Phase Deliverables** | 2024-09-10 A → 2024-09-23 A (+13d) | 2024-09-10 A → 2024-09-23 A (+13d) |  |  |  |  | baseline start 2024-09-10 → 2024-09-11; baseline finish 2024-09-10 → 2024-09-11 |
| 23 | Prepare Phase Signoff | 2024-09-10 A → 2024-09-23 A (+13d) | 2024-09-10 A → 2024-09-23 A (+13d) | 0d → 1d |  |  |  | baseline start 2024-09-10 → 2024-09-11; baseline finish 2024-09-10 → 2024-09-11 |
| 24 | **Deliverables** | 2024-09-10 A → 2024-09-23 A (+13d) | 2024-09-10 A → 2024-09-23 A (+13d) |  |  |  |  | baseline start 2024-09-10 → 2024-09-11; baseline finish 2024-09-10 → 2024-09-11 |
| 25 | D: Baseline Project Plan | 2024-09-10 A → 2024-09-23 A (+13d) | 2024-09-10 A → 2024-09-23 A (+13d) |  |  |  |  | baseline start 2024-09-10 → 2024-09-11; baseline finish 2024-09-10 → 2024-09-11 |
| 26 | D: Project kickoff presentation | 2024-09-10 A → 2024-09-23 A (+13d) | 2024-09-10 A → 2024-09-23 A (+13d) |  |  |  |  | baseline start 2024-09-10 → 2024-09-11; baseline finish 2024-09-10 → 2024-09-11 |
| 27 | D: Training Plan | 2025-03-06 → 2024-09-23 A (-164d) | 2025-04-03 → 2024-09-23 A (-192d) | 24d → 1d | 0% → 100% | 0d → none | none → 23FF | was named Extended Support; constraint none → start no earlier than 2022-11-07; baseline start 2025-02-10 → 2024-09-11; baseline finish 2025-03-08 → 2024-09-11 |
| 28 | **Explore** | 2024-09-02 A → 2024-09-09 A (+7d) | 2024-11-23 A → 2025-10-21 (+332d) | 65d → 287d | 100% → 67% | none → 52d |  | baseline start 2024-09-10 → 2024-09-09; baseline finish 2024-10-11 → 2024-10-16 |
| 29 | **Requirement gathering** | 2024-09-02 A → 2024-09-09 A (+7d) | 2024-09-17 A → 2024-09-12 A (-5d) | 12d → 4d |  |  |  | baseline start 2024-09-10 → 2024-09-09; baseline finish 2024-09-11 → 2024-09-12 |
| 30 | Review AS IS document | 2024-09-02 A → 2024-09-09 A (+7d) | 2024-09-17 A → 2024-09-10 A (-7d) | 6d → 2d |  |  | 21 → 7SS+2d | baseline start 2024-09-10 → 2024-09-09; baseline finish 2024-09-11 → 2024-09-10 |
| 31 | Update AS IS document as per discussion | 2024-09-02 A → 2024-09-11 A (+9d) | 2024-09-17 A → 2024-09-12 A (-5d) | 12d → 2d |  |  | 30SS → 30 | baseline start 2024-09-10 → 2024-09-11; baseline finish 2024-09-11 → 2024-09-12 |
| 32 | **Fit-to-Standard analysis** | 2024-09-17 A → 2024-09-16 A (-1d) | 2024-09-27 A → 2024-09-19 A (-8d) | 9d → 3d |  |  |  | baseline start 2024-09-12 → 2024-09-16; baseline finish 2024-09-16 → 2024-09-19 |
| 33 | Conduct workshop for all modules | 2024-09-17 A → 2024-09-16 A (-1d) | 2024-09-27 A → 2024-09-19 A (-8d) | 8d → 3d |  |  | 31 → 31FS+1d | baseline start 2024-09-12 → 2024-09-16; baseline finish 2024-09-16 → 2024-09-19 |
| 34 | **Fit to Standard analysis documentation** | 2024-09-16 A → 2024-09-20 A (+4d) | 2024-11-23 A → 2025-10-21 A (+332d) | 55d → 279d |  |  |  | baseline start 2024-09-17 → 2024-09-20; baseline finish 2024-10-11 → 2024-10-15 |
| 35 | Document Initial Configuration Settings for SAP Central Business Configuration | 2024-09-16 A → 2024-09-20 A (+4d) | 2024-09-16 A → 2024-09-23 A (+7d) | 1d → 2d |  |  |  | baseline start 2024-09-17 → 2024-09-20; baseline finish 2024-09-18 → 2024-09-23 |
| 36 | Document Scope via SAP Central Business Configuration | 2024-09-17 A → 2024-09-24 A (+7d) | 2024-09-19 A → 2024-09-25 A (+6d) | 3d → 2d |  |  |  | baseline start 2024-09-19 → 2024-09-24; baseline finish 2024-09-20 → 2024-09-25 |
| 37 | **Document and Maintain Business Process Flows** | 2024-09-20 A → 2024-09-24 A (+4d) | 2024-11-07 A → 2025-10-21 A (+348d) | 37d → 277d |  |  |  | baseline start 2024-09-17 → 2024-09-20; baseline finish 2024-10-04 → 2024-10-09 |
| 38 | Prepare BBP Document and KDS | 2024-09-20 A → 2024-09-24 A (+4d) | 2024-10-01 A → 2024-09-28 A (-3d) | 2.5d → 4d |  |  |  | was named Prepare fit-to-standard Document and KDS; baseline start 2024-09-17 → 2024-09-20; baseline finish 2024-09-23 → 2024-09-26 |
| 39 | Submition of BBP and KDS | 2024-09-23 A → 2024-09-30 A (+7d) | 2024-10-01 A → 2024-09-30 A (-1d) | 0d → 1d |  |  |  | was named Submition of Fit-to-standard and KDS; baseline start 2024-09-24 → 2024-09-27; baseline finish 2024-09-24 → 2024-09-27 |
| 40 | Review of BBP & KDS by CTM | 2024-09-25 A → 2024-10-04 A (+9d) | 2024-10-02 A → 2024-10-14 A (+12d) | 0d → 7d |  |  |  | was named Review of fit-to-standard & KDS by CTM; baseline start 2024-09-25 → 2024-09-30; baseline finish 2024-10-01 → 2024-10-07 |
| 41 | BBP Walkthrough | 2024-10-03 A → 2024-10-15 A (+12d) | 2024-10-21 A → 2024-10-18 A (-3d) | 16d → 4d |  |  |  | was named Solution Walkthrough; constraint finish no earlier than 2024-10-21 → none; baseline start 2024-10-03 → 2024-10-08; baseline finish 2024-10-03 → 2024-10-08 |
| 42 | BBP Signff | 2024-10-22 A → 2025-10-21 A (+364d) | 2024-11-07 A → 2025-10-21 A (+348d) | 13d → 1d |  |  |  | was named Fit-to-Standard document Signoff; constraint finish no earlier than 2024-11-04 → none; baseline start 2024-10-04 → 2024-10-09; baseline finish 2024-10-04 → 2024-10-09 |
| 43 | Document Configuration Values | 2024-10-14 A → 2025-10-21 A (+372d) | 2024-11-23 A → 2025-10-21 A (+332d) | 27d → 1d |  |  |  | constraint finish no earlier than 2024-11-08 → none; baseline start 2024-10-04 → 2024-10-09; baseline finish 2024-10-05 → 2024-10-10 |
| 44 | **Document Master Data Requirements** | 2024-10-07 A → 2024-10-16 A (+9d) | 2024-10-22 A → 2024-10-18 A (-4d) | 14d → 3d |  |  |  | was named Data migration requirements; baseline start 2024-10-07 → 2024-10-11; baseline finish 2024-10-09 → 2024-10-14 |
| 45 | Identify masterdata requirement | 2024-10-07 A → 2024-10-16 A (+9d) | 2024-10-07 A → 2024-10-17 A (+10d) |  |  |  |  | was named Identify master data requirement; baseline start 2024-10-07 → 2024-10-11; baseline finish 2024-10-07 → 2024-10-11 |
| 46 | Prepare and explain masterdata template | 2024-10-10 A → 2024-10-17 A (+7d) | 2024-10-22 A → 2024-10-17 A (-5d) | 11d → 1d |  |  | 45 → 45SS | was named Prepare and explain master data template; constraint as late as possible → none; baseline start 2024-10-08 → 2024-10-11; baseline finish 2024-10-09 → 2024-10-11 |
| 47 | Circulate masterdata template | 2024-10-10 A → 2024-10-18 A (+8d) | 2024-10-22 A → 2024-10-18 A (-4d) | 8d → 1d |  |  | 46FF → 46 | was named Circulate master data template; baseline start 2024-10-09 → 2024-10-14; baseline finish 2024-10-09 → 2024-10-14 |
| 48 | Confirm Backlog and prioritise (SIT/UAT, Golive, Post-Golive) | 2024-10-11 A → 2024-11-05 A (+25d) | 2024-11-12 A → 2024-11-05 A (-7d) | 10d → 1d |  |  |  | constraint as late as possible → none; baseline start 2024-10-10 → 2024-10-15; baseline finish 2024-10-11 → 2024-10-15 |
| 49 | **Integration Planning and Design** | 2024-10-09 A → 2024-10-21 A (+12d) | 2024-11-12 A → 2024-11-07 (-5d) | 28d → 12d | 100% → 0% | none → 299d |  | baseline start 2024-10-04 → 2024-10-09; baseline finish 2024-10-09 → 2024-10-15 |
| 54 | **Getting Started with your SAP Implementation** | 2024-10-07 A → 2024-09-26 (-11d) | 2024-10-07 A → 2024-10-04 (-3d) | 1d → 6d | 100% → 0% | none → 321d |  | baseline start 2024-09-23 → 2024-09-26; baseline finish 2024-10-01 → 2024-10-04 |
| 55 | Review Overview Documentation | 2024-10-07 A → 2024-09-26 (-11d) | 2024-10-07 A → 2024-09-27 (-10d) | 1d → 2d | 100% → 0% | none → 315d |  | baseline start 2024-09-23 → 2024-09-26; baseline finish 2024-09-24 → 2024-09-27 |
| 56 | Organize Provisioning Emails | 2024-10-07 A → 2024-09-30 (-7d) | 2024-10-07 A → 2024-10-01 (-6d) | 1d → 2d | 100% → 0% | none → 315d |  | baseline start 2024-09-25 → 2024-09-30; baseline finish 2024-09-27 → 2024-10-01 |
| 57 | Ensure Project Team Members Access to the SAP Support Portal, SAP Best Practices Explorer, and SAP Customer Communities | 2024-10-07 A → 2024-10-03 (-4d) | 2024-10-07 A → 2024-10-04 (-3d) | 1d → 2d | 100% → 0% | none → 315d |  | baseline start 2024-09-30 → 2024-10-03; baseline finish 2024-10-01 → 2024-10-04 |
| 58 | **SAP Cloud ALM Onboarding** | 2024-09-03 A → 2024-10-07 A (+34d) | 2024-09-13 A → 2024-10-09 A (+26d) | 9d → 3d |  |  |  | baseline start 2024-10-03 → 2024-10-07; baseline finish 2024-10-04 → 2024-10-08 |
| 59 | Request SAP Cloud ALM Tenant | 2024-09-03 A → 2024-10-07 A (+34d) | 2024-09-13 A → 2024-10-08 A (+25d) | 9d → 2d |  |  |  | baseline start 2024-10-03 → 2024-10-07; baseline finish 2024-10-03 → 2024-10-07 |
| 60 | Access SAP Cloud ALM and Create Users | 2024-09-13 A → 2024-10-08 A (+25d) | 2024-09-13 A → 2024-10-09 A (+26d) |  |  |  |  | baseline start 2024-10-04 → 2024-10-08; baseline finish 2024-10-04 → 2024-10-08 |
| 61 | **Initial System Access for Central Business Configuration** | 2024-09-03 A → 2024-10-15 A (+42d) | 2024-09-19 A → 2024-10-17 A (+28d) | 13d → 3d |  |  |  | baseline start 2024-10-05 → 2024-10-09; baseline finish 2024-10-08 → 2024-10-11 |
| 62 | Access the SAP Central Business Configuration | 2024-09-03 A → 2024-10-15 A (+42d) | 2024-09-10 A → 2024-10-15 A (+35d) | 6d → 1d |  |  |  | baseline start 2024-10-05 → 2024-10-09; baseline finish 2024-10-05 → 2024-10-09 |
| 63 | Set Up Starter Project in SAP Central Business Configuration | 2024-09-11 A → 2024-10-16 A (+35d) | 2024-09-11 A → 2024-10-16 A (+35d) |  |  |  |  | baseline start 2024-10-07 → 2024-10-10; baseline finish 2024-10-07 → 2024-10-10 |
| 64 | Set Up SAP Central Business Configuration Integration | 2024-09-13 A → 2024-10-17 A (+34d) | 2024-09-19 A → 2024-10-17 A (+28d) | 5d → 1d |  |  |  | baseline start 2024-10-08 → 2024-10-11; baseline finish 2024-10-08 → 2024-10-11 |
| 65 | **Initial System Access for SAP S/4HANA Cloud** | 2024-09-03 A → 2024-10-17 A (+44d) | 2024-09-20 A → 2024-10-18 A (+28d) | 14d → 2d |  |  |  | baseline start 2024-09-12 → 2024-10-14; baseline finish 2024-09-16 → 2024-10-16 |
| 66 | Access Starter System and Reset Password | 2024-09-03 A → 2024-10-17 A (+44d) | 2024-09-10 A → 2024-10-18 A (+38d) | 6d → 1d |  |  | 30 → 64 | baseline start 2024-09-12 → 2024-10-14; baseline finish 2024-09-12 → 2024-10-14 |
| 67 | Create Users in the Starter System | 2024-09-10 A → 2024-10-17 A (+37d) | 2024-09-11 A → 2024-10-18 A (+37d) | 1d → 0d |  |  |  | baseline start 2024-09-13 → 2024-10-15; baseline finish 2024-09-13 → 2024-10-15 |
| 68 | Self-Activation of Project Team Members in the Identity Authentication Service | 2024-09-20 A → 2024-10-18 A (+28d) | 2024-09-20 A → 2024-10-18 A (+28d) | 1d → 0d |  |  |  | baseline start 2024-09-16 → 2024-10-16; baseline finish 2024-09-16 → 2024-10-16 |
| 69 | **Phase Closure and Sign-Off Phase Deliverables** | 2024-11-12 A → 2024-10-25 A (-18d) | 2024-11-13 A → 2024-10-25 A (-19d) | 2d → 0d |  |  |  | baseline start 2024-10-11 → 2024-10-16; baseline finish 2024-10-11 → 2024-10-16 |
| 70 | Explore Phase Signoff | 2024-11-12 A → 2024-10-25 A (-18d) | 2024-11-13 A → 2024-10-25 A (-19d) | 2d → 0d |  |  | 48FF → 53 | baseline start 2024-10-11 → 2024-10-16; baseline finish 2024-10-11 → 2024-10-16 |
| 71 | **Deliverables** | 2024-09-27 A → 2024-10-25 A (+28d) | 2024-10-21 A → 2024-10-25 A (+4d) | 19d → 1d |  |  |  | baseline start 2024-10-05 → 2024-10-10; baseline finish 2024-10-10 → 2024-10-15 |
| 72 | Fit to Standard documents with Process flow diagram, Gap Analysis | 2024-10-21 A → 2024-10-25 A (+4d) | 2024-10-21 A → 2024-10-25 A (+4d) |  |  |  |  | baseline start 2024-10-05 → 2024-10-10; baseline finish 2024-10-05 → 2024-10-10 |
| 73 | Core team training/ presentation | 2024-09-27 A → 2024-10-25 A (+28d) | 2024-09-27 A → 2024-10-25 A (+28d) |  |  |  |  | baseline start 2024-10-05 → 2024-10-10; baseline finish 2024-10-05 → 2024-10-10 |
| 74 | Initial Master data templates | 2024-10-18 A → 2024-10-25 A (+7d) | 2024-10-18 A → 2024-10-25 A (+7d) | 0d → 1d |  |  |  | baseline start 2024-10-10 → 2024-10-15; baseline finish 2024-10-10 → 2024-10-15 |

| ID | Task | Start | Finish | Duration | Complete | Total float | Predecessors | Other |
| --- | --- | --- | --- | --- | --- | --- | --- | --- |
| 75 | **Realize** | 2024-10-29 A → 2024-10-25 A (-4d) | 2025-01-11 → 2026-01-01 (+355d) | 62d → 307d | 38% → 93% | 330.9d → 0d |  | baseline start 2024-10-12 → 2024-10-15; baseline finish 2024-12-05 → 2024-12-18 |
| 76 | **Requirement gathering sheet (RGS)** | 2024-10-29 A → 2024-10-27 A (-2d) | 2024-11-28 A → 2024-10-30 A (-29d) | 25d → 3d |  |  |  | baseline start 2024-10-12 → 2024-10-16; baseline finish 2024-10-16 → 2024-10-21 |
| 77 | Prepare RGS | 2024-10-29 A → 2024-10-27 A (-2d) | 2024-11-27 A → 2024-10-30 A (-28d) | 12.9d → 3d |  |  | 48 → 53 | constraint finish no earlier than 2024-11-27 → none; baseline start 2024-10-12 → 2024-10-16; baseline finish 2024-10-15 → 2024-10-18 |
| 78 | Submit RGS |  | 2024-11-28 A → 2024-10-30 A (-29d) | 1.25d → 0d |  |  |  | constraint finish no earlier than 2024-11-18 → none; baseline start 2024-10-16 → 2024-10-21; baseline finish 2024-10-16 → 2024-10-21 |
| 79 | **Functional Specifications** | 2024-11-19 A → 2024-10-26 A (-24d) | 2024-12-20 → 2024-12-07 A (-13d) |  | 54% → 100% | 348.9d → none |  | baseline start 2024-10-16 → 2024-10-22; baseline finish 2024-10-22 → 2024-10-29 |
| 80 | Prepare functional specfications | 2024-11-25 A → 2024-10-31 A (-25d) | 2024-12-20 → 2024-12-07 A (-13d) | 19d → 25d | 49% → 100% | 348.9d → none |  | constraint finish no earlier than 2024-12-20 → none; baseline start 2024-10-16 → 2024-10-22; baseline finish 2024-10-19 → 2024-10-25 |
| 81 | Finalize development tracker | 2024-11-19 A → 2024-10-26 A (-24d) | 2024-11-20 A → 2024-11-13 A (-7d) | 2d → 4d |  |  | none → 80 | constraint start no earlier than 2024-11-19 → none; baseline start 2024-10-21 → 2024-10-28; baseline finish 2024-10-22 → 2024-10-29 |
| 82 | **Solution Configuration** | 2024-10-29 A → 2024-10-25 A (-4d) | 2024-12-03 A → 2024-11-08 A (-25d) | 29d → 9d |  |  |  | baseline start 2024-10-21 → 2024-10-28; baseline finish 2024-11-02 → 2024-11-12 |
| 83 | Configure Processes and Functions in golden master (100) | 2024-10-29 A → 2024-10-25 A (-4d) | 2024-11-19 A → 2024-10-31 A (-19d) | 17d → 0d |  |  | none → 80 | constraint start no earlier than 2024-11-19 → none; baseline start 2024-10-21 → 2024-10-28; baseline finish 2024-10-25 → 2024-11-05 |
| 84 | Transfer of Configuration to Dev testing | 2024-11-19 A → 2024-10-31 A (-19d) | 2024-11-20 A → 2024-10-31 A (-20d) | 2d → 0d |  |  |  | constraint start no earlier than 2024-11-21 → none; baseline start 2024-10-26 → 2024-11-06; baseline finish 2024-10-26 → 2024-11-06 |
| 85 | Unit testing-1 (Consultant) | 2024-11-20 A → 2024-10-31 A (-20d) | 2024-12-02 A → 2024-11-04 A (-28d) | 10d → 1d |  |  |  | constraint finish no earlier than 2024-11-27 → none; baseline start 2024-10-28 → 2024-11-07; baseline finish 2024-10-30 → 2024-11-11 |
| 86 | Document and Resolve Issues | 2024-11-20 A → 2024-11-04 A (-16d) | 2024-12-02 A → 2024-11-07 A (-25d) | 11d → 4d |  |  |  | constraint finish no earlier than 2024-11-27 → none; baseline start 2024-10-28 → 2024-11-07; baseline finish 2024-10-30 → 2024-11-11 |
| 87 | Submit Unit Testing result & completion of baseline config | 2024-12-03 A → 2024-11-08 A (-25d) | 2024-12-03 A → 2024-11-08 A (-25d) |  |  |  |  | baseline start 2024-11-02 → 2024-11-12; baseline finish 2024-11-02 → 2024-11-12 |
| 88 | **Core team training & UT** | 2024-11-28 A → 2024-11-13 A (-15d) | 2024-12-10 → 2024-11-29 A (-11d) | 11d → 13d | 88% → 100% | 347.9d → none |  | baseline start 2024-11-02 → 2024-11-13; baseline finish 2024-11-15 → 2024-11-28 |
| 89 | Plan for CTM training | 2024-11-28 A → 2024-11-13 A (-15d) | 2024-11-28 A → 2024-11-13 A (-15d) |  |  |  | 87FF → 87 | constraint start no earlier than 2024-11-26 → none; baseline start 2024-11-02 → 2024-11-13; baseline finish 2024-11-02 → 2024-11-13 |
| 90 | Making necessery training arrangement - PPT + tutorial | 2024-11-29 A → 2024-11-14 A (-15d) | 2024-12-02 A → 2024-11-16 A (-16d) | 3d → 2d |  |  |  | baseline start 2024-11-04 → 2024-11-14; baseline finish 2024-11-05 → 2024-11-15 |
| 91 | Conducting CTM Training (Module wise) | 2024-12-02 A → 2024-11-21 A (-11d) | 2024-12-09 → 2024-11-29 A (-10d) | 6d → 7d | 82% → 100% | 0.55d → none |  | constraint finish no earlier than 2024-12-09 → none; baseline start 2024-11-06 → 2024-11-18; baseline finish 2024-11-08 → 2024-11-20 |
| 92 | Unit Testing by Core team | 2024-12-03 A → 2024-11-29 A (-4d) | 2024-12-10 → 2024-11-29 A (-11d) | 2.5d → 0d | 82% → 100% | 347.9d → none |  | constraint finish no earlier than 2024-12-10 → none; baseline start 2024-11-09 → 2024-11-21; baseline finish 2024-11-15 → 2024-11-28 |
| 93 | **Quality System Request / Initial Setup** | 2024-11-18 A → 2024-11-11 A (-7d) | 2024-11-18 A → 2024-11-13 A (-5d) | 1d → 3d |  |  |  | baseline start 2024-10-12 → 2024-10-17; baseline finish 2024-10-12 → 2024-10-17 |
| 94 | Execute Initial Setup of the Quality System via SAP Central Business Configuration | 2024-11-18 A → 2024-11-11 A (-7d) | 2024-11-18 A → 2024-11-13 A (-5d) | 1d → 3d |  |  |  | baseline start 2024-10-12 → 2024-10-17; baseline finish 2024-10-12 → 2024-10-17 |
| 95 | Request Quality System via Manage Your Solution App | 2024-11-18 A → 2024-11-13 A (-5d) | 2024-11-18 A → 2024-11-13 A (-5d) |  |  |  |  | baseline start 2024-10-12 → 2024-10-17; baseline finish 2024-10-12 → 2024-10-17 |
| 96 | **Quality System Initial Access** | 2024-11-18 A → 2024-11-13 A (-5d) | 2024-12-27 → 2026-01-01 (+370d) | 34d → 296d | 55% → 91% | 343.9d → 0d |  | baseline start 2024-10-12 → 2024-10-17; baseline finish 2024-10-19 → 2024-10-25 |
| 97 | Receive Quality System and Reset Password | 2024-11-18 A → 2024-11-13 A (-5d) | 2024-11-21 A → 2024-11-13 A (-8d) | 4d → 0d |  |  |  | baseline start 2024-10-14 → 2024-10-18; baseline finish 2024-10-14 → 2024-10-18 |
| 98 | Create Preset Configuration User in the Quality System via Manage Your Solution App | 2024-12-20 A → 2024-11-13 A (-37d) | 2024-12-20 A → 2024-11-13 A (-37d) |  |  |  |  | constraint start no earlier than 2024-12-17 → none; baseline start 2024-10-15 → 2024-10-21; baseline finish 2024-10-15 → 2024-10-21 |
| 99 | Define Preset Parameters and Trigger System Activation via Manage Your Solution App | 2024-12-20 A → 2024-11-14 A (-36d) | 2024-12-20 A → 2024-11-14 A (-36d) |  |  |  |  | baseline start 2024-10-16 → 2024-10-22; baseline finish 2024-10-16 → 2024-10-22 |
| 100 | **Create Users in the Quality Server** | 2024-11-28 A → 2025-12-27 A (+394d) | 2024-12-27 → 2025-12-31 A (+369d) | 25d → 3d | 0% → 100% | 343.9d → none |  | baseline start 2024-10-12 → 2024-10-17; baseline finish 2024-10-18 → 2024-10-24 |
| 101 | **Finalize list of users for QAS** | 2024-11-28 A → 2025-12-27 A (+394d) | 2024-12-27 → 2025-12-31 A (+369d) | 25d → 3d | 0% → 100% | 343.9d → none |  | baseline start 2024-10-12 → 2024-10-17; baseline finish 2024-10-18 → 2024-10-24 |
| 102 | **Provide user authorization** | 2024-11-28 A → 2025-12-27 A (+394d) | 2024-12-27 → 2025-12-31 A (+369d) | 25d → 3d | 0% → 100% | 343.9d → none |  | baseline start 2024-10-12 → 2024-10-17; baseline finish 2024-10-18 → 2024-10-24 |
| 103 | Finalize user authorization | 2024-11-28 A → 2025-12-27 A (+394d) | 2024-11-28 → 2025-12-30 A (+397d) | 1d → 2d | 0% → 100% | 363.9d → none |  | baseline start 2024-10-12 → 2024-10-17; baseline finish 2024-10-14 → 2024-10-18 |
| 104 | Create roles and authorization | 2024-12-23 → 2025-12-27 A (+369d) | 2024-12-23 → 2025-12-30 A (+372d) | 1d → 2d | 0% → 100% | 343.9d → none |  | constraint start no earlier than 2024-12-23 → none; baseline start 2024-10-15 → 2024-10-21; baseline finish 2024-10-15 → 2024-10-21 |
| 105 | Testing of roles and authorization | 2024-12-24 → 2025-12-27 A (+368d) | 2024-12-26 → 2025-12-30 A (+369d) |  | 0% → 100% | 343.9d → none |  | baseline start 2024-10-16 → 2024-10-22; baseline finish 2024-10-17 → 2024-10-23 |
| 106 | Deployment of roles to users | 2024-12-27 → 2025-12-30 A (+368d) | 2024-12-27 → 2025-12-31 A (+369d) | 1d → 2d | 0% → 100% | 343.9d → none |  | baseline start 2024-10-18 → 2024-10-24; baseline finish 2024-10-18 → 2024-10-24 |
| 107 | Self-Activation of Project Team Members in the Identity Authentication Service | 2024-11-22 A → 2026-01-01 (+405d) | 2024-11-22 A → 2026-01-01 (+405d) | 0d → 1d | 100% → 0% | none → 0d |  | baseline start 2024-10-19 → 2024-10-25; baseline finish 2024-10-19 → 2024-10-25 |
| 108 | **Required Configuration Before System Use - SAP S/4HANA Cloud** | 2024-12-20 A → 2024-11-14 A (-36d) | 2024-12-20 A → 2024-11-14 A (-36d) |  |  |  |  | baseline start 2024-10-15 → 2024-10-21; baseline finish 2024-10-15 → 2024-10-21 |
| 109 | Configure system | 2024-12-20 A → 2024-11-14 A (-36d) | 2024-12-20 A → 2024-11-14 A (-36d) |  |  |  |  | constraint start no earlier than 2024-12-17 → none; baseline start 2024-10-15 → 2024-10-21; baseline finish 2024-10-15 → 2024-10-21 |
| 110 | **Standard Integration Setup in the Quality/Test System** | 2024-12-23 → 2024-11-14 A (-39d) | 2024-12-26 → 2024-11-15 A (-41d) | 3d → 2d | 0% → 100% | 344.9d → none |  | baseline start 2024-10-16 → 2024-10-22; baseline finish 2024-10-18 → 2024-10-24 |
| 111 | Set Up Integration using Cloud Integration Automation Service (CIAS) | 2024-12-23 → 2024-11-14 A (-39d) | 2024-12-23 → 2024-11-14 A (-39d) |  | 0% → 100% | 344.9d → none |  | constraint start no earlier than 2024-12-23 → none; baseline start 2024-10-16 → 2024-10-22; baseline finish 2024-10-16 → 2024-10-22 |
| 112 | Set Up Employee Central Integration (JB1) | 2024-12-24 → 2024-11-15 A (-39d) | 2024-12-24 → 2024-11-15 A (-39d) |  | 0% → 100% | 344.9d → none |  | baseline start 2024-10-17 → 2024-10-23; baseline finish 2024-10-17 → 2024-10-23 |
| 113 | Set Up Integrations in the Quality/Test System | 2024-12-26 → 2024-11-15 A (-41d) | 2024-12-26 → 2024-11-15 A (-41d) | 1d → 0d | 0% → 100% | 344.9d → none |  | baseline start 2024-10-18 → 2024-10-24; baseline finish 2024-10-18 → 2024-10-24 |
| 114 | **System Integration Test** | 2024-11-21 A → 2024-11-06 A (-15d) | 2025-01-10 → 2025-12-19 (+343d) | 43d → 292d | 9% → 96% | 331.9d → 9d |  | baseline start 2024-10-12 → 2024-10-15; baseline finish 2024-12-04 → 2024-12-18 |
| 115 | **Integration test Plan** | 2024-11-28 A → 2024-11-23 A (-5d) | 2024-12-28 → 2024-12-31 A (+3d) |  | 20% → 100% | 342.9d → none |  | baseline start 2024-10-12 → 2024-10-15; baseline finish 2024-11-11 → 2024-11-22 |
| 116 | Identify scenerios for Integration test | 2024-12-18 A → 2024-11-23 A (-25d) | 2024-12-18 A → 2024-11-23 A (-25d) | 1d → 0d |  |  |  | constraint start no earlier than 2024-12-16 → none; baseline start 2024-11-09 → 2024-11-21; baseline finish 2024-11-11 → 2024-11-22 |
| 117 | Write scripts for Integration test | 2024-12-20 A → 2024-11-27 A (-23d) | 2024-12-20 A → 2024-11-27 A (-23d) |  |  |  |  | baseline start 2024-11-09 → 2024-11-21; baseline finish 2024-11-11 → 2024-11-21 |
| 118 | **Master data** | 2024-12-20 A → 2024-12-31 A (+11d) | 2024-12-28 → 2024-12-31 A (+3d) | 7d → 1d | 57% → 100% | 342.9d → none |  | baseline start 2024-10-22 → 2024-10-15; baseline finish 2024-11-07 → 2024-11-18 |
| 119 | Receipt Master Data from NL | 2024-12-20 A → 2024-12-31 A (+11d) | 2024-12-24 A → 2024-12-31 A (+7d) | 4d → 1d |  |  | 47FS+10d → 47 | was named Receipt Master Data from PA; constraint start no earlier than 2024-12-16 → none; baseline start 2024-10-22 → 2024-10-15; baseline finish 2024-11-04 → 2024-11-13 |
| 120 | Upload Master data in QAS | 2024-12-23 A → 2024-12-31 A (+8d) | 2024-12-28 → 2024-12-31 A (+3d) | 3d → 0d | 0% → 100% | 342.9d → none |  | baseline start 2024-11-05 → 2024-11-14; baseline finish 2024-11-07 → 2024-11-18 |
| 121 | **Identity and Access Management Planning and Design** | 2024-11-28 A → 2024-12-31 A (+33d) | 2024-12-21 → 2024-12-31 A (+10d) | 21d → 1d | 0% → 100% | 336.9d → none |  | baseline start 2024-10-12 → 2024-10-17; baseline finish 2024-11-06 → 2024-11-15 |
| 122 | Finalize list of users | 2024-11-28 A → 2024-12-31 A (+33d) | 2024-12-16 → 2024-12-31 A (+15d) | 16d → 1d | 0% → 100% | 336.9d → none |  | constraint finish no earlier than 2024-12-16 → none; baseline start 2024-10-12 → 2024-10-17; baseline finish 2024-10-29 → 2024-11-08 |
| 123 | Provide & Check roles and authorization | 2024-12-17 → 2024-12-31 A (+14d) | 2024-12-21 → 2024-12-31 A (+10d) | 5d → 0d | 0% → 100% | 336.9d → none |  | baseline start 2024-10-30 → 2024-11-11; baseline finish 2024-11-06 → 2024-11-15 |
| 124 | **Conduct System integration test** | 2024-12-23 A → 2024-11-27 A (-26d) | 2025-01-10 → 2025-01-02 (-8d) | 16d → 25.8d | 0% → 91% | 328.9d → 260.2d |  | baseline start 2024-11-12 → 2024-11-22; baseline finish 2024-12-04 → 2024-12-11 |
| 125 | Perform Integration testing by Consultant | 2024-12-23 A → 2024-11-27 A (-26d) | 2024-12-31 → 2024-11-30 A (-31d) | 7d → 2d | 0% → 100% | 329.9d → none |  | constraint start no earlier than 2024-12-23 → none; baseline start 2024-11-12 → 2024-11-22; baseline finish 2024-11-19 → 2024-11-29 |
| 126 | Perform User Acceptance test - CTM | 2025-01-02 → 2024-12-02 A (-31d) | 2025-01-08 → 2025-01-02 (-6d) |  | 0% → 70% | 328.9d → 260.2d |  | constraint start no earlier than 2025-01-02 → none; baseline start 2024-11-20 → 2024-12-02; baseline finish 2024-11-30 → 2024-12-09 |
| 127 | Resolving the issues, if any | 2025-01-02 → 2024-12-02 A (-31d) | 2025-01-08 → 2024-12-20 A (-19d) | 6d → 15d | 0% → 100% | 328.9d → none |  | baseline start 2024-11-20 → 2024-12-02; baseline finish 2024-11-30 → 2024-12-09 |
| 128 | Retesting of scenarios | 2025-01-09 → 2024-12-23 A (-17d) | 2025-01-10 → 2024-12-31 A (-10d) | 2d → 6d | 0% → 100% | 328.9d → none |  | baseline start 2024-12-02 → 2024-12-10; baseline finish 2024-12-04 → 2024-12-11 |
| 129 | UAT (by CTM) signoff | 2025-01-10 → 2024-12-31 (-10d) | 2025-01-10 → 2024-12-31 (-10d) |  |  | 328.9d → 261d |  | baseline start 2024-12-04 → 2024-12-11; baseline finish 2024-12-04 → 2024-12-11 |
| 130 | **ABAP Development - SIT Critical** | 2024-11-21 A → 2024-11-06 A (-15d) | 2024-12-31 A | 34d → 39d | 8% → 100% | 340.9d → none |  | baseline start 2024-10-26 → 2024-11-06; baseline finish 2024-12-03 → 2024-12-18 |
| 131 | Develop reports | 2024-11-21 A → 2024-11-06 A (-15d) | 2024-12-26 → 2024-12-30 A (+4d) | 30d → 38d | 19% → 100% | 0d → none |  | constraint start no earlier than 2024-11-21 → none; baseline start 2024-10-26 → 2024-11-06; baseline finish 2024-11-26 → 2024-12-10 |
| 132 | Testing by consultant | 2024-11-25 A → 2024-11-17 A (-8d) | 2024-12-27 → 2024-12-30 A (+3d) | 28d → 30d | 5% → 100% | 343.9d → none |  | baseline start 2024-10-30 → 2024-11-11; baseline finish 2024-11-29 → 2024-12-13 |
| 133 | Testing by CTM | 2024-11-28 → 2024-11-21 A (-7d) | 2024-12-31 → 2024-12-30 A (-1d) | 28d → 27d | 0% → 100% | 340.9d → none |  | baseline start 2024-11-05 → 2024-11-14; baseline finish 2024-12-03 → 2024-12-18 |
| 134 | Sign off Development | 2024-12-31 → 2024-12-30 A (-1d) | 2024-12-31 A | 1d → 2d | 0% → 100% | 340.9d → none |  | baseline start 2024-12-03 → 2024-12-18; baseline finish 2024-12-03 → 2024-12-18 |
| 140 | **Cutover Strategy** | 2024-12-24 → 2024-12-23 A (-1d) | 2024-12-24 → 2024-12-26 A (+2d) | 1d → 3d | 0% → 100% | 7d → none |  | baseline start 2024-12-05 → 2024-12-10; baseline finish 2024-12-05 → 2024-12-12 |
| 141 | Discussion on cutover strategy | 2024-12-24 → 2024-12-23 A (-1d) | 2024-12-24 → 2024-12-26 A (+2d) | 1d → 3d | 0% → 100% | 7d → none | none → 127 | constraint start no earlier than 2024-12-24 → none; baseline start 2024-12-05 → 2024-12-10; baseline finish 2024-12-05 → 2024-12-11 |
| 142 | Cutover & data responsibility Plan | 2024-12-24 → 2024-12-26 A (+2d) | 2024-12-24 → 2024-12-26 A (+2d) | 1d → 0d | 0% → 100% | 7d → none | 141FF → 141 | baseline start 2024-12-05 → 2024-12-12; baseline finish 2024-12-05 → 2024-12-12 |
| 143 | Communication to Organisation for Cutover | 2024-12-24 → 2024-12-26 A (+2d) | 2024-12-24 → 2024-12-26 A (+2d) |  | 0% → 100% | 7d → none |  | baseline start 2024-12-05 → 2024-12-12; baseline finish 2024-12-05 → 2024-12-12 |
| 144 | **End user training plan** | 2024-12-27 → 2024-11-29 (-28d) | 2024-12-28 → 2024-12-02 (-26d) |  |  | 334.9d → 282d |  | baseline start 2024-11-16 → 2024-11-29; baseline finish 2024-11-18 → 2024-12-02 |
| 145 | Preparation of End User training plan | 2024-12-27 → 2024-11-29 (-28d) | 2024-12-28 → 2024-12-02 (-26d) |  |  | 334.9d → 226d |  | constraint start no earlier than 2024-12-27 → none; baseline start 2024-11-16 → 2024-11-29; baseline finish 2024-11-18 → 2024-12-02 |
| 146 | Communicate plan to NL | 2024-12-28 → 2024-12-02 (-26d) | 2024-12-28 → 2024-12-02 (-26d) |  |  | 334.9d → 226d |  | was named Communicate plan to PA; baseline start 2024-11-18 → 2024-12-02; baseline finish 2024-11-18 → 2024-12-02 |
| 147 | **Production System Request** | 2024-12-30 → 2024-12-17 A (-13d) | 2024-12-31 → 2024-12-18 (-13d) |  | 0% → 50% | 338.9d → 270d |  | baseline start 2024-10-12 → 2024-10-17; baseline finish 2024-10-14 → 2024-10-18 |
| 148 | Request for Production System | 2024-12-30 → 2024-12-17 A (-13d) | 2024-12-30 → 2024-12-17 A (-13d) |  | 0% → 100% | 338.9d → none |  | constraint start no earlier than 2024-12-30 → none; baseline start 2024-10-12 → 2024-10-17; baseline finish 2024-10-12 → 2024-10-17 |
| 149 | Request Access to the SAP S/4HANA Cloud Release Assessment Tool. | 2024-12-31 → 2024-12-18 (-13d) | 2024-12-31 → 2024-12-18 (-13d) |  |  | 338.9d → 270d |  | baseline start 2024-10-14 → 2024-10-18; baseline finish 2024-10-14 → 2024-10-18 |

| ID | Task | Start | Finish | Duration | Complete | Total float | Predecessors | Other |
| --- | --- | --- | --- | --- | --- | --- | --- | --- |
| 150 | **Production System Initial Access** | 2025-01-01 → 2024-12-19 A (-13d) | 2025-01-02 → 2024-12-30 A (-3d) | 2d → 7d | 0% → 100% | 338.9d → none |  | baseline start 2024-10-15 → 2024-10-21; baseline finish 2024-10-16 → 2024-10-22 |
| 151 | Receive Production System and Reset Password | 2025-01-01 → 2024-12-19 A (-13d) | 2025-01-01 → 2024-12-30 A (-2d) | 1d → 7d | 0% → 100% | 338.9d → none |  | baseline start 2024-10-15 → 2024-10-21; baseline finish 2024-10-15 → 2024-10-21 |
| 152 | Transport Initial Change Project from Q-System to P-System | 2025-01-02 → 2024-12-28 A (-5d) | 2025-01-02 → 2024-12-28 A (-5d) | 1d → 0d | 0% → 100% | 338.9d → none |  | baseline start 2024-10-16 → 2024-10-22; baseline finish 2024-10-16 → 2024-10-22 |
| 153 | Phase Closure & Signoff Phase deliverables | 2025-01-11 → 2025-01-01 (-10d) | 2025-01-11 → 2025-01-01 (-10d) |  |  | 330.9d → 261d |  | baseline start 2024-12-05 → 2024-12-12; baseline finish 2024-12-05 → 2024-12-12 |
| 154 | **Deliverables** | 2024-12-04 → 2024-11-11 (-23d) | 2025-01-10 → 2024-12-31 (-10d) | 32d → 36d |  | 331.9d → 262d |  | baseline start 2024-11-04 → 2024-11-13; baseline finish 2024-12-05 → 2024-12-12 |
| 155 | D: Test scripts | 2024-12-21 → 2024-11-28 (-23d) | 2024-12-21 → 2024-11-28 (-23d) |  |  | 347.9d → 232d |  | baseline start 2024-11-12 → 2024-11-22; baseline finish 2024-11-12 → 2024-11-22 |
| 156 | D: Unit test result document | 2024-12-04 → 2024-11-11 (-23d) | 2024-12-04 → 2024-11-11 (-23d) |  |  | 360.9d → 291d |  | baseline start 2024-11-04 → 2024-11-13; baseline finish 2024-11-04 → 2024-11-13 |
| 157 | D: Integration testing document | 2025-01-01 → 2024-12-02 (-30d) | 2025-01-01 → 2024-12-02 (-30d) |  |  | 339.9d → 230d |  | baseline start 2024-11-20 → 2024-12-02; baseline finish 2024-11-20 → 2024-12-02 |
| 158 | D: User Acceptance testing document | 2025-01-10 → 2024-12-31 (-10d) | 2025-01-10 → 2024-12-31 (-10d) |  |  | 331.9d → 262d |  | baseline start 2024-12-04 → 2024-12-11; baseline finish 2024-12-04 → 2024-12-11 |
| 159 | D: Final master data templates | 2024-12-24 → 2024-12-26 (+2d) | 2024-12-24 → 2024-12-26 (+2d) |  |  | 345.9d → 265d |  | baseline start 2024-12-05 → 2024-12-12; baseline finish 2024-12-05 → 2024-12-12 |
| 160 | D: Data migration strategy document | 2024-12-24 → 2024-12-26 (+2d) | 2024-12-24 → 2024-12-26 (+2d) |  |  | 345.9d → 265d |  | baseline start 2024-12-05 → 2024-12-12; baseline finish 2024-12-05 → 2024-12-12 |
| 161 | **Deploy** | 2024-12-27 → 2024-12-02 A (-25d) | 2025-02-03 → 2025-01-14 (-20d) | 32.9d → 31d | 0% → 64% | 0d → 252d |  | baseline start 2024-11-19 → 2024-10-15; baseline finish 2025-01-07 → 2024-12-31 |
| 162 | **ABAP Developments Pre Go Live** | 2024-12-27 → 2024-12-02 A (-25d) | 2025-02-01 → 2024-12-31 A (-32d) | 32d → 21d | 0% → 100% |  |  | baseline start 2024-11-27 → 2024-12-02; baseline finish 2025-01-06 → 2024-12-31 |
| 163 | Develop reports | 2024-12-27 → 2024-12-02 A (-25d) | 2025-01-27 → 2024-12-30 A (-28d) | 27d → 8.5d | 0% → 100% | 0d → none | 131 → 131FS-7d | constraint start no earlier than 2024-12-27 → start no earlier than 2022-12-20; baseline start 2024-11-27 → 2024-12-02; baseline finish 2024-12-28 → 2024-12-20 |
| 164 | Testing by consultant | 2024-12-31 → 2024-12-02 A (-29d) | 2025-01-28 → 2024-12-30 A (-29d) | 25d → 17d | 0% → 100% | 0d → none |  | baseline start 2024-11-30 → 2024-12-05; baseline finish 2025-01-01 → 2024-12-26 |
| 165 | Testing by CTM | 2025-01-02 → 2024-12-04 A (-29d) | 2025-01-30 → 2024-12-30 A (-31d) | 25d → 18d | 0% → 100% | 0d → none |  | baseline start 2024-12-03 → 2024-12-09; baseline finish 2025-01-03 → 2024-12-30 |
| 166 | Sign off Development | 2025-01-31 → 2024-12-31 A (-31d) | 2025-02-01 → 2024-12-31 A (-32d) | 2d → 1d | 0% → 100% | 0d → none |  | baseline start 2025-01-04 → 2024-12-31; baseline finish 2025-01-06 → 2024-12-31 |
| 167 | **End User Training** | 2025-01-13 → 2024-12-27 (-17d) | 2025-01-23 → 2025-01-09 (-14d) |  |  | 320.9d → 255d |  | baseline start 2024-12-06 → 2024-12-13; baseline finish 2024-12-17 → 2024-12-27 |
| 168 | Prepare end user training manual | 2025-01-13 → 2024-12-27 (-17d) | 2025-01-14 → 2024-12-30 (-15d) |  |  | 320.9d → 255d |  | constraint start no earlier than 2025-01-13 → none; baseline start 2024-12-06 → 2024-12-13; baseline finish 2024-12-07 → 2024-12-16 |
| 169 | Conduct end user training | 2025-01-15 → 2024-12-31 (-15d) | 2025-01-20 → 2025-01-06 (-14d) |  |  | 320.9d → 255d |  | baseline start 2024-12-09 → 2024-12-17; baseline finish 2024-12-13 → 2024-12-23 |
| 170 | Conduct training to HODs/Management | 2025-01-21 → 2025-01-07 (-14d) | 2025-01-23 → 2025-01-09 (-14d) |  |  | 320.9d → 255d |  | baseline start 2024-12-14 → 2024-12-24; baseline finish 2024-12-17 → 2024-12-27 |
| 171 | **Production Environment Preparation** | 2025-01-11 → 2024-12-15 A (-27d) | 2025-01-14 → 2024-12-30 A (-15d) | 3d → 10d | 0% → 100% | 328.9d → none |  | baseline start 2024-12-05 → 2024-12-12; baseline finish 2024-12-07 → 2024-12-16 |
| 172 | Transport final configurations | 2025-01-11 → 2024-12-15 A (-27d) | 2025-01-11 → 2024-12-28 A (-14d) | 1d → 0d | 0% → 100% | 328.9d → none |  | baseline start 2024-12-05 → 2024-12-12; baseline finish 2024-12-05 → 2024-12-12 |
| 173 | Maintain number ranges | 2025-01-13 → 2024-12-30 A (-14d) | 2025-01-13 → 2024-12-30 A (-14d) |  | 0% → 100% | 328.9d → none |  | baseline start 2024-12-06 → 2024-12-13; baseline finish 2024-12-06 → 2024-12-13 |
| 174 | Maintain client specific data | 2025-01-14 → 2024-12-30 A (-15d) | 2025-01-14 → 2024-12-30 A (-15d) | 1d → 0d | 0% → 100% | 328.9d → none |  | baseline start 2024-12-07 → 2024-12-16; baseline finish 2024-12-07 → 2024-12-16 |
| 175 | **User creation** | 2024-12-30 → 2024-12-03 A (-27d) | 2025-01-07 → 2024-12-30 A (-8d) | 8d → 19d | 0% → 100% | 334.9d → none |  | baseline start 2024-11-19 → 2024-12-03; baseline finish 2024-12-18 → 2024-12-30 |
| 176 | Finalize list of users for production enviornment | 2024-12-30 → 2024-12-03 A (-27d) | 2024-12-31 → 2024-12-30 A (-1d) | 2d → 19d | 0% → 100% | 334.9d → none |  | constraint start no earlier than 2024-12-26 → none; baseline start 2024-11-19 → 2024-12-03; baseline finish 2024-11-20 → 2024-12-04 |
| 177 | Finalise Authorization Matrix | 2025-01-01 → 2024-12-28 A (-4d) | 2025-01-02 → 2024-12-28 A (-5d) | 2d → 0d | 0% → 100% | 334.9d → none |  | baseline start 2024-11-21 → 2024-12-05; baseline finish 2024-11-22 → 2024-12-06 |
| 178 | Check roles and authorization | 2025-01-03 → 2024-12-30 A (-4d) | 2025-01-07 → 2024-12-30 A (-8d) | 4d → 0d | 0% → 100% | 334.9d → none | 177 → 169 | baseline start 2024-12-14 → 2024-12-24; baseline finish 2024-12-18 → 2024-12-30 |
| 179 | **Data preparation and upload** | 2024-12-30 → 2024-12-24 A (-6d) | 2025-01-30 → 2025-01-10 (-20d) | 28d → 13d | 0% → 20% | 4d → 254d |  | baseline start 2024-11-28 → 2024-10-15; baseline finish 2025-01-06 → 2024-12-26 |
| 180 | Receipt of master data | 2024-12-30 → 2024-12-24 A (-6d) | 2025-01-03 → 2024-12-30 A (-4d) | 5d → 4d | 0% → 100% | 14d → none | 47FS+55d → 47 | constraint start no earlier than 2024-12-16 → none; baseline start 2024-11-28 → 2024-10-15; baseline finish 2024-12-20 → 2024-12-11 |
| 181 | Validate & cleanse master data | 2025-01-04 → 2024-12-24 A (-11d) | 2025-01-04 → 2024-12-30 A (-5d) | 1d → 0d | 0% → 100% | 14d → none |  | baseline start 2024-12-21 → 2024-12-12; baseline finish 2024-12-21 → 2024-12-13 |
| 182 | Upload master data in Production | 2025-01-06 → 2024-12-30 A (-7d) | 2025-01-09 → 2024-12-31 A (-9d) | 4d → 0d | 0% → 100% | 14d → none |  | baseline start 2024-12-23 → 2024-12-16; baseline finish 2024-12-27 → 2024-12-19 |
| 183 | Confirm uploaded master data | 2025-01-10 → 2024-12-30 A (-11d) | 2025-01-10 → 2024-12-30 A (-11d) | 1d → 0d | 0% → 100% | 331.9d → none |  | baseline start 2024-12-28 → 2024-12-20; baseline finish 2024-12-28 → 2024-12-20 |
| 184 | Receipt of cutover data | 2025-01-01 → 2024-12-31 A (-1d) | 2025-01-23 → 2025-01-07 (-16d) | 20d → 6d |  | 2d → 228d |  | constraint start no earlier than 2025-01-01 → none; baseline start 2024-12-06 → 2024-12-13; baseline finish 2024-12-30 → 2024-12-20 |
| 185 | Validate & cleanse cutover data | 2025-01-24 → 2024-12-27 (-28d) | 2025-01-30 → 2025-01-03 (-27d) |  |  | 314.9d → 259d | 184 → 143 | baseline start 2024-12-31 → 2024-12-13; baseline finish 2025-01-06 → 2024-12-20 |
| 186 | Upload cutover data in production | 2025-01-24 → 2025-01-08 (-16d) | 2025-01-30 → 2025-01-10 (-20d) | 6d → 3d |  | 2d → 228d |  | baseline start 2024-12-31 → 2024-12-23; baseline finish 2025-01-06 → 2024-12-26 |
| 187 | Check and validate uploaded data | 2025-01-30 → 2025-01-10 (-20d) | 2025-01-30 → 2025-01-10 (-20d) |  |  | 2d → 228d |  | baseline start 2025-01-06 → 2024-12-26; baseline finish 2025-01-06 → 2024-12-26 |
| 188 | **Deliverables** | 2025-01-01 → 2024-12-31 (-1d) | 2025-01-17 → 2025-01-03 (-14d) | 15d → 4d |  | 325.9d → 259d |  | baseline start 2024-11-21 → 2024-12-05; baseline finish 2024-12-31 → 2024-12-24 |
| 189 | D: End user training manual | 2025-01-15 → 2024-12-31 (-15d) | 2025-01-17 → 2025-01-02 (-15d) |  |  | 325.9d → 260d |  | baseline start 2024-12-09 → 2024-12-17; baseline finish 2024-12-11 → 2024-12-19 |
| 190 | D: Data migration plan & checklist | 2025-01-04 → 2024-12-31 (-4d) | 2025-01-07 → 2025-01-02 (-5d) |  |  | 334.9d → 260d |  | baseline start 2024-12-21 → 2024-12-12; baseline finish 2024-12-24 → 2024-12-16 |
| 191 | D: Master data upload programs | 2025-01-10 → 2025-01-01 (-9d) | 2025-01-13 → 2025-01-03 (-10d) |  |  | 329.9d → 259d |  | baseline start 2024-12-28 → 2024-12-20; baseline finish 2024-12-31 → 2024-12-24 |
| 192 | D: Sample data upload validation | 2025-01-10 → 2025-01-01 (-9d) | 2025-01-10 → 2025-01-01 (-9d) |  |  | 331.9d → 261d |  | baseline start 2024-12-28 → 2024-12-20; baseline finish 2024-12-28 → 2024-12-20 |
| 193 | D: Final SAP Authorization matrix | 2025-01-01 → 2024-12-31 (-1d) | 2025-01-01 → 2024-12-31 (-1d) |  |  | 339.9d → 262d |  | baseline start 2024-11-21 → 2024-12-05; baseline finish 2024-11-21 → 2024-12-05 |
| 194 | **Phase Closure & Sign Off Phase Deliverables** | 2025-02-03 → 2025-01-13 (-21d) | 2025-02-03 → 2025-01-14 (-20d) | 0.9d → 2d |  | 0d → 228d |  | baseline start 2025-01-07 → 2024-12-27; baseline finish 2025-01-07 → 2024-12-30 |
| 195 | Deploy signoff | 2025-02-03 → 2025-01-13 (-21d) | 2025-02-03 → 2025-01-13 (-21d) | 0.9d → 1d |  | 0d → 228d | 187, 166 → 187 | baseline start 2025-01-07 → 2024-12-27; baseline finish 2025-01-07 → 2024-12-27 |
| 196 | Completion of Final Preparation (Deploy) Phase | 2025-02-03 → 2025-01-14 (-20d) | 2025-02-03 → 2025-01-14 (-20d) | 0.9d → 1d |  | 0d → 228d | 195FF → 195 | baseline start 2025-01-07 → 2024-12-30; baseline finish 2025-01-07 → 2024-12-30 |
| 197 | Go Live | 2025-02-03 → 2025-01-15 (-19d) | 2025-02-03 → 2025-01-15 (-19d) | 0.1d → 1d |  | 0d → 228d | 196FF → 196 | baseline start 2025-01-08 → 2024-12-31; baseline finish 2025-01-08 → 2024-12-31 |
| 198 | **Stabilization** | 2025-02-03 → 2025-01-16 (-18d) | 2025-03-06 → 2025-02-17 (-17d) | 27d → 23d |  | 0d → 228d |  | baseline start 2025-01-09 → 2025-01-01; baseline finish 2025-02-08 → 2025-01-31 |
| 199 | Stabilization (Post Go live Support) | 2025-02-03 → 2025-01-16 (-18d) | 2025-03-06 → 2025-02-17 (-17d) | 27d → 23d |  | 0d → 228d |  | was named Stabilization; baseline start 2025-01-09 → 2025-01-01; baseline finish 2025-02-08 → 2025-01-31 |
| 200 | **Deliverables** | 2025-02-03 → 2025-01-16 (-18d) | 2025-03-06 → 2025-02-17 (-17d) | 27d → 23d |  | 285d → 228d |  | baseline start 2025-01-09 → 2025-01-01; baseline finish 2025-02-08 → 2025-01-31 |
| 201 | D: Issue list with resolution status | 2025-02-03 → 2025-01-16 (-18d) | 2025-03-06 → 2025-02-17 (-17d) | 27d → 23d |  | 285d → 228d |  | baseline start 2025-01-09 → 2025-01-01; baseline finish 2025-02-08 → 2025-01-31 |
| 202 | D: Configuration documents | 2025-02-03 → 2025-01-16 (-18d) | 2025-03-06 → 2025-02-17 (-17d) | 27d → 23d |  | 285d → 228d |  | baseline start 2025-01-09 → 2025-01-01; baseline finish 2025-02-08 → 2025-01-31 |
| 203 | D: FS & TS | 2025-02-03 → 2025-01-16 (-18d) | 2025-03-06 → 2025-02-17 (-17d) | 27d → 23d |  | 285d → 228d |  | baseline start 2025-01-09 → 2025-01-01; baseline finish 2025-02-08 → 2025-01-31 |
| 204 | D: Cre team training document | 2025-02-03 → 2025-01-16 (-18d) | 2025-03-06 → 2025-02-17 (-17d) | 27d → 23d |  | 285d → 228d |  | baseline start 2025-01-09 → 2025-01-01; baseline finish 2025-02-08 → 2025-01-31 |

## Version 14 (data date 2022-10-13, saved 2025-01-10, file TASK_00631275_1_10012025191602.mpp)

Note of the change: Add project files.

Last finish 2026-01-01 → 2026-04-10 (+99d). Complete tasks 106 → 80.

Added:

| ID | Task | Duration | Start | Finish | Predecessors | Constraint |
| --- | --- | --- | --- | --- | --- | --- |
| 49 | Integration with ASP/GSP | 1d | 2024-10-09 A | 2024-10-09 A | 40 |  |
| 50 | Integration with bank host to host (upto 3) | 1d | 2024-10-09 A | 2024-10-09 A | 40 | as late as possible |
| 51 | Integration with Primavera | 4d | 2024-10-11 A | 2024-10-25 A | 40 |  |
| 52 | Integration with third party payroll | 17d | 2024-10-11 A | 2024-11-12 A | 40 | finish no earlier than 2024-11-12 |
| 200 | One month extended support | 24d | 2025-03-13 | 2025-04-10 | 193 |  |
| 201 | **Phase 2: One Year AMC** | 261d | 2025-04-11 | 2026-04-10 |  |  |
| 202 | AMC Support | 261d | 2025-04-11 | 2026-04-10 | 200 | finish no earlier than 2026-03-09 |

Removed: 50 Integration with bank host to host (upto2); 51 Integration with HRMS (Payroll); 52 Integration with Cloud Steer CRM; 53 Integration with DMS; 135 Third Party Interface; 136 Development; 137 Testing by consultant; 138 Testing by CTM; 139 Sign off Development

Changed:

| ID | Task | Start | Finish | Duration | Complete | Total float | Predecessors | Other |
| --- | --- | --- | --- | --- | --- | --- | --- | --- |
| 1 | **SAP Implementation at PA** | 2024-09-05 A → 2024-09-02 A (-3d) | 2026-01-01 → 2026-04-10 (+99d) | 341d → 442d | 67% → 37% |  |  | was named SAP Implementation at NEO LIV; baseline start 2024-09-05 → 2024-09-02; baseline finish 2025-01-31 → 2026-03-09 |
| 2 | **Phase 1: S4 HANA Implementation (Public Cloud)** | 2024-09-05 A → 2024-09-02 A (-3d) | 2026-01-01 → 2025-04-10 (-266d) | 341d → 181d | 67% → 50% | 0d → 261d |  | was named Wave 1A: S4 HANA Implementation (Public Cloud); baseline start 2024-09-05 → 2024-09-02; baseline finish 2025-01-31 → 2025-03-08 |
| 3 | **Implementation** | 2024-09-05 A → 2024-09-02 A (-3d) | 2026-01-01 → 2025-02-08 (-327d) | 341d → 130d | 83% → 62% | 0d → 312d |  | baseline start 2024-09-05 → 2024-09-02; baseline finish 2024-12-31 → 2025-01-07 |
| 4 | **Prepare** | 2024-09-05 A → 2024-09-02 A (-3d) | 2024-09-23 A → 2024-09-10 A (-13d) | 12d → 7d |  |  |  | baseline start 2024-09-05 → 2024-09-02; baseline finish 2024-09-11 → 2024-09-10 |
| 5 | **Project Kick Off and On-Boarding** | 2024-09-05 A → 2024-09-02 A (-3d) | 2024-09-05 A → 2024-09-10 A (+5d) | 1d → 7d |  |  |  | baseline start 2024-09-05 → 2024-09-02; baseline finish 2024-09-05 → 2024-09-09 |
| 6 | On-board Project Team | 2024-09-05 A → 2024-09-02 A (-3d) | 2024-09-05 A → 2024-09-10 A (+5d) | 1d → 7d |  |  |  | constraint start no earlier than 2024-09-05 → finish no earlier than 2024-09-09; baseline start 2024-09-05 → 2024-09-02; baseline finish 2024-09-05 → 2024-09-09 |
| 7 | Conduct project kickoff |  |  |  |  |  | 6SS → 6SS+3d | was named Conduct Kickoff Workshop; constraint none → start no earlier than 2024-09-05 |
| 8 | **Project Plan** | 2024-09-05 A → 2024-09-02 A (-3d) | 2024-09-19 A → 2024-09-05 A (-14d) | 10d → 4d |  |  |  | baseline start 2024-09-05 → 2024-09-02; baseline finish 2024-09-11 → 2024-09-05 |
| 9 | Prepare & submit Initial project plan | 2024-09-05 A → 2024-09-02 A (-3d) | 2024-09-06 A → 2024-09-02 A (-4d) | 2d → 1d |  |  |  | baseline start 2024-09-05 → 2024-09-02; baseline finish 2024-09-06 → 2024-09-02 |
| 10 | Review project plan | 2024-09-09 A → 2024-09-03 A (-6d) | 2024-09-09 A → 2024-09-03 A (-6d) |  |  |  |  | baseline start 2024-09-09 → 2024-09-03; baseline finish 2024-09-09 → 2024-09-03 |
| 11 | Make necessary changes in the plan | 2024-09-10 A → 2024-09-04 A (-6d) | 2024-09-10 A → 2024-09-04 A (-6d) |  |  |  |  | baseline start 2024-09-10 → 2024-09-04; baseline finish 2024-09-10 → 2024-09-04 |
| 12 | Submit revised plan | 2024-09-10 A → 2024-09-04 A (-6d) | 2024-09-10 A → 2024-09-04 A (-6d) |  |  |  |  | baseline start 2024-09-10 → 2024-09-04; baseline finish 2024-09-10 → 2024-09-04 |
| 13 | Approval of project plan by PA | 2024-09-11 A → 2024-09-05 A (-6d) | 2024-09-19 A → 2024-09-05 A (-14d) | 6d → 1d |  |  |  | was named Approval of project plan by NL; baseline start 2024-09-11 → 2024-09-05; baseline finish 2024-09-11 → 2024-09-05 |
| 14 | **Project Governance** | 2024-09-09 A → 2024-09-06 A (-3d) |  | 1d → 2d |  |  |  |  |
| 15 | Establish Project Governance Mechanism | 2024-09-09 A → 2024-09-06 A (-3d) |  |  |  |  |  |  |
| 16 | Define Project Communications and Reporting | 2024-09-09 A → 2024-09-06 A (-3d) |  |  |  |  |  |  |
| 17 | **Project Standards, Infrastructure & Solution** |  | 2024-09-09 A → 2024-09-06 A (-3d) | 2d → 1d |  |  |  | baseline finish 2024-09-09 → 2024-09-06 |
| 18 | Set Up Project Team Logistics and Infrastructure |  | 2024-09-09 A → 2024-09-06 A (-3d) | 2d → 1d |  |  |  | baseline finish 2024-09-09 → 2024-09-06 |
| 19 | Create a Document Repository for the Implementation Project Team |  | 2024-09-09 A → 2024-09-06 A (-3d) | 2d → 1d |  |  |  | baseline finish 2024-09-09 → 2024-09-06 |
| 20 | **Fit-to-Standard Analysis Preparation** | 2024-09-10 A → 2024-09-09 A (-1d) | 2024-09-12 A → 2024-09-09 A (-3d) | 3d → 1d |  |  |  | baseline start 2024-09-10 → 2024-09-09; baseline finish 2024-09-10 → 2024-09-09 |
| 21 | Prepare for Fit-to-Standard Workshops | 2024-09-10 A → 2024-09-09 A (-1d) | 2024-09-12 A → 2024-09-09 A (-3d) | 3d → 1d |  |  |  | baseline start 2024-09-10 → 2024-09-09; baseline finish 2024-09-10 → 2024-09-09 |
| 22 | **Phase Closure and Sign-Off Phase Deliverables** | 2024-09-23 A → 2024-09-10 A (-13d) | 2024-09-23 A → 2024-09-10 A (-13d) |  |  |  |  | baseline start 2024-09-11 → 2024-09-10; baseline finish 2024-09-11 → 2024-09-10 |
| 23 | Prepare Phase Signoff | 2024-09-23 A → 2024-09-10 A (-13d) | 2024-09-23 A → 2024-09-10 A (-13d) | 1d → 0d |  |  |  | baseline start 2024-09-11 → 2024-09-10; baseline finish 2024-09-11 → 2024-09-10 |
| 24 | **Deliverables** | 2024-09-23 A → 2024-09-10 A (-13d) | 2024-09-23 A → 2024-09-10 A (-13d) |  |  |  |  | baseline start 2024-09-11 → 2024-09-10; baseline finish 2024-09-11 → 2024-09-10 |
| 25 | D: Baseline Project Plan | 2024-09-23 A → 2024-09-10 A (-13d) | 2024-09-23 A → 2024-09-10 A (-13d) |  |  |  |  | baseline start 2024-09-11 → 2024-09-10; baseline finish 2024-09-11 → 2024-09-10 |
| 26 | D: Project kickoff presentation | 2024-09-23 A → 2024-09-10 A (-13d) | 2024-09-23 A → 2024-09-10 A (-13d) |  |  |  |  | baseline start 2024-09-11 → 2024-09-10; baseline finish 2024-09-11 → 2024-09-10 |
| 27 | **Explore** | 2024-09-09 A → 2024-09-02 A (-7d) | 2025-10-21 → 2024-11-23 A (-332d) | 287d → 65d | 67% → 100% | 52d → none |  | baseline start 2024-09-09 → 2024-09-10; baseline finish 2024-10-16 → 2024-10-11 |
| 28 | **Requirement gathering** | 2024-09-09 A → 2024-09-02 A (-7d) | 2024-09-12 A → 2024-09-17 A (+5d) | 4d → 12d |  |  |  | baseline start 2024-09-09 → 2024-09-10; baseline finish 2024-09-12 → 2024-09-11 |
| 29 | Review AS IS document | 2024-09-09 A → 2024-09-02 A (-7d) | 2024-09-10 A → 2024-09-17 A (+7d) | 2d → 6d |  |  | 7SS+2d → 21 | baseline start 2024-09-09 → 2024-09-10; baseline finish 2024-09-10 → 2024-09-11 |
| 30 | Update AS IS document as per discussion | 2024-09-11 A → 2024-09-02 A (-9d) | 2024-09-12 A → 2024-09-17 A (+5d) | 2d → 12d |  |  | 29 → 29SS | baseline start 2024-09-11 → 2024-09-10; baseline finish 2024-09-12 → 2024-09-11 |
| 31 | **Fit-to-Standard analysis** | 2024-09-16 A → 2024-09-17 A (+1d) | 2024-09-19 A → 2024-09-27 A (+8d) | 3d → 9d |  |  |  | baseline start 2024-09-16 → 2024-09-12; baseline finish 2024-09-19 → 2024-09-16 |
| 32 | Conduct workshop for all modules | 2024-09-16 A → 2024-09-17 A (+1d) | 2024-09-19 A → 2024-09-27 A (+8d) | 3d → 8d |  |  | 30FS+1d → 30 | baseline start 2024-09-16 → 2024-09-12; baseline finish 2024-09-19 → 2024-09-16 |
| 33 | **Fit to Standard analysis documentation** | 2024-09-20 A → 2024-09-16 A (-4d) | 2025-10-21 A → 2024-11-23 A (-332d) | 279d → 55d |  |  |  | baseline start 2024-09-20 → 2024-09-17; baseline finish 2024-10-15 → 2024-10-11 |
| 34 | Document Initial Configuration Settings for SAP Central Business Configuration | 2024-09-20 A → 2024-09-16 A (-4d) | 2024-09-23 A → 2024-09-16 A (-7d) | 2d → 1d |  |  |  | baseline start 2024-09-20 → 2024-09-17; baseline finish 2024-09-23 → 2024-09-18 |
| 35 | Document Scope via SAP Central Business Configuration | 2024-09-24 A → 2024-09-17 A (-7d) | 2024-09-25 A → 2024-09-19 A (-6d) | 2d → 3d |  |  |  | baseline start 2024-09-24 → 2024-09-19; baseline finish 2024-09-25 → 2024-09-20 |
| 36 | **Document and Maintain Business Process Flows** | 2024-09-24 A → 2024-09-20 A (-4d) | 2025-10-21 A → 2024-11-07 A (-348d) | 277d → 37d |  |  |  | baseline start 2024-09-20 → 2024-09-17; baseline finish 2024-10-09 → 2024-10-04 |
| 37 | Prepare fit-to-standard Document and KDS | 2024-09-24 A → 2024-09-20 A (-4d) | 2024-09-28 A → 2024-10-01 A (+3d) | 4d → 2.5d |  |  |  | was named Prepare BBP Document and KDS; baseline start 2024-09-20 → 2024-09-17; baseline finish 2024-09-26 → 2024-09-23 |
| 38 | Submition of Fit-to-standard and KDS | 2024-09-30 A → 2024-09-23 A (-7d) | 2024-09-30 A → 2024-10-01 A (+1d) | 1d → 0d |  |  |  | was named Submition of BBP and KDS; baseline start 2024-09-27 → 2024-09-24; baseline finish 2024-09-27 → 2024-09-24 |
| 39 | Review of fit-to-standard & KDS by CTM | 2024-10-04 A → 2024-09-25 A (-9d) | 2024-10-14 A → 2024-10-02 A (-12d) | 7d → 0d |  |  |  | was named Review of BBP & KDS by CTM; baseline start 2024-09-30 → 2024-09-25; baseline finish 2024-10-07 → 2024-10-01 |
| 40 | Solution Walkthrough | 2024-10-15 A → 2024-10-03 A (-12d) | 2024-10-18 A → 2024-10-21 A (+3d) | 4d → 16d |  |  |  | was named BBP Walkthrough; constraint none → finish no earlier than 2024-10-21; baseline start 2024-10-08 → 2024-10-03; baseline finish 2024-10-08 → 2024-10-03 |
| 41 | Fit-to-Standard document Signoff | 2025-10-21 A → 2024-10-22 A (-364d) | 2025-10-21 A → 2024-11-07 A (-348d) | 1d → 13d |  |  |  | was named BBP Signff; constraint none → finish no earlier than 2024-11-04; baseline start 2024-10-09 → 2024-10-04; baseline finish 2024-10-09 → 2024-10-04 |
| 42 | Document Configuration Values | 2025-10-21 A → 2024-10-14 A (-372d) | 2025-10-21 A → 2024-11-23 A (-332d) | 1d → 27d |  |  |  | constraint none → finish no earlier than 2024-11-08; baseline start 2024-10-09 → 2024-10-04; baseline finish 2024-10-10 → 2024-10-05 |
| 43 | **Data migration requirements** | 2024-10-16 A → 2024-10-07 A (-9d) | 2024-10-18 A → 2024-10-22 A (+4d) | 3d → 14d |  |  |  | was named Document Master Data Requirements; baseline start 2024-10-11 → 2024-10-07; baseline finish 2024-10-14 → 2024-10-09 |
| 44 | Identify master data requirement | 2024-10-16 A → 2024-10-07 A (-9d) | 2024-10-17 A → 2024-10-07 A (-10d) |  |  |  |  | was named Identify masterdata requirement; baseline start 2024-10-11 → 2024-10-07; baseline finish 2024-10-11 → 2024-10-07 |
| 45 | Prepare and explain master data template | 2024-10-17 A → 2024-10-10 A (-7d) | 2024-10-17 A → 2024-10-22 A (+5d) | 1d → 11d |  |  | 44SS → 44 | was named Prepare and explain masterdata template; constraint none → as late as possible; baseline start 2024-10-11 → 2024-10-08; baseline finish 2024-10-11 → 2024-10-09 |
| 46 | Circulate master data template | 2024-10-18 A → 2024-10-10 A (-8d) | 2024-10-18 A → 2024-10-22 A (+4d) | 1d → 8d |  |  | 45 → 45FF | was named Circulate masterdata template; baseline start 2024-10-14 → 2024-10-09; baseline finish 2024-10-14 → 2024-10-09 |
| 47 | Confirm Backlog and prioritise (SIT/UAT, Golive, Post-Golive) | 2024-11-05 A → 2024-10-11 A (-25d) | 2024-11-05 A → 2024-11-12 A (+7d) | 1d → 10d |  |  |  | constraint none → as late as possible; baseline start 2024-10-15 → 2024-10-10; baseline finish 2024-10-15 → 2024-10-11 |
| 48 | **Integration Planning and Design** | 2024-10-21 A → 2024-10-09 A (-12d) | 2024-11-07 → 2024-11-12 A (+5d) | 12d → 28d | 0% → 100% | 299d → none |  | baseline start 2024-10-09 → 2024-10-04; baseline finish 2024-10-15 → 2024-10-09 |
| 53 | **Getting Started with your SAP Implementation** | 2024-09-26 → 2024-10-07 A (+11d) | 2024-10-04 → 2024-10-07 A (+3d) | 6d → 1d | 0% → 100% | 321d → none |  | baseline start 2024-09-26 → 2024-09-23; baseline finish 2024-10-04 → 2024-10-01 |
| 54 | Review Overview Documentation | 2024-09-26 → 2024-10-07 A (+11d) | 2024-09-27 → 2024-10-07 A (+10d) | 2d → 1d | 0% → 100% | 315d → none |  | baseline start 2024-09-26 → 2024-09-23; baseline finish 2024-09-27 → 2024-09-24 |
| 55 | Organize Provisioning Emails | 2024-09-30 → 2024-10-07 A (+7d) | 2024-10-01 → 2024-10-07 A (+6d) | 2d → 1d | 0% → 100% | 315d → none |  | baseline start 2024-09-30 → 2024-09-25; baseline finish 2024-10-01 → 2024-09-27 |
| 56 | Ensure Project Team Members Access to the SAP Support Portal, SAP Best Practices Explorer, and SAP Customer Communities | 2024-10-03 → 2024-10-07 A (+4d) | 2024-10-04 → 2024-10-07 A (+3d) | 2d → 1d | 0% → 100% | 315d → none |  | baseline start 2024-10-03 → 2024-09-30; baseline finish 2024-10-04 → 2024-10-01 |
| 57 | **SAP Cloud ALM Onboarding** | 2024-10-07 A → 2024-09-03 A (-34d) | 2024-10-09 A → 2024-09-13 A (-26d) | 3d → 9d |  |  |  | baseline start 2024-10-07 → 2024-10-03; baseline finish 2024-10-08 → 2024-10-04 |
| 58 | Request SAP Cloud ALM Tenant | 2024-10-07 A → 2024-09-03 A (-34d) | 2024-10-08 A → 2024-09-13 A (-25d) | 2d → 9d |  |  |  | baseline start 2024-10-07 → 2024-10-03; baseline finish 2024-10-07 → 2024-10-03 |
| 59 | Access SAP Cloud ALM and Create Users | 2024-10-08 A → 2024-09-13 A (-25d) | 2024-10-09 A → 2024-09-13 A (-26d) |  |  |  |  | baseline start 2024-10-08 → 2024-10-04; baseline finish 2024-10-08 → 2024-10-04 |
| 60 | **Initial System Access for Central Business Configuration** | 2024-10-15 A → 2024-09-03 A (-42d) | 2024-10-17 A → 2024-09-19 A (-28d) | 3d → 13d |  |  |  | baseline start 2024-10-09 → 2024-10-05; baseline finish 2024-10-11 → 2024-10-08 |
| 61 | Access the SAP Central Business Configuration | 2024-10-15 A → 2024-09-03 A (-42d) | 2024-10-15 A → 2024-09-10 A (-35d) | 1d → 6d |  |  |  | baseline start 2024-10-09 → 2024-10-05; baseline finish 2024-10-09 → 2024-10-05 |
| 62 | Set Up Starter Project in SAP Central Business Configuration | 2024-10-16 A → 2024-09-11 A (-35d) | 2024-10-16 A → 2024-09-11 A (-35d) |  |  |  |  | baseline start 2024-10-10 → 2024-10-07; baseline finish 2024-10-10 → 2024-10-07 |
| 63 | Set Up SAP Central Business Configuration Integration | 2024-10-17 A → 2024-09-13 A (-34d) | 2024-10-17 A → 2024-09-19 A (-28d) | 1d → 5d |  |  |  | baseline start 2024-10-11 → 2024-10-08; baseline finish 2024-10-11 → 2024-10-08 |
| 64 | **Initial System Access for SAP S/4HANA Cloud** | 2024-10-17 A → 2024-09-03 A (-44d) | 2024-10-18 A → 2024-09-20 A (-28d) | 2d → 14d |  |  |  | baseline start 2024-10-14 → 2024-09-12; baseline finish 2024-10-16 → 2024-09-16 |
| 65 | Access Starter System and Reset Password | 2024-10-17 A → 2024-09-03 A (-44d) | 2024-10-18 A → 2024-09-10 A (-38d) | 1d → 6d |  |  | 63 → 29 | baseline start 2024-10-14 → 2024-09-12; baseline finish 2024-10-14 → 2024-09-12 |
| 66 | Create Users in the Starter System | 2024-10-17 A → 2024-09-10 A (-37d) | 2024-10-18 A → 2024-09-11 A (-37d) | 0d → 1d |  |  |  | baseline start 2024-10-15 → 2024-09-13; baseline finish 2024-10-15 → 2024-09-13 |
| 67 | Self-Activation of Project Team Members in the Identity Authentication Service | 2024-10-18 A → 2024-09-20 A (-28d) | 2024-10-18 A → 2024-09-20 A (-28d) | 0d → 1d |  |  |  | baseline start 2024-10-16 → 2024-09-16; baseline finish 2024-10-16 → 2024-09-16 |
| 68 | **Phase Closure and Sign-Off Phase Deliverables** | 2024-10-25 A → 2024-11-12 A (+18d) | 2024-10-25 A → 2024-11-13 A (+19d) | 0d → 2d |  |  |  | baseline start 2024-10-16 → 2024-10-11; baseline finish 2024-10-16 → 2024-10-11 |
| 69 | Explore Phase Signoff | 2024-10-25 A → 2024-11-12 A (+18d) | 2024-10-25 A → 2024-11-13 A (+19d) | 0d → 2d |  |  | Integration with DMS → 47FF | baseline start 2024-10-16 → 2024-10-11; baseline finish 2024-10-16 → 2024-10-11 |
| 70 | **Deliverables** | 2024-10-25 A → 2024-09-27 A (-28d) | 2024-10-25 A → 2024-10-21 A (-4d) | 1d → 19d |  |  |  | baseline start 2024-10-10 → 2024-10-05; baseline finish 2024-10-15 → 2024-10-10 |
| 71 | Fit to Standard documents with Process flow diagram, Gap Analysis | 2024-10-25 A → 2024-10-21 A (-4d) | 2024-10-25 A → 2024-10-21 A (-4d) |  |  |  |  | baseline start 2024-10-10 → 2024-10-05; baseline finish 2024-10-10 → 2024-10-05 |
| 72 | Core team training/ presentation | 2024-10-25 A → 2024-09-27 A (-28d) | 2024-10-25 A → 2024-09-27 A (-28d) |  |  |  |  | baseline start 2024-10-10 → 2024-10-05; baseline finish 2024-10-10 → 2024-10-05 |
| 73 | Initial Master data templates | 2024-10-25 A → 2024-10-18 A (-7d) | 2024-10-25 A → 2024-10-18 A (-7d) | 1d → 0d |  |  |  | baseline start 2024-10-15 → 2024-10-10; baseline finish 2024-10-15 → 2024-10-10 |
| 74 | **Realize** | 2024-10-25 A → 2024-10-29 A (+4d) | 2026-01-01 → 2025-01-24 (-342d) | 307d → 72.45d | 93% → 60% | 0d → 325.55d |  | baseline start 2024-10-15 → 2024-10-12; baseline finish 2024-12-18 → 2024-12-05 |

| ID | Task | Start | Finish | Duration | Complete | Total float | Predecessors | Other |
| --- | --- | --- | --- | --- | --- | --- | --- | --- |
| 75 | **Requirement gathering sheet (RGS)** | 2024-10-27 A → 2024-10-29 A (+2d) | 2024-10-30 A → 2024-11-28 A (+29d) | 3d → 25d |  |  |  | baseline start 2024-10-16 → 2024-10-12; baseline finish 2024-10-21 → 2024-10-16 |
| 76 | Prepare RGS | 2024-10-27 A → 2024-10-29 A (+2d) | 2024-10-30 A → 2024-11-27 A (+28d) | 3d → 12.9d |  |  | Integration with DMS → 47 | constraint none → finish no earlier than 2024-11-27; baseline start 2024-10-16 → 2024-10-12; baseline finish 2024-10-18 → 2024-10-15 |
| 77 | Submit RGS |  | 2024-10-30 A → 2024-11-28 A (+29d) | 0d → 1.25d |  |  |  | constraint none → finish no earlier than 2024-11-18; baseline start 2024-10-21 → 2024-10-16; baseline finish 2024-10-21 → 2024-10-16 |
| 78 | **Functional Specifications** | 2024-10-26 A → 2024-11-19 A (+24d) | 2024-12-07 A → 2024-12-20 (+13d) |  | 100% → 54% | none → 354d |  | baseline start 2024-10-22 → 2024-10-16; baseline finish 2024-10-29 → 2024-10-22 |
| 79 | Prepare functional specfications | 2024-10-31 A → 2024-11-25 A (+25d) | 2024-12-07 A → 2024-12-20 (+13d) | 25d → 19d | 100% → 49% | none → 354d |  | constraint none → finish no earlier than 2024-12-20; baseline start 2024-10-22 → 2024-10-16; baseline finish 2024-10-25 → 2024-10-19 |
| 80 | Finalize development tracker | 2024-10-26 A → 2024-11-19 A (+24d) | 2024-11-13 A → 2024-11-20 A (+7d) | 4d → 2d |  |  | 79 → none | constraint none → start no earlier than 2024-11-19; baseline start 2024-10-28 → 2024-10-21; baseline finish 2024-10-29 → 2024-10-22 |
| 81 | **Solution Configuration** | 2024-10-25 A → 2024-10-29 A (+4d) | 2024-11-08 A → 2024-12-03 A (+25d) | 9d → 29d |  |  |  | baseline start 2024-10-28 → 2024-10-21; baseline finish 2024-11-12 → 2024-11-02 |
| 82 | Configure Processes and Functions in golden master (100) | 2024-10-25 A → 2024-10-29 A (+4d) | 2024-10-31 A → 2024-11-19 A (+19d) | 0d → 17d |  |  | 79 → none | constraint none → start no earlier than 2024-11-19; baseline start 2024-10-28 → 2024-10-21; baseline finish 2024-11-05 → 2024-10-25 |
| 83 | Transfer of Configuration to Dev testing | 2024-10-31 A → 2024-11-19 A (+19d) | 2024-10-31 A → 2024-11-20 A (+20d) | 0d → 2d |  |  |  | constraint none → start no earlier than 2024-11-21; baseline start 2024-11-06 → 2024-10-26; baseline finish 2024-11-06 → 2024-10-26 |
| 84 | Unit testing-1 (Consultant) | 2024-10-31 A → 2024-11-20 A (+20d) | 2024-11-04 A → 2024-12-02 A (+28d) | 1d → 10d |  |  |  | constraint none → finish no earlier than 2024-11-27; baseline start 2024-11-07 → 2024-10-28; baseline finish 2024-11-11 → 2024-10-30 |
| 85 | Document and Resolve Issues | 2024-11-04 A → 2024-11-20 A (+16d) | 2024-11-07 A → 2024-12-02 A (+25d) | 4d → 11d |  |  |  | constraint none → finish no earlier than 2024-11-27; baseline start 2024-11-07 → 2024-10-28; baseline finish 2024-11-11 → 2024-10-30 |
| 86 | Submit Unit Testing result & completion of baseline config | 2024-11-08 A → 2024-12-03 A (+25d) | 2024-11-08 A → 2024-12-03 A (+25d) |  |  |  |  | baseline start 2024-11-12 → 2024-11-02; baseline finish 2024-11-12 → 2024-11-02 |
| 87 | **Core team training & UT** | 2024-11-13 A → 2024-11-28 A (+15d) | 2024-11-29 A → 2025-01-22 (+54d) | 13d → 46.45d | 100% → 88% | none → 317.55d |  | baseline start 2024-11-13 → 2024-11-02; baseline finish 2024-11-28 → 2024-11-15 |
| 88 | Plan for CTM training | 2024-11-13 A → 2024-11-28 A (+15d) | 2024-11-13 A → 2024-11-28 A (+15d) |  |  |  | 86 → 86FF | constraint none → start no earlier than 2024-11-26; baseline start 2024-11-13 → 2024-11-02; baseline finish 2024-11-13 → 2024-11-02 |
| 89 | Making necessery training arrangement - PPT + tutorial | 2024-11-14 A → 2024-11-29 A (+15d) | 2024-11-16 A → 2024-12-02 A (+16d) | 2d → 3d |  |  |  | baseline start 2024-11-14 → 2024-11-04; baseline finish 2024-11-15 → 2024-11-05 |
| 90 | Conducting CTM Training (Module wise) | 2024-11-21 A → 2025-01-14 A (+54d) | 2024-11-29 A → 2025-01-21 (+53d) | 7d → 6d | 100% → 82% | none → 0d |  | constraint none → finish no earlier than 2024-12-09; baseline start 2024-11-18 → 2024-11-06; baseline finish 2024-11-20 → 2024-11-08 |
| 91 | Unit Testing by Core team | 2024-11-29 A → 2025-01-14 A (+46d) | 2024-11-29 A → 2025-01-22 (+54d) | 0d → 2.5d | 100% → 82% | none → 317.55d |  | constraint none → finish no earlier than 2024-12-10; baseline start 2024-11-21 → 2024-11-09; baseline finish 2024-11-28 → 2024-11-15 |
| 92 | **Quality System Request / Initial Setup** | 2024-11-11 A → 2024-11-18 A (+7d) | 2024-11-13 A → 2024-11-18 A (+5d) | 3d → 1d |  |  |  | baseline start 2024-10-17 → 2024-10-12; baseline finish 2024-10-17 → 2024-10-12 |
| 93 | Execute Initial Setup of the Quality System via SAP Central Business Configuration | 2024-11-11 A → 2024-11-18 A (+7d) | 2024-11-13 A → 2024-11-18 A (+5d) | 3d → 1d |  |  |  | baseline start 2024-10-17 → 2024-10-12; baseline finish 2024-10-17 → 2024-10-12 |
| 94 | Request Quality System via Manage Your Solution App | 2024-11-13 A → 2024-11-18 A (+5d) | 2024-11-13 A → 2024-11-18 A (+5d) |  |  |  |  | baseline start 2024-10-17 → 2024-10-12; baseline finish 2024-10-17 → 2024-10-12 |
| 95 | **Quality System Initial Access** | 2024-11-13 A → 2024-11-18 A (+5d) | 2026-01-01 → 2025-01-02 A (-364d) | 296d → 39d | 91% → 100% | 0d → none |  | baseline start 2024-10-17 → 2024-10-12; baseline finish 2024-10-25 → 2024-10-19 |
| 96 | Receive Quality System and Reset Password | 2024-11-13 A → 2024-11-18 A (+5d) | 2024-11-13 A → 2024-11-21 A (+8d) | 0d → 4d |  |  |  | baseline start 2024-10-18 → 2024-10-14; baseline finish 2024-10-18 → 2024-10-14 |
| 97 | Create Preset Configuration User in the Quality System via Manage Your Solution App | 2024-11-13 A → 2024-12-20 A (+37d) | 2024-11-13 A → 2024-12-20 A (+37d) |  |  |  |  | constraint none → start no earlier than 2024-12-17; baseline start 2024-10-21 → 2024-10-15; baseline finish 2024-10-21 → 2024-10-15 |
| 98 | Define Preset Parameters and Trigger System Activation via Manage Your Solution App | 2024-11-14 A → 2024-12-20 A (+36d) | 2024-11-14 A → 2024-12-20 A (+36d) |  |  |  |  | baseline start 2024-10-22 → 2024-10-16; baseline finish 2024-10-22 → 2024-10-16 |
| 99 | **Create Users in the Quality Server** | 2025-12-27 A → 2024-11-28 A (-394d) | 2025-12-31 A → 2025-01-02 A (-363d) | 3d → 30d |  |  |  | baseline start 2024-10-17 → 2024-10-12; baseline finish 2024-10-24 → 2024-10-18 |
| 100 | **Finalize list of users for QAS** | 2025-12-27 A → 2024-11-28 A (-394d) | 2025-12-31 A → 2025-01-02 A (-363d) | 3d → 30d |  |  |  | baseline start 2024-10-17 → 2024-10-12; baseline finish 2024-10-24 → 2024-10-18 |
| 101 | **Provide user authorization** | 2025-12-27 A → 2024-11-28 A (-394d) | 2025-12-31 A → 2025-01-02 A (-363d) | 3d → 30d |  |  |  | baseline start 2024-10-17 → 2024-10-12; baseline finish 2024-10-24 → 2024-10-18 |
| 102 | Finalize user authorization | 2025-12-27 A → 2024-11-28 A (-394d) | 2025-12-30 A → 2024-12-30 A (-365d) | 2d → 27d |  |  |  | baseline start 2024-10-17 → 2024-10-12; baseline finish 2024-10-18 → 2024-10-14 |
| 103 | Create roles and authorization | 2025-12-27 A → 2025-01-02 A (-359d) | 2025-12-30 A → 2025-01-02 A (-362d) | 2d → 1d |  |  |  | constraint none → start no earlier than 2024-12-23; baseline start 2024-10-21 → 2024-10-15; baseline finish 2024-10-21 → 2024-10-15 |
| 104 | Testing of roles and authorization | 2025-12-27 A → 2025-01-02 A (-359d) | 2025-12-30 A → 2025-01-02 A (-362d) | 2d → 0d |  |  |  | baseline start 2024-10-22 → 2024-10-16; baseline finish 2024-10-23 → 2024-10-17 |
| 105 | Deployment of roles to users | 2025-12-30 A → 2025-01-02 A (-362d) | 2025-12-31 A → 2025-01-02 A (-363d) | 2d → 0d |  |  |  | baseline start 2024-10-24 → 2024-10-18; baseline finish 2024-10-24 → 2024-10-18 |
| 106 | Self-Activation of Project Team Members in the Identity Authentication Service | 2026-01-01 → 2024-11-22 A (-405d) | 2026-01-01 → 2024-11-22 A (-405d) | 1d → 0d | 0% → 100% | 0d → none |  | baseline start 2024-10-25 → 2024-10-19; baseline finish 2024-10-25 → 2024-10-19 |
| 107 | **Required Configuration Before System Use - SAP S/4HANA Cloud** | 2024-11-14 A → 2024-12-20 A (+36d) | 2024-11-14 A → 2024-12-20 A (+36d) |  |  |  |  | baseline start 2024-10-21 → 2024-10-15; baseline finish 2024-10-21 → 2024-10-15 |
| 108 | Configure system | 2024-11-14 A → 2024-12-20 A (+36d) | 2024-11-14 A → 2024-12-20 A (+36d) |  |  |  |  | constraint none → start no earlier than 2024-12-17; baseline start 2024-10-21 → 2024-10-15; baseline finish 2024-10-21 → 2024-10-15 |
| 109 | **Standard Integration Setup in the Quality/Test System** | 2024-11-14 A → 2024-12-23 (+39d) | 2024-11-15 A → 2024-12-26 (+41d) | 2d → 3d | 100% → 0% | none → 350d |  | baseline start 2024-10-22 → 2024-10-16; baseline finish 2024-10-24 → 2024-10-18 |
| 110 | Set Up Integration using Cloud Integration Automation Service (CIAS) | 2024-11-14 A → 2024-12-23 (+39d) | 2024-11-14 A → 2024-12-23 (+39d) |  | 100% → 0% | none → 350d |  | constraint none → start no earlier than 2024-12-23; baseline start 2024-10-22 → 2024-10-16; baseline finish 2024-10-22 → 2024-10-16 |
| 111 | Set Up Employee Central Integration (JB1) | 2024-11-15 A → 2024-12-24 (+39d) | 2024-11-15 A → 2024-12-24 (+39d) |  | 100% → 0% | none → 350d |  | baseline start 2024-10-23 → 2024-10-17; baseline finish 2024-10-23 → 2024-10-17 |
| 112 | Set Up Integrations in the Quality/Test System | 2024-11-15 A → 2024-12-26 (+41d) | 2024-11-15 A → 2024-12-26 (+41d) | 0d → 1d | 100% → 0% | none → 350d |  | baseline start 2024-10-24 → 2024-10-18; baseline finish 2024-10-24 → 2024-10-18 |
| 113 | **System Integration Test** | 2024-11-06 A → 2024-11-21 A (+15d) | 2025-12-19 → 2025-01-15 (-338d) | 292d → 47d | 96% → 44% | 9d → 333d |  | baseline start 2024-10-15 → 2024-10-12; baseline finish 2024-12-18 → 2024-12-04 |
| 114 | **Integration test Plan** | 2024-11-23 A → 2024-11-28 A (+5d) | 2024-12-31 A → 2025-01-02 A (+2d) | 26d → 30d |  |  |  | baseline start 2024-10-15 → 2024-10-12; baseline finish 2024-11-22 → 2024-11-11 |
| 115 | Identify scenerios for Integration test | 2024-11-23 A → 2024-12-18 A (+25d) | 2024-11-23 A → 2024-12-18 A (+25d) | 0d → 1d |  |  |  | constraint none → start no earlier than 2024-12-16; baseline start 2024-11-21 → 2024-11-09; baseline finish 2024-11-22 → 2024-11-11 |
| 116 | Write scripts for Integration test | 2024-11-27 A → 2024-12-20 A (+23d) | 2024-11-27 A → 2024-12-20 A (+23d) |  |  |  |  | baseline start 2024-11-21 → 2024-11-09; baseline finish 2024-11-21 → 2024-11-11 |
| 117 | **Master data** | 2024-12-31 A → 2024-12-20 A (-11d) | 2024-12-31 A → 2024-12-27 A (-4d) | 1d → 6d |  |  |  | baseline start 2024-10-15 → 2024-10-22; baseline finish 2024-11-18 → 2024-11-07 |
| 118 | Receipt Master Data from PA | 2024-12-31 A → 2024-12-20 A (-11d) | 2024-12-31 A → 2024-12-24 A (-7d) | 1d → 4d |  |  | 46 → 46FS+10d | was named Receipt Master Data from NL; constraint none → start no earlier than 2024-12-16; baseline start 2024-10-15 → 2024-10-22; baseline finish 2024-11-13 → 2024-11-04 |
| 119 | Upload Master data in QAS | 2024-12-31 A → 2024-12-23 A (-8d) | 2024-12-31 A → 2024-12-27 A (-4d) | 0d → 2d |  |  |  | baseline start 2024-11-14 → 2024-11-05; baseline finish 2024-11-18 → 2024-11-07 |
| 120 | **Identity and Access Management Planning and Design** | 2024-12-31 A → 2024-11-28 A (-33d) | 2024-12-31 A → 2025-01-02 A (+2d) | 1d → 30d |  |  |  | baseline start 2024-10-17 → 2024-10-12; baseline finish 2024-11-15 → 2024-11-06 |
| 121 | Finalize list of users | 2024-12-31 A → 2024-11-28 A (-33d) | 2024-12-31 A → 2024-12-30 A (-1d) | 1d → 27d |  |  |  | constraint none → finish no earlier than 2024-12-16; baseline start 2024-10-17 → 2024-10-12; baseline finish 2024-11-08 → 2024-10-29 |
| 122 | Provide & Check roles and authorization | 2024-12-31 A → 2025-01-02 A (+2d) | 2024-12-31 A → 2025-01-02 A (+2d) | 0d → 1d |  |  |  | baseline start 2024-11-11 → 2024-10-30; baseline finish 2024-11-15 → 2024-11-06 |
| 123 | **Conduct System integration test** | 2024-11-27 A → 2024-12-23 A (+26d) | 2025-01-02 → 2025-01-15 (+13d) | 25.8d → 20d | 91% → 40% | 260.2d → 333d |  | baseline start 2024-11-22 → 2024-11-12; baseline finish 2024-12-11 → 2024-12-04 |
| 124 | Perform Integration testing by Consultant | 2024-11-27 A → 2024-12-23 A (+26d) | 2024-11-30 A → 2024-12-31 A (+31d) | 2d → 7d |  |  |  | constraint none → start no earlier than 2024-12-23; baseline start 2024-11-22 → 2024-11-12; baseline finish 2024-11-29 → 2024-11-19 |
| 125 | Perform User Acceptance test - CTM | 2024-12-02 A → 2025-01-03 A (+32d) | 2025-01-02 → 2025-01-13 (+11d) | 6d → 9d | 70% → 33% | 260.2d → 335d |  | constraint none → finish no earlier than 2025-01-13; baseline start 2024-12-02 → 2024-11-20; baseline finish 2024-12-09 → 2024-11-30 |
| 126 | Resolving the issues, if any | 2024-12-02 A → 2025-01-07 (+36d) | 2024-12-20 A → 2025-01-13 (+24d) | 15d → 6d | 100% → 0% | none → 330d |  | constraint none → finish no earlier than 2025-01-13; baseline start 2024-12-02 → 2024-11-20; baseline finish 2024-12-09 → 2024-11-30 |
| 127 | Retesting of scenarios | 2024-12-23 A → 2025-01-14 (+22d) | 2024-12-31 A → 2025-01-15 (+15d) | 6d → 2d | 100% → 0% | none → 330d |  | baseline start 2024-12-10 → 2024-12-02; baseline finish 2024-12-11 → 2024-12-04 |
| 128 | UAT (by CTM) signoff | 2024-12-31 → 2025-01-15 (+15d) | 2024-12-31 → 2025-01-15 (+15d) |  |  | 261d → 330d |  | baseline start 2024-12-11 → 2024-12-04; baseline finish 2024-12-11 → 2024-12-04 |
| 129 | **ABAP Development - SIT Critical** | 2024-11-06 A → 2024-11-21 A (+15d) | 2024-12-31 A → 2025-01-15 (+15d) | 39d → 47d | 100% → 27% | none → 333d |  | baseline start 2024-11-06 → 2024-10-26; baseline finish 2024-12-18 → 2024-12-03 |
| 130 | Develop reports | 2024-11-06 A → 2024-11-21 A (+15d) | 2024-12-30 A → 2025-01-13 (+14d) | 38d → 45d | 100% → 42% | none → 0d |  | constraint none → finish no earlier than 2025-01-13; baseline start 2024-11-06 → 2024-10-26; baseline finish 2024-12-10 → 2024-11-26 |
| 131 | Testing by consultant | 2024-11-17 A → 2024-11-25 A (+8d) | 2024-12-30 A → 2025-01-13 (+14d) | 30d → 42d | 100% → 30% | none → 335d |  | constraint none → finish no earlier than 2025-01-13; baseline start 2024-11-11 → 2024-10-30; baseline finish 2024-12-13 → 2024-11-29 |
| 132 | Testing by CTM | 2024-11-21 A → 2024-12-13 (+22d) | 2024-12-30 A → 2025-01-15 (+16d) | 27d → 28d | 100% → 0% | none → 333d |  | constraint none → finish no earlier than 2025-01-15; baseline start 2024-11-14 → 2024-11-05; baseline finish 2024-12-18 → 2024-12-03 |
| 133 | Sign off Development | 2024-12-30 A → 2025-01-15 (+16d) | 2024-12-31 A → 2025-01-15 (+15d) | 2d → 1d | 100% → 0% | none → 333d |  | baseline start 2024-12-18 → 2024-12-03; baseline finish 2024-12-18 → 2024-12-03 |
| 134 | **Cutover Strategy** | 2024-12-23 A → 2025-01-02 A (+10d) | 2024-12-26 A → 2025-01-02 A (+7d) | 3d → 1d |  |  |  | baseline start 2024-12-10 → 2024-12-05; baseline finish 2024-12-12 → 2024-12-05 |
| 135 | Discussion on cutover strategy | 2024-12-23 A → 2025-01-02 A (+10d) | 2024-12-26 A → 2025-01-02 A (+7d) | 3d → 1d |  |  | 126 → none | constraint none → start no earlier than 2025-01-06; baseline start 2024-12-10 → 2024-12-05; baseline finish 2024-12-11 → 2024-12-05 |
| 136 | Cutover & data responsibility Plan | 2024-12-26 A → 2025-01-02 A (+7d) | 2024-12-26 A → 2025-01-02 A (+7d) | 0d → 1d |  |  | 135 → 135FF | baseline start 2024-12-12 → 2024-12-05; baseline finish 2024-12-12 → 2024-12-05 |
| 137 | Communication to Organisation for Cutover | 2024-12-26 A → 2025-01-02 A (+7d) | 2024-12-26 A → 2025-01-02 A (+7d) |  |  |  |  | baseline start 2024-12-12 → 2024-12-05; baseline finish 2024-12-12 → 2024-12-05 |
| 138 | **End user training plan** | 2024-11-29 → 2025-01-22 (+54d) | 2024-12-02 → 2025-01-24 (+53d) |  |  | 282d → 317.55d |  | baseline start 2024-11-29 → 2024-11-16; baseline finish 2024-12-02 → 2024-11-18 |
| 139 | Preparation of End User training plan | 2024-11-29 → 2025-01-22 (+54d) | 2024-12-02 → 2025-01-24 (+53d) |  |  | 226d → 317.55d |  | constraint none → start no earlier than 2025-01-07; baseline start 2024-11-29 → 2024-11-16; baseline finish 2024-12-02 → 2024-11-18 |
| 140 | Communicate plan to PA | 2024-12-02 → 2025-01-23 (+52d) | 2024-12-02 → 2025-01-24 (+53d) |  |  | 226d → 317.55d |  | was named Communicate plan to NL; baseline start 2024-12-02 → 2024-11-18; baseline finish 2024-12-02 → 2024-11-18 |
| 141 | **Production System Request** | 2024-12-17 A → 2025-01-15 (+29d) | 2024-12-18 → 2025-01-16 (+29d) |  | 50% → 0% | 270d → 330d |  | baseline start 2024-10-17 → 2024-10-12; baseline finish 2024-10-18 → 2024-10-14 |
| 142 | Request for Production System | 2024-12-17 A → 2025-01-15 (+29d) | 2024-12-17 A → 2025-01-15 (+29d) |  | 100% → 0% | none → 330d |  | constraint none → start no earlier than 2025-01-15; baseline start 2024-10-17 → 2024-10-12; baseline finish 2024-10-17 → 2024-10-12 |
| 143 | Request Access to the SAP S/4HANA Cloud Release Assessment Tool. | 2024-12-18 → 2025-01-16 (+29d) | 2024-12-18 → 2025-01-16 (+29d) |  |  | 270d → 330d |  | baseline start 2024-10-18 → 2024-10-14; baseline finish 2024-10-18 → 2024-10-14 |
| 144 | **Production System Initial Access** | 2024-12-19 A → 2025-01-17 (+29d) | 2024-12-30 A → 2025-01-18 (+19d) | 7d → 2d | 100% → 0% | none → 330d |  | baseline start 2024-10-21 → 2024-10-15; baseline finish 2024-10-22 → 2024-10-16 |

| ID | Task | Start | Finish | Duration | Complete | Total float | Predecessors | Other |
| --- | --- | --- | --- | --- | --- | --- | --- | --- |
| 145 | Receive Production System and Reset Password | 2024-12-19 A → 2025-01-17 (+29d) | 2024-12-30 A → 2025-01-17 (+18d) | 7d → 1d | 100% → 0% | none → 330d |  | baseline start 2024-10-21 → 2024-10-15; baseline finish 2024-10-21 → 2024-10-15 |
| 146 | Transport Initial Change Project from Q-System to P-System | 2024-12-28 A → 2025-01-18 (+21d) | 2024-12-28 A → 2025-01-18 (+21d) | 0d → 1d | 100% → 0% | none → 330d |  | baseline start 2024-10-22 → 2024-10-16; baseline finish 2024-10-22 → 2024-10-16 |
| 147 | Phase Closure & Signoff Phase deliverables | 2025-01-01 → 2025-01-16 (+15d) | 2025-01-01 → 2025-01-16 (+15d) |  |  | 261d → 332d |  | baseline start 2024-12-12 → 2024-12-05; baseline finish 2024-12-12 → 2024-12-05 |
| 148 | **Deliverables** | 2024-11-11 → 2024-12-04 (+23d) | 2024-12-31 → 2025-01-15 (+15d) |  |  | 262d → 333d |  | baseline start 2024-11-13 → 2024-11-04; baseline finish 2024-12-12 → 2024-12-05 |
| 149 | D: Test scripts | 2024-11-28 → 2024-12-21 (+23d) | 2024-11-28 → 2024-12-21 (+23d) |  |  | 232d → 353d |  | baseline start 2024-11-22 → 2024-11-12; baseline finish 2024-11-22 → 2024-11-12 |
| 150 | D: Unit test result document | 2024-11-11 → 2024-12-04 (+23d) | 2024-11-11 → 2024-12-04 (+23d) |  |  | 291d → 360.9d |  | baseline start 2024-11-13 → 2024-11-04; baseline finish 2024-11-13 → 2024-11-04 |
| 151 | D: Integration testing document | 2024-12-02 → 2025-01-01 (+30d) | 2024-12-02 → 2025-01-01 (+30d) |  |  | 230d → 345d |  | baseline start 2024-12-02 → 2024-11-20; baseline finish 2024-12-02 → 2024-11-20 |
| 152 | D: User Acceptance testing document | 2024-12-31 → 2025-01-15 (+15d) | 2024-12-31 → 2025-01-15 (+15d) |  |  | 262d → 333d |  | baseline start 2024-12-11 → 2024-12-04; baseline finish 2024-12-11 → 2024-12-04 |
| 153 | D: Final master data templates | 2024-12-26 → 2025-01-02 (+7d) | 2024-12-26 → 2025-01-02 (+7d) |  |  | 265d → 339d |  | baseline start 2024-12-12 → 2024-12-05; baseline finish 2024-12-12 → 2024-12-05 |
| 154 | D: Data migration strategy document | 2024-12-26 → 2025-01-02 (+7d) | 2024-12-26 → 2025-01-02 (+7d) |  |  | 265d → 339d |  | baseline start 2024-12-12 → 2024-12-05; baseline finish 2024-12-12 → 2024-12-05 |
| 155 | **Deploy** | 2024-12-02 A → 2025-01-06 A (+35d) | 2025-01-14 → 2025-02-08 (+25d) | 31d → 30d | 64% → 0% | 252d → 312d |  | baseline start 2024-10-15 → 2024-11-19; baseline finish 2024-12-31 → 2025-01-07 |
| 156 | **ABAP Developments Pre Go Live** | 2024-12-02 A → 2025-01-14 (+43d) | 2024-12-31 A → 2025-02-07 (+38d) | 21d → 22d | 100% → 0% | none → 0d |  | baseline start 2024-12-02 → 2024-11-27; baseline finish 2024-12-31 → 2025-01-06 |
| 157 | Develop reports | 2024-12-02 A → 2025-01-14 (+43d) | 2024-12-30 A → 2025-01-31 (+32d) | 8.5d → 16d | 100% → 0% | none → 0d | 130FS-7d → 130 | constraint start no earlier than 2022-12-20 → start no earlier than 2024-12-27; baseline start 2024-12-02 → 2024-11-27; baseline finish 2024-12-20 → 2024-12-28 |
| 158 | Testing by consultant | 2024-12-02 A → 2025-01-17 (+46d) | 2024-12-30 A → 2025-02-04 (+36d) | 17d → 16d | 100% → 0% | none → 0d |  | baseline start 2024-12-05 → 2024-11-30; baseline finish 2024-12-26 → 2025-01-01 |
| 159 | Testing by CTM | 2024-12-04 A → 2025-01-20 (+47d) | 2024-12-30 A → 2025-02-06 (+38d) | 18d → 16d | 100% → 0% | none → 0d |  | baseline start 2024-12-09 → 2024-12-03; baseline finish 2024-12-30 → 2025-01-03 |
| 160 | Sign off Development | 2024-12-31 A → 2025-02-07 (+38d) | 2024-12-31 A → 2025-02-07 (+38d) |  | 100% → 0% | none → 0d |  | baseline start 2024-12-31 → 2025-01-04; baseline finish 2024-12-31 → 2025-01-06 |
| 161 | **End User Training** | 2024-12-27 → 2025-01-15 (+19d) | 2025-01-09 → 2025-01-25 (+16d) |  |  | 255d → 324d |  | baseline start 2024-12-13 → 2024-12-06; baseline finish 2024-12-27 → 2024-12-17 |
| 162 | Prepare end user training manual | 2024-12-27 → 2025-01-15 (+19d) | 2024-12-30 → 2025-01-16 (+17d) |  |  | 255d → 324d |  | constraint none → start no earlier than 2025-01-15; baseline start 2024-12-13 → 2024-12-06; baseline finish 2024-12-16 → 2024-12-07 |
| 163 | Conduct end user training | 2024-12-31 → 2025-01-17 (+17d) | 2025-01-06 → 2025-01-22 (+16d) |  |  | 255d → 324d |  | baseline start 2024-12-17 → 2024-12-09; baseline finish 2024-12-23 → 2024-12-13 |
| 164 | Conduct training to HODs/Management | 2025-01-07 → 2025-01-23 (+16d) | 2025-01-09 → 2025-01-25 (+16d) |  |  | 255d → 324d |  | baseline start 2024-12-24 → 2024-12-14; baseline finish 2024-12-27 → 2024-12-17 |
| 165 | **Production Environment Preparation** | 2024-12-15 A → 2025-01-16 (+32d) | 2024-12-30 A → 2025-01-18 (+19d) | 10d → 3d | 100% → 0% | none → 330d |  | baseline start 2024-12-12 → 2024-12-05; baseline finish 2024-12-16 → 2024-12-07 |
| 166 | Transport final configurations | 2024-12-15 A → 2025-01-16 (+32d) | 2024-12-28 A → 2025-01-16 (+19d) | 0d → 1d | 100% → 0% | none → 330d |  | baseline start 2024-12-12 → 2024-12-05; baseline finish 2024-12-12 → 2024-12-05 |
| 167 | Maintain number ranges | 2024-12-30 A → 2025-01-17 (+18d) | 2024-12-30 A → 2025-01-17 (+18d) |  | 100% → 0% | none → 330d |  | baseline start 2024-12-13 → 2024-12-06; baseline finish 2024-12-13 → 2024-12-06 |
| 168 | Maintain client specific data | 2024-12-30 A → 2025-01-18 (+19d) | 2024-12-30 A → 2025-01-18 (+19d) | 0d → 1d | 100% → 0% | none → 330d |  | baseline start 2024-12-16 → 2024-12-07; baseline finish 2024-12-16 → 2024-12-07 |
| 169 | **User creation** | 2024-12-03 A → 2025-01-24 (+52d) | 2024-12-30 A → 2025-02-03 (+35d) | 19d → 8d | 100% → 0% | none → 317.55d |  | baseline start 2024-12-03 → 2024-11-19; baseline finish 2024-12-30 → 2024-12-18 |
| 170 | Finalize list of users for production enviornment | 2024-12-03 A → 2025-01-24 (+52d) | 2024-12-30 A → 2025-01-27 (+28d) | 19d → 2d | 100% → 0% | none → 317.55d |  | constraint none → start no earlier than 2024-12-26; baseline start 2024-12-03 → 2024-11-19; baseline finish 2024-12-04 → 2024-11-20 |
| 171 | Finalise Authorization Matrix | 2024-12-28 A → 2025-01-27 (+30d) | 2024-12-28 A → 2025-01-29 (+32d) | 0d → 2d | 100% → 0% | none → 317.55d |  | baseline start 2024-12-05 → 2024-11-21; baseline finish 2024-12-06 → 2024-11-22 |
| 172 | Check roles and authorization | 2024-12-30 A → 2025-01-29 (+30d) | 2024-12-30 A → 2025-02-03 (+35d) | 0d → 4d | 100% → 0% | none → 317.55d | 163 → 171 | baseline start 2024-12-24 → 2024-12-14; baseline finish 2024-12-30 → 2024-12-18 |
| 173 | **Data preparation and upload** | 2024-12-24 A → 2025-01-06 A (+13d) | 2025-01-10 → 2025-01-30 (+20d) | 13d → 22d | 20% → 0% | 254d → 320d |  | baseline start 2024-10-15 → 2024-11-28; baseline finish 2024-12-26 → 2025-01-06 |
| 174 | Receipt of master data | 2024-12-24 A → 2025-01-06 A (+13d) | 2024-12-30 A → 2025-01-10 (+11d) | 4d → 5d | 100% → 0% | none → 13d | 46 → 46FS+55d | constraint none → start no earlier than 2025-01-03; baseline start 2024-10-15 → 2024-11-28; baseline finish 2024-12-11 → 2024-12-20 |
| 175 | Validate & cleanse master data | 2024-12-24 A → 2025-01-11 (+18d) | 2024-12-30 A → 2025-01-11 (+12d) | 0d → 1d | 100% → 0% | none → 13d |  | baseline start 2024-12-12 → 2024-12-21; baseline finish 2024-12-13 → 2024-12-21 |
| 176 | Upload master data in Production | 2024-12-30 A → 2025-01-13 (+14d) | 2024-12-31 A → 2025-01-16 (+16d) | 0d → 4d | 100% → 0% | none → 13d |  | baseline start 2024-12-16 → 2024-12-23; baseline finish 2024-12-19 → 2024-12-27 |
| 177 | Confirm uploaded master data | 2024-12-30 A → 2025-01-17 (+18d) | 2024-12-30 A → 2025-01-17 (+18d) | 0d → 1d | 100% → 0% | none → 331d |  | baseline start 2024-12-20 → 2024-12-28; baseline finish 2024-12-20 → 2024-12-28 |
| 178 | Receipt of cutover data | 2024-12-31 A → 2025-01-18 (+18d) | 2025-01-07 → 2025-01-23 (+16d) | 6d → 5d |  | 228d → 7d | 137 → 137FS+13d | constraint none → start no earlier than 2025-01-06; baseline start 2024-12-13 → 2024-12-06; baseline finish 2024-12-20 → 2024-12-30 |
| 179 | Validate & cleanse cutover data | 2024-12-27 → 2025-01-24 (+28d) | 2025-01-03 → 2025-01-28 (+25d) | 6d → 4d |  | 259d → 322d | 137 → 178 | baseline start 2024-12-13 → 2024-12-31; baseline finish 2024-12-20 → 2025-01-06 |
| 180 | Upload cutover data in production | 2025-01-08 → 2025-01-24 (+16d) | 2025-01-10 → 2025-01-30 (+20d) | 3d → 6d |  | 228d → 7d |  | baseline start 2024-12-23 → 2024-12-31; baseline finish 2024-12-26 → 2025-01-06 |
| 181 | Check and validate uploaded data | 2025-01-10 → 2025-01-30 (+20d) | 2025-01-10 → 2025-01-30 (+20d) |  |  | 228d → 7d |  | baseline start 2024-12-26 → 2025-01-06; baseline finish 2024-12-26 → 2025-01-06 |
| 182 | **Deliverables** | 2024-12-31 → 2025-01-11 (+11d) | 2025-01-03 → 2025-01-28 (+25d) | 4d → 14.45d |  | 259d → 322.55d |  | baseline start 2024-12-05 → 2024-11-21; baseline finish 2024-12-24 → 2024-12-31 |
| 183 | D: End user training manual | 2024-12-31 → 2025-01-17 (+17d) | 2025-01-02 → 2025-01-20 (+18d) |  |  | 260d → 329d |  | baseline start 2024-12-17 → 2024-12-09; baseline finish 2024-12-19 → 2024-12-11 |
| 184 | D: Data migration plan & checklist | 2024-12-31 → 2025-01-11 (+11d) | 2025-01-02 → 2025-01-14 (+12d) |  |  | 260d → 334d |  | baseline start 2024-12-12 → 2024-12-21; baseline finish 2024-12-16 → 2024-12-24 |
| 185 | D: Master data upload programs | 2025-01-01 → 2025-01-17 (+16d) | 2025-01-03 → 2025-01-20 (+17d) |  |  | 259d → 329d |  | baseline start 2024-12-20 → 2024-12-28; baseline finish 2024-12-24 → 2024-12-31 |
| 186 | D: Sample data upload validation | 2025-01-01 → 2025-01-17 (+16d) | 2025-01-01 → 2025-01-17 (+16d) |  |  | 261d → 331d |  | baseline start 2024-12-20 → 2024-12-28; baseline finish 2024-12-20 → 2024-12-28 |
| 187 | D: Final SAP Authorization matrix | 2024-12-31 → 2025-01-27 (+27d) | 2024-12-31 → 2025-01-28 (+28d) |  |  | 262d → 322.55d |  | baseline start 2024-12-05 → 2024-11-21; baseline finish 2024-12-05 → 2024-11-21 |
| 188 | **Phase Closure & Sign Off Phase Deliverables** | 2025-01-13 → 2025-02-08 (+26d) | 2025-01-14 → 2025-02-08 (+25d) | 2d → 1d |  | 228d → 0d |  | baseline start 2024-12-27 → 2025-01-07; baseline finish 2024-12-30 → 2025-01-07 |
| 189 | Deploy signoff | 2025-01-13 → 2025-02-08 (+26d) | 2025-01-13 → 2025-02-08 (+26d) |  |  | 228d → 0d | 181 → 181, 160 | baseline start 2024-12-27 → 2025-01-07; baseline finish 2024-12-27 → 2025-01-07 |
| 190 | Completion of Final Preparation (Deploy) Phase | 2025-01-14 → 2025-02-08 (+25d) | 2025-01-14 → 2025-02-08 (+25d) |  |  | 228d → 0d | 189 → 189FF | baseline start 2024-12-30 → 2025-01-07; baseline finish 2024-12-30 → 2025-01-07 |
| 191 | Go Live | 2025-01-15 → 2025-02-08 (+24d) | 2025-01-15 → 2025-02-08 (+24d) |  |  | 228d → 0d | 190 → 190FF | baseline start 2024-12-31 → 2025-01-08; baseline finish 2024-12-31 → 2025-01-08 |
| 192 | **Stabilization** | 2025-01-16 → 2025-02-10 (+25d) | 2025-02-17 → 2025-03-12 (+23d) | 23d → 27d |  | 228d → 0d |  | baseline start 2025-01-01 → 2025-01-09; baseline finish 2025-01-31 → 2025-02-08 |
| 193 | Stabilization | 2025-01-16 → 2025-02-10 (+25d) | 2025-02-17 → 2025-03-12 (+23d) | 23d → 27d |  | 228d → 0d |  | was named Stabilization (Post Go live Support); baseline start 2025-01-01 → 2025-01-09; baseline finish 2025-01-31 → 2025-02-08 |
| 194 | **Deliverables** | 2025-01-16 → 2025-02-10 (+25d) | 2025-02-17 → 2025-03-12 (+23d) | 23d → 27d |  | 228d → 285d |  | baseline start 2025-01-01 → 2025-01-09; baseline finish 2025-01-31 → 2025-02-08 |
| 195 | D: Issue list with resolution status | 2025-01-16 → 2025-02-10 (+25d) | 2025-02-17 → 2025-03-12 (+23d) | 23d → 27d |  | 228d → 285d |  | baseline start 2025-01-01 → 2025-01-09; baseline finish 2025-01-31 → 2025-02-08 |
| 196 | D: Configuration documents | 2025-01-16 → 2025-02-10 (+25d) | 2025-02-17 → 2025-03-12 (+23d) | 23d → 27d |  | 228d → 285d |  | baseline start 2025-01-01 → 2025-01-09; baseline finish 2025-01-31 → 2025-02-08 |
| 197 | D: FS & TS | 2025-01-16 → 2025-02-10 (+25d) | 2025-02-17 → 2025-03-12 (+23d) | 23d → 27d |  | 228d → 285d |  | baseline start 2025-01-01 → 2025-01-09; baseline finish 2025-01-31 → 2025-02-08 |
| 198 | D: Cre team training document | 2025-01-16 → 2025-02-10 (+25d) | 2025-02-17 → 2025-03-12 (+23d) | 23d → 27d |  | 228d → 285d |  | baseline start 2025-01-01 → 2025-01-09; baseline finish 2025-01-31 → 2025-02-08 |
| 199 | **Extended Support** | 2024-09-23 A → 2025-03-13 (+171d) | 2024-09-23 A → 2025-04-10 (+199d) | 1d → 24d | 100% → 0% | none → 0d | 23FF → none | was named D: Training Plan; constraint start no earlier than 2022-11-07 → none; baseline start 2024-09-11 → 2025-02-10; baseline finish 2024-09-11 → 2025-03-08 |
