# 7. TE_Project Plan_25.09.2024_V6_OneHr_07.10.24

How a schedule from MS Project changed from version to version. A marks actual dates.

## Version 1 (data date 2022-10-13, saved 2024-10-07, file TASK_00631555_1_07102024091537.mpp)

Note of the change: Add project files.

| ID | WBS | Task | Duration | Start | Finish | Predecessors | Total float | Constraint |
| --- | --- | --- | --- | --- | --- | --- | --- | --- |
| 1 | 1 | **SAP Implementation at Total Environment** | 1454d | 2024-08-05 | 2030-03-11 |  | 0d |  |
| 2 | 1.1 | **Phase 1A & 3C: S4 HANA Implementation** | 150d | 2024-08-05 | 2025-03-11 |  | 0d |  |
| 3 | 1.1.1 | **Implementation** | 130d | 2024-08-05 | 2025-02-11 |  | 0d |  |
| 4 | 1.1.1.1 | **Prepare** | 26d | 2024-08-05 | 2024-09-09 |  | 0d |  |
| 5 | 1.1.1.1.1 | **Kick off** | 6d | 2024-08-05 | 2024-08-12 |  | 0d |  |
| 6 |  | Prepare kickoff presentation in consultation with TE | 3d | 2024-08-05 | 2024-08-07 |  | 0d | start no earlier than 2024-08-05 |
| 7 |  | Review & finalize kickoff presentation | 2d | 2024-08-08 | 2024-08-09 | 6 | 0d |  |
| 8 |  | Project Kick off with Key stakeholders | 1d | 2024-08-12 | 2024-08-12 | 7 | 0d |  |
| 9 | 1.1.1.1.2 | **Project Plan** | 9d | 2024-08-13 | 2024-08-23 |  | 1428d |  |
| 10 |  | Prepare & submit Initial project plan | 5d | 2024-08-13 | 2024-08-19 | 8 | 1428d | start no earlier than 2024-01-02 |
| 11 |  | Review project plan | 2d | 2024-08-20 | 2024-08-21 | 10 | 1439d |  |
| 12 |  | Make necessary changes in the plan | 1d | 2024-08-22 | 2024-08-22 | 11 | 1439d |  |
| 13 |  | Submit revised plan | 1d | 2024-08-22 | 2024-08-22 | 12FF | 1439d |  |
| 14 |  | Approval of project plan by TE | 1d | 2024-08-23 | 2024-08-23 | 13 | 1439d |  |
| 15 | 1.1.1.1.3 | **Project Governance** | 2d | 2024-08-22 | 2024-08-23 |  | 1428d |  |
| 16 |  | Finalize communication plan | 1d | 2024-08-22 | 2024-08-22 | 10FS+2d | 1428d | start no earlier than 2023-12-05 |
| 17 |  | Finalize deliverable signoff matrix | 1d | 2024-08-23 | 2024-08-23 | 16 | 1428d |  |
| 18 | 1.1.1.1.4 | **Mobilize team** | 1d | 2024-09-06 | 2024-09-06 |  | 1428d |  |
| 19 |  | HBT Team mobilization | 1d | 2024-09-06 | 2024-09-06 | 17FS+9d | 1428d |  |
| 20 |  | Total Environment team mobilization | 1d | 2024-09-06 | 2024-09-06 | 19SS | 1428d |  |
| 21 |  | Project preparation phase sign off by TE | 1d | 2024-09-09 | 2024-09-09 | 20 | 1428d |  |
| 22 | 1.1.1.1.6 | **Deliverables** | 9d | 2024-08-13 | 2024-08-23 |  | 1439d |  |
| 23 |  | D: Baseline Project Plan | 1d | 2024-08-23 | 2024-08-23 | 14FF | 1439d | start no earlier than 2022-11-07 |
| 24 |  | D: Project kickoff presentation | 1d | 2024-08-13 | 2024-08-13 | 8 | 1447d | start no earlier than 2022-11-07 |
| 25 | 1.1.1.2 | **PS, MM, SD, PP, QM, FICO** | 120d | 2024-08-19 | 2025-02-11 |  | 0d |  |
| 26 | 1.1.1.2.1 | **Explore** | 52d | 2024-08-19 | 2024-11-04 |  | 0d |  |
| 27 | 1.1.1.2.1.1 | **Requirement gathering & Conceptual design** | 42d | 2024-08-19 | 2024-10-17 |  | 0d |  |
| 28 |  | Explain & share AS IS template | 1d | 2024-08-19 | 2024-08-19 | 8FS+4d | 0d |  |
| 29 |  | Prepare AS-IS document | 5d | 2024-08-20 | 2024-08-26 | 28 | 0d |  |
| 30 |  | AS IS document review with TE | 20d | 2024-08-27 | 2024-09-23 | 29 | 0d | start no earlier than 2022-11-04 |
| 31 |  | Update AS IS document as per discussion | 20d | 2024-08-27 | 2024-09-23 | 30SS | 0d |  |
| 32 |  | Prepare end to end cycle (holistic view) for AS IS | 4d | 2024-09-24 | 2024-09-27 | 31 | 1402d |  |
| 33 |  | Presentation to Management for AS IS process | 10d | 2024-09-30 | 2024-10-15 | 32 | 1402d |  |
| 34 |  | Making final changes in AS IS | 2d | 2024-10-16 | 2024-10-17 | 33 | 1402d |  |
| 35 | 1.1.1.2.1.2 | **Level 1 training - L1** | 4d | 2024-09-24 | 2024-09-27 |  | 1413d |  |
| 36 |  | Making necessary training preparation and Plan | 2d | 2024-09-24 | 2024-09-25 | 31 | 1413d |  |
| 37 |  | Conducting level-1 training (SAP Overview) | 2d | 2024-09-26 | 2024-09-27 | 36 | 1413d |  |
| 38 | 1.1.1.2.1.3 | **Business Process definition** | 26d | 2024-09-24 | 2024-11-04 |  | 0d |  |
| 39 | 1.1.1.2.1.3.1 | **Enterprise structure** | 8d | 2024-09-24 | 2024-10-04 |  | 0d |  |
| 40 |  | Define Org structure | 3d | 2024-09-24 | 2024-09-26 | 31 | 0d |  |
| 41 |  | Review & discuss Org Structure with TE | 1d | 2024-09-27 | 2024-09-27 | 40 | 1410d |  |
| 42 |  | Review of Org structure by KPMG | 2d | 2024-09-27 | 2024-09-30 | 41SS | 1410d |  |
| 43 |  | Incorporate changes suggested by TE & KPMG | 2d | 2024-10-01 | 2024-10-03 | 42 | 1410d |  |
| 44 |  | Finalize & submit Org structure | 1d | 2024-10-04 | 2024-10-04 | 43 | 1410d |  |
| 45 |  | Sign off on Org structure by TE | 1d | 2024-10-04 | 2024-10-04 | 44FF | 1410d |  |
| 46 | 1.1.1.2.1.3.2 | **Business Blueprint** | 14d | 2024-09-27 | 2024-10-18 |  | 0d |  |
| 47 |  | Prepare Business blueprint document & KDS | 5d | 2024-09-27 | 2024-10-04 | 40 | 0d |  |
| 48 |  | Review Gap analysis, propose workaround, identify development list | 2d | 2024-10-03 | 2024-10-04 | 47SS+3d | 0d |  |
| 49 |  | Submit BBP to CTM | 1d | 2024-10-07 | 2024-10-07 | 48 | 0d |  |
| 50 |  | Review BBP with CTM & BPO | 4d | 2024-10-07 | 2024-10-10 | 49SS | 0d |  |
| 51 |  | Review of BBP by KPMG | 4d | 2024-10-07 | 2024-10-10 | 50SS | 0d |  |
| 52 |  | Incorporate changes suggested | 3d | 2024-10-14 | 2024-10-16 | 51 | 0d |  |
| 53 |  | BBP solution workshop for Management | 2d | 2024-10-17 | 2024-10-18 | 52 | 0d |  |
| 54 |  | Submit final BBP for signoff | 1d | 2024-10-18 | 2024-10-18 | 53FF | 0d |  |
| 55 |  | BBP sign off by TE | 1d | 2024-10-18 | 2024-10-18 | 54SS | 1400d |  |
| 56 |  | Completion of Business Blueprint Phase | 1d | 2024-10-18 | 2024-10-18 | 55FF | 1401d |  |
| 57 | 1.1.1.2.1.3.3 | **Master Data & Cutover data** | 4d | 2024-10-21 | 2024-10-24 |  | 0d |  |
| 58 |  | Identify master data & Cutover data requirement | 2d | 2024-10-21 | 2024-10-22 | 54 | 0d |  |
| 59 |  | Prepare & explain master data & cutover data template | 1d | 2024-10-23 | 2024-10-23 | 58 | 0d |  |
| 60 |  | Circulate master data & cutover data template | 1d | 2024-10-24 | 2024-10-24 | 59 | 5d |  |
| 61 | 1.1.1.2.1.3.4 | **Requirement gathering sheet (RGS)** | 6d | 2024-10-24 | 2024-11-04 |  | 0d |  |
| 62 |  | Prepare RGS | 5d | 2024-10-24 | 2024-10-30 | 59 | 0d |  |
| 63 |  | Submit RGS | 1d | 2024-11-04 | 2024-11-04 | 62 | 0d |  |
| 64 | 1.1.1.2.1.3.5 | **Deliverables** | 17d | 2024-09-30 | 2024-10-24 |  | 1397d |  |
| 65 |  | D: BBP document | 1d | 2024-10-21 | 2024-10-21 | 55 | 1400d |  |
| 66 |  | D: Gap Analysis | 1d | 2024-10-21 | 2024-10-21 | 55 | 1400d |  |
| 67 |  | D: Core team training presentation | 1d | 2024-09-30 | 2024-09-30 | 37 | 1413d |  |
| 68 |  | D: Final WRICEF list | 1d | 2024-10-21 | 2024-10-21 | 55 | 1400d |  |
| 69 |  | D: Initial master data templates | 1d | 2024-10-24 | 2024-10-24 | 60FF | 1397d |  |
| 70 | 1.1.1.2.2 | **Realize** | 47d | 2024-11-05 | 2025-01-10 |  | 0d |  |

| ID | WBS | Task | Duration | Start | Finish | Predecessors | Total float | Constraint |
| --- | --- | --- | --- | --- | --- | --- | --- | --- |
| 71 | 1.1.1.2.2.1 | **Functional Specifications** | 7d | 2024-11-05 | 2024-11-13 |  | 0d |  |
| 72 |  | Prepare functional specfications | 5d | 2024-11-05 | 2024-11-11 | 63 | 0d |  |
| 73 |  | Finalize development tracker | 2d | 2024-11-12 | 2024-11-13 | 72 | 1385d |  |
| 74 | 1.1.1.2.2.2 | **Configure and Validate Baseline** | 11d | 2024-11-12 | 2024-11-26 |  | 0d |  |
| 75 |  | Configure Processes and Functions in golden master (100) | 6d | 2024-11-12 | 2024-11-19 | 72 | 0d |  |
| 76 |  | Config review by KPMG | 5d | 2024-11-13 | 2024-11-19 | 75SS+1d | 0d |  |
| 77 |  | Transfer of Configuration to Dev testing | 1d | 2024-11-20 | 2024-11-20 | 76 | 0d |  |
| 78 |  | Unit testing-1 (Consultant) | 3d | 2024-11-21 | 2024-11-25 | 77 | 0d |  |
| 79 |  | Document and Resolve Issues | 3d | 2024-11-21 | 2024-11-25 | 78SS | 0d |  |
| 80 |  | Submit Unit Testing result & completion of baselune config | 1d | 2024-11-26 | 2024-11-26 | 79 | 0d |  |
| 81 | 1.1.1.2.2.3 | **System Integration Test** | 29d | 2024-11-26 | 2025-01-07 |  | 0d |  |
| 82 | 1.1.1.2.2.3.1 | **Integration test Plan** | 3d | 2024-11-26 | 2024-11-28 |  | 0d |  |
| 83 |  | Identify scenerios for Integration test | 3d | 2024-11-26 | 2024-11-28 | 80SS | 0d |  |
| 84 |  | Write scripts for Integration test | 3d | 2024-11-26 | 2024-11-28 | 83SS | 1373d |  |
| 85 |  | Test scripts review by KPMG | 3d | 2024-11-26 | 2024-11-28 | 83SS | 0d |  |
| 86 | 1.1.1.2.2.3.2 | **Conduct System integration test** | 26d | 2024-11-29 | 2025-01-07 |  | 0d |  |
| 87 |  | Perform Integration testing by Consultant | 7d | 2024-11-29 | 2024-12-09 | 85 | 0d |  |
| 88 |  | Plan for Level-2 training (CTM) | 1d | 2024-12-10 | 2024-12-10 | 87 | 0d |  |
| 89 |  | Making necessery training arrangement - PPT + tutorial | 2d | 2024-12-11 | 2024-12-12 | 88 | 0d |  |
| 90 |  | Conducting Level-2 Training (Module wise) | 3d | 2024-12-13 | 2024-12-17 | 89 | 0d |  |
| 91 |  | Perform User Acceptance test - CTM | 9d | 2024-12-18 | 2024-12-31 | 90 | 0d |  |
| 92 |  | Resolving the issues, if any | 9d | 2024-12-18 | 2024-12-31 | 91SS | 0d |  |
| 93 |  | Retesting of scenarios | 3d | 2025-01-02 | 2025-01-06 | 92 | 0d |  |
| 94 |  | UAT (by CTM) signoff | 1d | 2025-01-07 | 2025-01-07 | 93 | 1237d |  |
| 95 | 1.1.1.2.2.4 | **ABAP Development - SIT critical** | 31d | 2024-11-20 | 2025-01-03 |  | 1328d |  |
| 96 |  | Develop reports | 22d | 2024-11-20 | 2024-12-19 | 75 | 1328d |  |
| 97 |  | Testing by consultant | 22d | 2024-11-25 | 2024-12-24 | 96SS+3d | 1350d |  |
| 98 |  | Testing by CTM | 22d | 2024-11-28 | 2024-12-30 | 97SS+3d | 1350d |  |
| 99 |  | Sign off Development | 22d | 2024-12-03 | 2025-01-03 | 98SS+3d | 1350d |  |
| 100 | 1.1.1.2.2.5 | **Cutover Strategy** | 4d | 2025-01-07 | 2025-01-10 |  | 0d |  |
| 101 |  | Discussion on cutover strategy | 2d | 2025-01-07 | 2025-01-08 | 93 | 0d |  |
| 102 |  | Cutover & data responsibility Plan | 1d | 2025-01-09 | 2025-01-09 | 101 | 1346d |  |
| 103 |  | Review of cutover data migration strategy by KPMG | 3d | 2025-01-07 | 2025-01-09 | 101SS | 0d |  |
| 104 |  | Communication to Organisation for Cutover | 1d | 2025-01-10 | 2025-01-10 | 103 | 0d |  |
| 105 | 1.1.1.2.2.6 | **End user training plan** | 2d | 2025-01-08 | 2025-01-09 |  | 1237d |  |
| 106 |  | Preparation of End User training plan | 2d | 2025-01-08 | 2025-01-09 | 94 | 1237d |  |
| 107 |  | Communicate plan to TE | 1d | 2025-01-09 | 2025-01-09 | 106FF | 1237d |  |
| 108 |  | Completion of Realization Phase | 1d | 2025-01-09 | 2025-01-09 | 107FF | 1237d |  |
| 109 | 1.1.1.2.2.7 | **Deliverables** | 32d | 2024-11-26 | 2025-01-10 |  | 1345d |  |
| 110 |  | D: Test scripts | 1d | 2024-11-29 | 2024-11-29 | 84 | 1373d |  |
| 111 |  | D: Unit test result document | 1d | 2024-11-26 | 2024-11-26 | 78 | 1376d |  |
| 112 |  | D: Integration testing document | 1d | 2024-12-10 | 2024-12-10 | 87 | 1366d |  |
| 113 |  | D: User Acceptance testing document | 1d | 2025-01-07 | 2025-01-07 | 94FF | 1348d |  |
| 114 |  | D: Final master data templates | 1d | 2025-01-10 | 2025-01-10 | 104FF | 1345d |  |
| 115 |  | D: Data migration strategy document | 1d | 2025-01-10 | 2025-01-10 | 104FF | 1345d |  |
| 116 | 1.1.1.2.3 | **Deploy** | 72d | 2024-10-25 | 2025-02-10 |  | 5d |  |
| 117 | 1.1.1.2.3.1 | **Coordinate ABAP Development Pre Go Live** | 31d | 2024-12-20 | 2025-02-05 |  | 1328d |  |
| 118 |  | Develop reports | 22d | 2024-12-20 | 2025-01-23 | 96 | 1328d | start no earlier than 2022-12-20 |
| 119 |  | Testing by consultant | 22d | 2024-12-26 | 2025-01-28 | 118SS+3d | 1328d |  |
| 120 |  | Testing by CTM | 22d | 2024-12-31 | 2025-01-31 | 119SS+3d | 1328d |  |
| 121 |  | Sign off Development | 22d | 2025-01-06 | 2025-02-05 | 120SS+3d | 1328d |  |
| 122 | 1.1.1.2.3.2 | **End User Training** | 10d | 2025-01-10 | 2025-01-24 |  | 1335d |  |
| 123 |  | Prepare end user training manual | 2d | 2025-01-10 | 2025-01-13 | 104SS | 1335d |  |
| 124 |  | Conduct end user training | 5d | 2025-01-14 | 2025-01-21 | 123 | 1335d |  |
| 125 |  | Conduct training to HODs/Management | 3d | 2025-01-22 | 2025-01-24 | 124 | 1336d |  |
| 126 | 1.1.1.2.3.3 | **Production Environment Preparation** | 3d | 2025-01-08 | 2025-01-10 |  | 1345d |  |
| 127 |  | Transport final configurations | 1d | 2025-01-08 | 2025-01-08 | 94 | 1345d |  |
| 128 |  | Maintain number ranges | 1d | 2025-01-09 | 2025-01-09 | 127 | 1345d |  |
| 129 |  | Maintain client specific data | 1d | 2025-01-10 | 2025-01-10 | 128 | 1345d |  |
| 130 | 1.1.1.2.3.4 | **User creation** | 11d | 2025-01-10 | 2025-01-27 |  | 1335d |  |
| 131 |  | Finalize list of users for production enviornment | 2d | 2025-01-10 | 2025-01-13 | 107 | 1342d |  |
| 132 |  | Finalise Authorization Matrix | 2d | 2025-01-14 | 2025-01-16 | 131 | 1342d |  |
| 133 |  | Check roles and authorization | 4d | 2025-01-22 | 2025-01-27 | 124 | 1335d |  |
| 134 | 1.1.1.2.3.5 | **Data preparation and upload** | 71d | 2024-10-25 | 2025-02-07 |  | 5d |  |
| 135 |  | Receipt of master data | 55d | 2024-10-25 | 2025-01-16 | 60 | 5d |  |
| 136 |  | Validate & cleanse master data | 2d | 2025-01-17 | 2025-01-20 | 135 | 5d |  |
| 137 |  | Upload master data in Production | 4d | 2025-01-21 | 2025-01-24 | 136 | 5d |  |
| 138 |  | Confirm uploaded master data | 1d | 2025-01-27 | 2025-01-27 | 137 | 1328d |  |
| 139 |  | Receipt of cutover data | 15d | 2025-01-10 | 2025-01-31 | 104SS | 0d |  |
| 140 |  | Validate & cleanse cutover data | 15d | 2025-01-10 | 2025-01-31 | 139SS | 1331d |  |

| ID | WBS | Task | Duration | Start | Finish | Predecessors | Total float |
| --- | --- | --- | --- | --- | --- | --- | --- |
| 141 |  | Upload cutover data in production | 5d | 2025-02-03 | 2025-02-07 | 139, 137 | 0d |
| 142 |  | Check and validate uploaded data | 1d | 2025-02-07 | 2025-02-07 | 141FF | 0d |
| 143 | 1.1.1.2.3.6 | **Deliverables** | 11d | 2025-01-14 | 2025-01-29 |  | 1333d |
| 144 |  | D: End user training manual | 3d | 2025-01-14 | 2025-01-17 | 123 | 1341d |
| 145 |  | D: Data migration plan & checklist | 3d | 2025-01-17 | 2025-01-21 | 135 | 1339d |
| 146 |  | D: Master data upload programs | 3d | 2025-01-27 | 2025-01-29 | 137 | 1333d |
| 147 |  | D: Sample data upload validation | 1d | 2025-01-27 | 2025-01-27 | 137 | 1335d |
| 148 |  | D: Final SAP Authorization matrix | 1d | 2025-01-14 | 2025-01-14 | 131 | 1343d |
| 149 | 1.1.1.2.3.7 | **Obtain Approval & phase Sign Off** | 10d | 2025-01-28 | 2025-02-10 |  | 9d |
| 150 |  | Deploy signoff | 1d | 2025-02-10 | 2025-02-10 | 142 | 0d |
| 151 |  | Completion of Final Preparation (Deploy) Phase | 1d | 2025-02-10 | 2025-02-10 | 150FF | 1325d |
| 152 |  | Pre-Go Live readiness Check | 7d | 2025-01-28 | 2025-02-05 | 138 | 1328d |
| 153 |  | Go Live | 1d | 2025-02-11 | 2025-02-11 | 150 | 0d |
| 154 | 1.1.1.3 | **REFX, Cash Management, PM** | 130d | 2024-08-05 | 2025-02-11 |  | 1324d |
| 155 | 1.1.1.3.1 | **Explore** | 73d | 2024-08-19 | 2024-12-03 |  | 1324d |
| 156 | 1.1.1.3.1.1 | **Requirement gathering & Conceptual design** | 43d | 2024-08-19 | 2024-10-18 |  | 1324d |
| 157 |  | Explain & share AS IS template | 1d | 2024-08-19 | 2024-08-19 | 8FS+4d | 1324d |
| 158 |  | Prepare AS-IS document | 5d | 2024-08-20 | 2024-08-26 | 157 | 1324d |
| 159 |  | AS IS document review with TE | 20d | 2024-08-27 | 2024-09-23 | 158 | 1324d |
| 160 |  | Update AS IS document as per discussion | 20d | 2024-08-27 | 2024-09-23 | 159SS | 1324d |
| 161 |  | Prepare end to end cycle (holistic view) for AS IS | 4d | 2024-09-24 | 2024-09-27 | 160 | 1401d |
| 162 |  | Presentation to Management for AS IS process | 10d | 2024-10-01 | 2024-10-16 | 161FS+1d | 1401d |
| 163 |  | Making final changes in AS IS | 2d | 2024-10-17 | 2024-10-18 | 162 | 1401d |
| 164 | 1.1.1.3.1.2 | **Level 1 training - L1** | 4d | 2024-09-24 | 2024-09-27 |  | 1413d |
| 165 |  | Making necessary training preparation and Plan | 2d | 2024-09-24 | 2024-09-25 | 160 | 1413d |
| 166 |  | Conducting level-1 training (SAP Overview) | 2d | 2024-09-26 | 2024-09-27 | 165 | 1413d |
| 167 | 1.1.1.3.1.3 | **Business Process definition** | 47d | 2024-09-24 | 2024-12-03 |  | 1324d |
| 168 | 1.1.1.3.1.3.1 | **Enterprise structure** | 8d | 2024-09-24 | 2024-10-04 |  | 1324d |
| 169 |  | Define Org structure | 3d | 2024-09-24 | 2024-09-26 | 160 | 1324d |
| 170 |  | Review & discuss Org Structure with TE | 1d | 2024-09-27 | 2024-09-27 | 169 | 1324d |
| 171 |  | Review of Org structure by KPMG | 2d | 2024-09-27 | 2024-09-30 | 170SS | 1324d |
| 172 |  | Incorporate changes suggested by TE & KPMG | 2d | 2024-10-01 | 2024-10-03 | 171 | 1324d |
| 173 |  | Finalize & submit Org structure | 1d | 2024-10-04 | 2024-10-04 | 172 | 1324d |
| 174 |  | Sign off on Org structure by TE | 1d | 2024-10-04 | 2024-10-04 | 173FF | 1324d |
| 175 | 1.1.1.3.1.3.2 | **Business Blueprint** | 10d | 2024-11-18 | 2024-11-29 |  | 1324d |
| 176 |  | Prepare Business blueprint document & KDS | 3d | 2024-11-18 | 2024-11-20 | 174FS+27d | 1324d |
| 177 |  | Review Gap analysis, propose workaround, identify development list | 3d | 2024-11-18 | 2024-11-20 | 176SS | 1324d |
| 178 |  | Submit BBP to CTM | 1d | 2024-11-21 | 2024-11-21 | 177 | 1324d |
| 179 |  | Review BBP with CTM & BPO | 3d | 2024-11-21 | 2024-11-25 | 178SS | 1324d |
| 180 |  | Review of BBP by KPMG | 3d | 2024-11-21 | 2024-11-25 | 179SS | 1324d |
| 181 |  | Incorporate changes suggested | 1d | 2024-11-26 | 2024-11-26 | 180 | 1324d |
| 182 |  | BBP solution workshop for Management | 1d | 2024-11-27 | 2024-11-27 | 181 | 1324d |
| 183 |  | Submit final BBP for signoff | 1d | 2024-11-28 | 2024-11-28 | 182 | 1324d |
| 184 |  | BBP sign off by TE | 1d | 2024-11-29 | 2024-11-29 | 183 | 1373d |
| 185 |  | Completion of Business Blueprint Phase | 1d | 2024-11-29 | 2024-11-29 | 184FF | 1373d |
| 186 | 1.1.1.3.1.3.3 | **Master Data & cutover data** | 2d | 2024-11-29 | 2024-12-02 |  | 1324d |
| 187 |  | Identify master data & cutover data requirement | 1d | 2024-11-29 | 2024-11-29 | 183 | 1324d |
| 188 |  | Prepare & explain master data & cutover data template | 1d | 2024-12-02 | 2024-12-02 | 187 | 1324d |
| 189 |  | Circulate master data & cutover data template | 1d | 2024-12-02 | 2024-12-02 | 188FF | 1324d |
| 190 | 1.1.1.3.1.3.4 | **Requirement gathering sheet (RGS)** | 3d | 2024-11-29 | 2024-12-03 |  | 1371d |
| 191 |  | Prepare RGS | 2d | 2024-11-29 | 2024-12-02 | 187SS | 1371d |
| 192 |  | Submit RGS | 1d | 2024-12-03 | 2024-12-03 | 191 | 1371d |
| 193 | 1.1.1.3.1.3.5 | **Deliverables** | 42d | 2024-09-30 | 2024-12-02 |  | 1372d |
| 194 |  | D: BBP document | 1d | 2024-11-29 | 2024-11-29 | 184FF | 1373d |
| 195 |  | D: Gap Analysis | 1d | 2024-11-29 | 2024-11-29 | 184FF | 1373d |
| 196 |  | D: Core team training presentation | 1d | 2024-09-30 | 2024-09-30 | 166 | 1413d |
| 197 |  | D: Final WRICEF list | 1d | 2024-11-29 | 2024-11-29 | 184FF | 1373d |
| 198 |  | D: Initial master data templates | 1d | 2024-12-02 | 2024-12-02 | 189FF | 1372d |
| 199 | 1.1.1.3.2 | **Realize** | 116d | 2024-08-05 | 2025-01-22 |  | 1338d |
| 200 | 1.1.1.3.2.1 | **FS** | 3d | 2024-12-03 | 2024-12-05 |  | 1326d |
| 201 |  | Prepare FS | 3d | 2024-12-03 | 2024-12-05 | 189 | 1326d |
| 202 | 1.1.1.3.2.2 | **Configure and Validate Baseline** | 12d | 2024-12-06 | 2024-12-23 |  | 1326d |
| 203 |  | Configure Processes and Functions in golden master (100) | 4d | 2024-12-06 | 2024-12-11 | 201 | 1326d |
| 204 |  | Config review by KPMG | 4d | 2024-12-06 | 2024-12-11 | 203SS | 1332d |
| 205 |  | Transfer of Configuration to Dev testing | 1d | 2024-12-12 | 2024-12-12 | 204 | 1332d |
| 206 |  | Unit testing-1 (Consultant) | 3d | 2024-12-13 | 2024-12-17 | 205 | 1332d |
| 207 |  | Document and Resolve Issues | 3d | 2024-12-18 | 2024-12-20 | 206 | 1332d |
| 208 |  | Submit Unit Testing result & completion of baselune config | 1d | 2024-12-23 | 2024-12-23 | 207 | 1332d |
| 209 | 1.1.1.3.2.3 | **System Integration Test** | 20d | 2024-12-23 | 2025-01-22 |  | 1332d |
| 210 | 1.1.1.3.2.3.1 | **Integration test Plan** | 2d | 2024-12-23 | 2024-12-24 |  | 1332d |

| ID | WBS | Task | Duration | Start | Finish | Predecessors | Total float |
| --- | --- | --- | --- | --- | --- | --- | --- |
| 211 |  | Identify scenerios for Integration test | 2d | 2024-12-23 | 2024-12-24 | 208SS | 1332d |
| 212 |  | Write scripts for Integration test | 2d | 2024-12-23 | 2024-12-24 | 211SS | 1356d |
| 213 |  | Test scripts review by KPMG | 2d | 2024-12-23 | 2024-12-24 | 211SS | 1332d |
| 214 | 1.1.1.3.2.3.2 | **Conduct System integration test** | 18d | 2024-12-26 | 2025-01-22 |  | 1332d |
| 215 |  | Perform Integration testing by Consultant | 5d | 2024-12-26 | 2025-01-02 | 213 | 1332d |
| 216 |  | Plan for Level-2 training (CTM) | 1d | 2025-01-03 | 2025-01-03 | 215 | 1332d |
| 217 |  | Making necessery training arrangement - PPT + tutorial | 1d | 2025-01-06 | 2025-01-06 | 216 | 1332d |
| 218 |  | Conducting Level-2 Training (Module wise) | 3d | 2025-01-07 | 2025-01-09 | 217 | 1332d |
| 219 |  | Perform User Acceptance test - CTM | 5d | 2025-01-10 | 2025-01-17 | 218 | 1332d |
| 220 |  | Resolving the issues, if any | 5d | 2025-01-10 | 2025-01-17 | 219SS | 1332d |
| 221 |  | Retesting of scenarios | 2d | 2025-01-20 | 2025-01-21 | 220 | 1332d |
| 222 |  | UAT (by CTM) signoff | 1d | 2025-01-22 | 2025-01-22 | 221 | 1332d |
| 223 | 1.1.1.3.2.4 | **ABAP Development - SIT critical** | 24d | 2024-12-12 | 2025-01-17 |  | 1326d |
| 224 |  | Develop reports | 15d | 2024-12-12 | 2025-01-03 | 203 | 1326d |
| 225 |  | Testing by consultant | 15d | 2024-12-17 | 2025-01-08 | 224SS+3d | 1341d |
| 226 |  | Testing by CTM | 15d | 2024-12-20 | 2025-01-13 | 225SS+3d | 1341d |
| 227 |  | Sign off Development | 15d | 2024-12-26 | 2025-01-17 | 226SS+3d | 1341d |
| 228 | 1.1.1.3.2.5 | **Cutover Strategy** | 3d | 2025-01-07 | 2025-01-09 |  | 1344d |
| 229 |  | Discussion on cutover strategy | 1d | 2025-01-07 | 2025-01-07 | 218SS | 1344d |
| 230 |  | Cutover & data responsibility Plan | 1d | 2025-01-08 | 2025-01-08 | 229 | 1344d |
| 231 |  | Review of cutover data migration strategy by KPMG | 1d | 2025-01-08 | 2025-01-08 | 230SS | 1344d |
| 232 |  | Communication to Organisation for Cutover | 1d | 2025-01-09 | 2025-01-09 | 231 | 1344d |
| 233 | 1.1.1.3.2.6 | **End user training plan** | 8d | 2025-01-10 | 2025-01-22 |  | 1338d |
| 234 |  | Preparation of End User training plan | 1d | 2025-01-10 | 2025-01-10 | 232 | 1344d |
| 235 |  | Communicate plan to TE | 1d | 2025-01-13 | 2025-01-13 | 234 | 1344d |
| 236 |  | Completion of Realization Phase | 1d | 2025-01-22 | 2025-01-22 | 222FF | 1338d |
| 237 | 1.1.1.3.2.7 | **Deliverables** | 116d | 2024-08-05 | 2025-01-22 |  | 1338d |
| 238 |  | D: Test scripts | 1d | 2024-12-26 | 2024-12-26 | 213 | 1355d |
| 239 |  | D: Unit test result document | 1d | 2024-08-05 | 2024-08-05 |  | 1453d |
| 240 |  | D: Integration testing document | 1d | 2025-01-03 | 2025-01-03 | 215 | 1350d |
| 241 |  | D: User Acceptance testing document | 1d | 2025-01-22 | 2025-01-22 | 222FF | 1338d |
| 242 |  | D: Final master data templates | 1d | 2025-01-10 | 2025-01-10 | 232 | 1345d |
| 243 |  | D: Data migration strategy document | 1d | 2025-01-10 | 2025-01-10 | 232 | 1345d |
| 244 | 1.1.1.3.3 | **Deploy** | 47d | 2024-12-03 | 2025-02-10 |  | 1324d |
| 245 | 1.1.1.3.3.1 | **Coordinate ABAP Development Pre Go Live** | 24d | 2025-01-06 | 2025-02-07 |  | 1326d |
| 246 |  | Develop reports | 15d | 2025-01-06 | 2025-01-27 | 224 | 1326d |
| 247 |  | Testing by consultant | 15d | 2025-01-09 | 2025-01-30 | 246SS+3d | 1326d |
| 248 |  | Testing by CTM | 15d | 2025-01-14 | 2025-02-04 | 247SS+3d | 1326d |
| 249 |  | Sign off Development | 15d | 2025-01-20 | 2025-02-07 | 248SS+3d | 1326d |
| 250 | 1.1.1.3.3.2 | **End User Training** | 17d | 2025-01-03 | 2025-01-28 |  | 1334d |
| 251 |  | Prepare end user training manual | 1d | 2025-01-03 | 2025-01-03 | 215 | 1349d |
| 252 |  | Conduct end user training | 3d | 2025-01-23 | 2025-01-27 | 222 | 1332d |
| 253 |  | Conduct training to HODs/Management | 1d | 2025-01-28 | 2025-01-28 | 252 | 1334d |
| 254 | 1.1.1.3.3.3 | **Production Environment Preparation** | 3d | 2025-01-23 | 2025-01-27 |  | 1335d |
| 255 |  | Transport final configurations | 1d | 2025-01-23 | 2025-01-23 | 222 | 1335d |
| 256 |  | Maintain number ranges | 1d | 2025-01-24 | 2025-01-24 | 255 | 1335d |
| 257 |  | Maintain client specific data | 1d | 2025-01-27 | 2025-01-27 | 256 | 1335d |
| 258 | 1.1.1.3.3.4 | **User creation** | 19d | 2025-01-03 | 2025-01-30 |  | 1332d |
| 259 |  | Finalize list of users for production enviornment | 1d | 2025-01-03 | 2025-01-03 | 215 | 1346d |
| 260 |  | Finalise Authorization Matrix | 3d | 2025-01-06 | 2025-01-08 | 259 | 1346d |
| 261 |  | Check roles and authorization | 3d | 2025-01-28 | 2025-01-30 | 252 | 1332d |
| 262 | 1.1.1.3.3.5 | **Data preparation and upload** | 46d | 2024-12-03 | 2025-02-07 |  | 1324d |
| 263 |  | Receipt of master data | 35d | 2024-12-03 | 2025-01-23 | 189 | 1324d |
| 264 |  | Validate & cleanse master data | 2d | 2025-01-24 | 2025-01-27 | 263 | 1324d |
| 265 |  | Upload master data in Production | 4d | 2025-01-28 | 2025-01-31 | 264 | 1324d |
| 266 |  | Confirm uploaded master data | 1d | 2025-01-31 | 2025-01-31 | 265FF | 1324d |
| 267 |  | Receipt of cutover data | 1d | 2025-02-03 | 2025-02-03 | 266 | 1324d |
| 268 |  | Validate & cleanse cutover data | 1d | 2025-02-04 | 2025-02-04 | 267 | 1324d |
| 269 |  | Upload cutover data in production | 3d | 2025-02-05 | 2025-02-07 | 268 | 1324d |
| 270 |  | Check and validate uploaded data | 1d | 2025-02-07 | 2025-02-07 | 269FF | 1324d |
| 271 | 1.1.1.3.3.6 | **Deliverables** | 25d | 2025-01-06 | 2025-02-10 |  | 1325d |
| 272 |  | D: End user training manual | 1d | 2025-01-06 | 2025-01-06 | 251 | 1349d |
| 273 |  | D: Data migration plan & checklist | 1d | 2025-01-10 | 2025-01-10 | 232 | 1345d |
| 274 |  | D: Master data upload programs | 1d | 2025-02-03 | 2025-02-03 | 266 | 1330d |
| 275 |  | D: Sample data upload validation | 1d | 2025-02-10 | 2025-02-10 | 269 | 1325d |
| 276 |  | D: Final SAP Authorization matrix | 1d | 2025-01-09 | 2025-01-09 | 260 | 1346d |
| 277 | 1.1.1.3.3.7 | **Obtain Approval & phase Sign Off** | 6d | 2025-02-03 | 2025-02-10 |  | 1325d |
| 278 |  | Deploy signoff | 1d | 2025-02-10 | 2025-02-10 | 270 | 1324d |
| 279 |  | Completion of Final Preparation (Deploy) Phase | 1d | 2025-02-10 | 2025-02-10 | 278FF | 1324d |
| 280 |  | Pre-Go Live readiness Check | 3d | 2025-02-03 | 2025-02-05 | 266 | 1328d |

| ID | WBS | Task | Duration | Start | Finish | Predecessors | Total float | Constraint |
| --- | --- | --- | --- | --- | --- | --- | --- | --- |
| 281 |  | Go Live | 1d | 2025-02-11 | 2025-02-11 | 279 | 1324d |  |
| 282 | 1.1.2 | **Stabilization** | 20d | 2025-02-12 | 2025-03-11 |  | 0d |  |
| 283 |  | Hand holding & issue resolution | 20d | 2025-02-12 | 2025-03-11 | 153 | 0d |  |
| 284 | 1.1.2.2 | **Deliverables** | 20d | 2025-02-12 | 2025-03-11 |  | 1304d |  |
| 285 |  | D: Issue list with resolution status | 20d | 2025-02-12 | 2025-03-11 | 283SS | 1304d |  |
| 286 |  | D: Configuration documents | 20d | 2025-02-12 | 2025-03-11 | 283SS | 1304d |  |
| 287 |  | D: FS & TS | 20d | 2025-02-12 | 2025-03-11 | 283SS | 1304d |  |
| 288 |  | D: Core team training document | 20d | 2025-02-12 | 2025-03-11 | 283SS | 1304d |  |
| 289 | 1.2 | **Phase 1B & 1C: Success Factor Implementation** | 176d | 2024-10-01 | 2025-06-12 |  | 1237d |  |
| 290 | 1.2.1 | **PMGM** | 97d | 2024-10-01 | 2025-02-21 |  | 1316d |  |
| 291 | 1.2.1.1 | **Explore** | 22d | 2024-10-01 | 2024-11-05 |  | 1316d |  |
| 292 |  | Requirement gathering | 3d | 2024-10-01 | 2024-10-04 |  | 1316d | start no earlier than 2024-10-01 |
| 293 |  | Prepare business blueprint document | 3d | 2024-10-07 | 2024-10-09 | 292 | 1316d |  |
| 294 |  | Review BBP with CTM & BPO | 3d | 2024-10-10 | 2024-10-15 | 293 | 1316d |  |
| 295 |  | Review of BBP by KPMG | 3d | 2024-10-10 | 2024-10-15 | 294SS | 1316d |  |
| 296 |  | Incorporate changes suggested | 2d | 2024-10-16 | 2024-10-17 | 295 | 1316d |  |
| 297 |  | BBP walkthrough to BPO & Management | 2d | 2024-10-18 | 2024-10-21 | 296 | 1316d |  |
| 298 |  | Incorporate changes & submit final BBP | 1d | 2024-10-22 | 2024-10-22 | 297 | 1316d |  |
| 299 |  | Approval & signoff of BBP document | 2d | 2024-10-23 | 2024-10-24 | 298 | 1316d |  |
| 300 |  | Explain master data & cutover data template | 2d | 2024-10-25 | 2024-10-28 | 299 | 1316d |  |
| 301 |  | Circulate master data template | 1d | 2024-10-28 | 2024-10-28 | 300FF | 1316d |  |
| 302 |  | Prepare RGS | 3d | 2024-10-29 | 2024-11-04 | 301 | 1351d |  |
| 303 |  | Submit RGS | 1d | 2024-11-05 | 2024-11-05 | 302 | 1351d |  |
| 304 |  | Explore Phase Completion | 1d | 2024-11-05 | 2024-11-05 | 303FF | 1391d |  |
| 305 | 1.2.1.1.14 | **Deliverables** | 6d | 2024-10-25 | 2024-11-05 |  | 1391d |  |
| 306 |  | D: Filled Workbook | 1d | 2024-10-25 | 2024-10-25 | 299 | 1396d |  |
| 307 |  | D: Data template | 1d | 2024-10-29 | 2024-10-29 | 301 | 1394d |  |
| 308 |  | D: Integration Architecture document | 1d | 2024-10-25 | 2024-10-25 | 299 | 1396d |  |
| 309 |  | D: FS & TS for interfaces | 1d | 2024-11-05 | 2024-11-05 | 302 | 1391d |  |
| 310 | 1.2.1.2 | **Realize** | 38d | 2024-11-05 | 2024-12-27 |  | 1351d |  |
| 311 |  | Prepare FS | 3d | 2024-11-05 | 2024-11-07 | 303SS | 1351d |  |
| 312 |  | Configuration of finalized business process | 7d | 2024-11-08 | 2024-11-18 | 311 | 1351d |  |
| 313 |  | Review of config by KPMG | 7d | 2024-11-08 | 2024-11-18 | 312SS | 1351d |  |
| 314 |  | Unit Testing by HBT | 3d | 2024-11-19 | 2024-11-21 | 313 | 1351d |  |
| 315 |  | Development of identified custom objects | 25d | 2024-11-19 | 2024-12-23 | 312 | 1354d |  |
| 316 |  | Testing of developed objects | 25d | 2024-11-22 | 2024-12-27 | 315SS+3d | 1354d |  |
| 317 |  | Prepare test scripts | 2d | 2024-11-22 | 2024-11-25 | 314 | 1351d |  |
| 318 |  | Review of test scripts by TE | 2d | 2024-11-26 | 2024-11-27 | 317 | 1351d |  |
| 319 |  | Review of test scripts by KPMG | 2d | 2024-11-26 | 2024-11-27 | 318SS | 1351d |  |
| 320 |  | Perform Integration testing | 5d | 2024-11-28 | 2024-12-04 | 319 | 1351d |  |
| 321 |  | Conduct L-2 training | 4d | 2024-12-05 | 2024-12-10 | 320 | 1351d |  |
| 322 |  | Perform User Acceptance testing | 7d | 2024-12-11 | 2024-12-19 | 321 | 1351d |  |
| 323 |  | Resolve issues, if any | 7d | 2024-12-11 | 2024-12-19 | 322SS | 1351d |  |
| 324 |  | Retesting of scenarios | 3d | 2024-12-20 | 2024-12-24 | 323 | 1351d |  |
| 325 |  | Realize Phase signoff | 1d | 2024-12-24 | 2024-12-24 | 324FF | 1351d |  |
| 326 |  | Prepare end user training plan | 2d | 2024-12-05 | 2024-12-06 | 320 | 1368d |  |
| 327 |  | Data migration strategy | 2d | 2024-12-05 | 2024-12-06 | 321SS | 1367d |  |
| 328 |  | Review of data migration strategy by KPMG | 2d | 2024-12-05 | 2024-12-06 | 327SS | 1367d |  |
| 329 |  | Circulate cutover data template | 1d | 2024-12-09 | 2024-12-09 | 328 | 1367d |  |
| 330 | 1.2.1.2.20 | **Deliverables** | 8d | 2024-12-11 | 2024-12-20 |  | 1358d |  |
| 331 |  | D: Updated workbook | 1d | 2024-12-20 | 2024-12-20 | 322 | 1358d |  |
| 332 |  | D: SIT & UAT | 1d | 2024-12-20 | 2024-12-20 | 322 | 1358d |  |
| 333 |  | D: CTM Admin Training Guide | 1d | 2024-12-11 | 2024-12-11 | 321 | 1365d |  |
| 334 | 1.2.1.3 | **Deploy** | 56d | 2024-10-29 | 2025-01-21 |  | 1316d |  |
| 335 |  | Transport request to Production | 1d | 2024-12-26 | 2024-12-26 | 324 | 1352d |  |
| 336 |  | Conduct end user training | 4d | 2024-12-26 | 2024-12-31 | 325 | 1351d |  |
| 337 |  | Provide & check roles & authorization | 3d | 2024-12-27 | 2024-12-31 | 335 | 1352d |  |
| 338 |  | Receipt of master data | 43d | 2024-10-29 | 2024-12-31 | 301 | 1316d |  |
| 339 |  | Upload master data in Production | 4d | 2025-01-02 | 2025-01-07 | 338 | 1316d |  |
| 340 |  | Receipt of cutover data | 3d | 2025-01-08 | 2025-01-10 | 339 | 1316d |  |
| 341 |  | Upload cutover data in production | 4d | 2025-01-13 | 2025-01-17 | 340 | 1316d |  |
| 342 |  | Pre-GoLive readiness by KPMG | 4d | 2025-01-02 | 2025-01-07 | 339SS | 1348d |  |
| 343 |  | Deploy Phase signoff | 1d | 2025-01-20 | 2025-01-20 | 341 | 1316d |  |
| 344 | 1.2.1.3.10 | **Deliverables** | 16d | 2024-12-27 | 2025-01-21 |  | 1339d |  |
| 345 |  | D: End user training guide | 1d | 2025-01-02 | 2025-01-02 | 336 | 1351d |  |
| 346 |  | D: Production Sanity Test | 1d | 2024-12-27 | 2024-12-27 | 335 | 1354d |  |
| 347 |  | D: Go Live signoff | 1d | 2025-01-21 | 2025-01-21 | 343 | 1339d |  |
| 348 |  | Go Live | 1d | 2025-01-21 | 2025-01-21 | 343 | 1316d |  |
| 349 | 1.2.1.5 | **Stabilization** | 23d | 2025-01-22 | 2025-02-21 |  | 1316d |  |
| 350 |  | Hand holding & issue resolution | 23d | 2025-01-22 | 2025-02-21 | 348 | 1316d |  |

| ID | WBS | Task | Duration | Start | Finish | Predecessors | Total float | Constraint |
| --- | --- | --- | --- | --- | --- | --- | --- | --- |
| 351 | 1.2.2 | **EC** | 97d | 2024-10-01 | 2025-02-21 |  | 1316d |  |
| 352 | 1.2.2.1 | **Explore** | 26d | 2024-10-01 | 2024-11-11 |  | 1354d |  |
| 353 |  | Requirement gathering | 4d | 2024-10-01 | 2024-10-07 |  | 1401d | start no earlier than 2024-10-01 |
| 354 |  | Prepare business blueprint document | 4d | 2024-10-08 | 2024-10-14 | 353 | 1401d | finish no earlier than 2024-09-30 |
| 355 |  | Review BBP with CTM & BPO | 4d | 2024-10-15 | 2024-10-18 | 354 | 1401d | finish no earlier than 2024-10-04 |
| 356 |  | Review of BBP by KPMG | 4d | 2024-10-15 | 2024-10-18 | 355SS | 1346d | finish no earlier than 2024-10-04 |
| 357 |  | Incorporate changes suggested | 2d | 2024-10-21 | 2024-10-22 | 356 | 1346d | finish no earlier than 2024-10-08 |
| 358 |  | BBP walkthrough to BPO & Management | 2d | 2024-10-23 | 2024-10-24 | 357 | 1346d | finish no earlier than 2024-10-10 |
| 359 |  | Incorporate changes & submit final BBP | 1d | 2024-10-25 | 2024-10-25 | 358 | 1346d | start no earlier than 2024-10-14 |
| 360 |  | Approval & signoff of BBP document | 2d | 2024-10-28 | 2024-10-29 | 359 | 1346d | finish no earlier than 2024-10-16 |
| 361 |  | Explain master data & cutover data template | 2d | 2024-10-30 | 2024-11-04 | 360 | 1346d | finish no earlier than 2024-10-18 |
| 362 |  | Circulate master data template | 1d | 2024-11-04 | 2024-11-04 | 361FF | 1346d | start no earlier than 2024-10-18 |
| 363 |  | Prepare RGS | 3d | 2024-11-05 | 2024-11-07 | 362 | 1356d | finish no earlier than 2024-10-23 |
| 364 |  | Submit RGS | 1d | 2024-11-08 | 2024-11-08 | 363 | 1356d | start no earlier than 2024-10-24 |
| 365 |  | Explore Phase Completion | 1d | 2024-11-08 | 2024-11-08 | 364FF | 1388d | start no earlier than 2024-10-24 |
| 366 | 1.2.2.1.14 | **Deliverables** | 7d | 2024-10-30 | 2024-11-11 |  | 1387d |  |
| 367 |  | D: Filled Workbook | 1d | 2024-10-30 | 2024-10-30 | 360 | 1393d | start no earlier than 2024-10-17 |
| 368 |  | D: Data template | 1d | 2024-11-05 | 2024-11-05 | 362 | 1391d | start no earlier than 2024-10-21 |
| 369 |  | D: Integration Architecture document | 1d | 2024-10-30 | 2024-10-30 | 360 | 1393d | start no earlier than 2024-10-17 |
| 370 |  | D: FS & TS for interfaces | 1d | 2024-11-11 | 2024-11-11 | 364 | 1387d | start no earlier than 2024-10-24 |
| 371 | 1.2.2.2 | **Realize** | 38d | 2024-11-08 | 2025-01-02 |  | 1351d |  |
| 372 |  | Prepare FS | 3d | 2024-11-08 | 2024-11-12 | 364SS | 1356d | finish no earlier than 2024-10-28 |
| 373 |  | Configuration of finalized business process | 5d | 2024-11-13 | 2024-11-19 | 372 | 1356d | finish no earlier than 2024-11-06 |
| 374 |  | Review of config by KPMG | 5d | 2024-11-13 | 2024-11-19 | 373SS | 1373d | finish no earlier than 2024-11-06 |
| 375 |  | Unit Testing by HBT | 4d | 2024-11-20 | 2024-11-25 | 374 | 1373d | finish no earlier than 2024-11-11 |
| 376 |  | Development of identified custom objects | 25d | 2024-11-20 | 2024-12-24 | 373 | 1356d | finish no earlier than 2024-12-11 |
| 377 |  | Testing of developed objects | 25d | 2024-11-25 | 2024-12-30 | 376SS+3d | 1353d | finish no earlier than 2024-12-16 |
| 378 |  | Prepare test scripts | 2d | 2024-11-26 | 2024-11-27 | 375 | 1373d | finish no earlier than 2024-11-13 |
| 379 |  | Review of test scripts by TE | 2d | 2024-11-28 | 2024-11-29 | 378 | 1373d | finish no earlier than 2024-11-15 |
| 380 |  | Review of test scripts by KPMG | 2d | 2024-11-28 | 2024-11-29 | 379SS | 1353d | finish no earlier than 2024-11-15 |
| 381 |  | Perform Integration testing | 7d | 2024-12-02 | 2024-12-10 | 380 | 1353d | finish no earlier than 2024-11-22 |
| 382 |  | Conduct L-2 training | 5d | 2024-12-11 | 2024-12-17 | 381 | 1353d | finish no earlier than 2024-11-28 |
| 383 |  | Perform User Acceptance testing | 7d | 2024-12-18 | 2024-12-27 | 382 | 1353d | finish no earlier than 2024-12-09 |
| 384 |  | Resolve issues, if any | 7d | 2024-12-18 | 2024-12-27 | 383SS | 1346d | finish no earlier than 2024-12-09 |
| 385 |  | Retesting of scenarios | 3d | 2024-12-30 | 2025-01-02 | 384 | 1346d | finish no earlier than 2024-12-12 |
| 386 |  | Realize Phase signoff | 1d | 2025-01-02 | 2025-01-02 | 385FF | 1346d | start no earlier than 2024-12-12 |
| 387 |  | Prepare end user training plan | 2d | 2024-12-11 | 2024-12-12 | 381 | 1364d | finish no earlier than 2024-11-26 |
| 388 |  | Data migration strategy | 2d | 2024-12-11 | 2024-12-12 | 382SS | 1364d | finish no earlier than 2024-11-26 |
| 389 |  | Review of data migration strategy by KPMG | 2d | 2024-12-11 | 2024-12-12 | 388SS | 1363d | finish no earlier than 2024-11-26 |
| 390 |  | Circulate cutover data template | 1d | 2024-12-13 | 2024-12-13 | 389 | 1363d | start no earlier than 2024-11-27 |
| 391 | 1.2.2.2.20 | **Deliverables** | 8d | 2024-12-18 | 2024-12-30 |  | 1353d |  |
| 392 |  | D: Updated workbook | 1d | 2024-12-30 | 2024-12-30 | 383 | 1353d | start no earlier than 2024-12-10 |
| 393 |  | D: SIT & UAT | 1d | 2024-12-30 | 2024-12-30 | 383 | 1353d | start no earlier than 2024-12-10 |
| 394 |  | D: CTM Admin Training Guide | 1d | 2024-12-18 | 2024-12-18 | 382 | 1360d | start no earlier than 2024-11-29 |
| 395 | 1.2.2.3 | **Deploy** | 53d | 2024-11-05 | 2025-01-21 |  | 1339d |  |
| 396 |  | Transport request to Production | 1d | 2025-01-03 | 2025-01-03 | 385 | 1346d | start no earlier than 2024-12-13 |
| 397 |  | Conduct end user training | 4d | 2025-01-03 | 2025-01-08 | 386 | 1346d | finish no earlier than 2024-12-18 |
| 398 |  | Provide & check roles & authorization | 3d | 2025-01-06 | 2025-01-08 | 396 | 1347d | finish no earlier than 2024-12-18 |
| 399 |  | Receipt of master data | 42d | 2024-11-05 | 2025-01-03 | 362 | 1346d | finish no earlier than 2024-12-17 |
| 400 |  | Upload master data in Production | 4d | 2025-01-06 | 2025-01-09 | 399, 396 | 1346d | finish no earlier than 2024-12-23 |
| 401 |  | Receipt of cutover data | 3d | 2025-01-08 | 2025-01-10 | 400SS+2d | 1316d | finish no earlier than 2024-12-27 |
| 402 |  | Upload cutover data in production | 4d | 2025-01-13 | 2025-01-17 | 401 | 1316d | finish no earlier than 2025-01-03 |
| 403 |  | Pre-GoLive readiness by KPMG | 4d | 2025-01-06 | 2025-01-09 | 400SS | 1346d | finish no earlier than 2024-12-23 |
| 404 |  | Deploy Phase signoff | 1d | 2025-01-20 | 2025-01-20 | 402 | 1316d | start no earlier than 2025-01-06 |
| 405 | 1.2.2.3.10 | **Deliverables** | 11d | 2025-01-06 | 2025-01-21 |  | 1339d |  |
| 406 |  | D: End user training guide | 1d | 2025-01-09 | 2025-01-09 | 397 | 1346d | start no earlier than 2024-12-19 |
| 407 |  | D: Production Sanity Test | 1d | 2025-01-06 | 2025-01-06 | 396 | 1349d | start no earlier than 2024-12-16 |
| 408 |  | D: Go Live signoff | 1d | 2025-01-21 | 2025-01-21 | 404 | 1339d | start no earlier than 2025-01-07 |
| 409 |  | Go Live | 1d | 2025-01-21 | 2025-01-21 | 404 | 1316d | start no earlier than 2025-01-07 |
| 410 | 1.2.2.5 | **Stabilization** | 23d | 2025-01-22 | 2025-02-21 |  | 1316d |  |
| 411 |  | Hand holding & issue resolution | 23d | 2025-01-22 | 2025-02-21 | 409 | 1316d |  |
| 412 | 1.2.3 | **OM, Recruitment, Onboarding, Learning** | 109d | 2025-01-10 | 2025-06-12 |  | 1237d |  |
| 413 | 1.2.3.1 | **Explore** | 28d | 2025-01-10 | 2025-02-19 |  | 1237d |  |
| 414 |  | Requirement gathering | 4d | 2025-01-10 | 2025-01-16 | 108 | 1237d |  |
| 415 |  | Prepare business blueprint document | 5d | 2025-01-17 | 2025-01-23 | 414 | 1237d |  |
| 416 |  | Review BBP with CTM & BPO | 6d | 2025-01-24 | 2025-01-31 | 415 | 1237d |  |
| 417 |  | Review of BBP by KPMG | 6d | 2025-01-24 | 2025-01-31 | 416SS | 1237d |  |
| 418 |  | Incorporate changes suggested | 2d | 2025-02-03 | 2025-02-04 | 417 | 1237d |  |
| 419 |  | BBP walkthrough to BPO & Management | 2d | 2025-02-05 | 2025-02-06 | 418 | 1237d |  |
| 420 |  | Incorporate changes & submit final BBP | 1d | 2025-02-07 | 2025-02-07 | 419 | 1237d |  |

| ID | WBS | Task | Duration | Start | Finish | Predecessors | Total float |
| --- | --- | --- | --- | --- | --- | --- | --- |
| 421 |  | Approval & signoff of BBP document | 2d | 2025-02-10 | 2025-02-11 | 420 | 1237d |
| 422 |  | Explain master data & cutover data template | 2d | 2025-02-12 | 2025-02-13 | 421 | 1237d |
| 423 |  | Circulate master data template | 1d | 2025-02-13 | 2025-02-13 | 422FF | 1237d |
| 424 |  | Prepare RGS | 3d | 2025-02-14 | 2025-02-18 | 423 | 1267d |
| 425 |  | Submit RGS | 1d | 2025-02-19 | 2025-02-19 | 424 | 1267d |
| 426 |  | Explore Phase Completion | 1d | 2025-02-19 | 2025-02-19 | 425FF | 1318d |
| 427 | 1.2.3.1.14 | **Deliverables** | 15d | 2025-01-24 | 2025-02-13 |  | 1322d |
| 428 |  | D: Filled Workbook | 1d | 2025-01-24 | 2025-01-24 | 415 | 1336d |
| 429 |  | D: Data template | 1d | 2025-02-13 | 2025-02-13 | 423FF | 1322d |
| 430 |  | D: Integration Architecture document | 1d | 2025-02-10 | 2025-02-10 | 420 | 1325d |
| 431 |  | D: FS & TS for interfaces | 1d | 2025-02-10 | 2025-02-10 | 420 | 1325d |
| 432 | 1.2.3.2 | **Realize** | 45d | 2025-02-19 | 2025-04-22 |  | 1267d |
| 433 |  | Prepare FS | 3d | 2025-02-19 | 2025-02-21 | 425SS | 1267d |
| 434 |  | Configuration of finalized business process | 7d | 2025-02-24 | 2025-03-04 | 433 | 1267d |
| 435 |  | Review of config by KPMG | 7d | 2025-02-24 | 2025-03-04 | 434SS | 1267d |
| 436 |  | Unit Testing by HBT | 4d | 2025-03-05 | 2025-03-10 | 435 | 1267d |
| 437 |  | Development of identified custom objects | 25d | 2025-03-05 | 2025-04-08 | 434 | 1281d |
| 438 |  | Testing of developed objects | 25d | 2025-03-10 | 2025-04-11 | 437SS+3d | 1281d |
| 439 |  | Prepare test scripts | 3d | 2025-03-11 | 2025-03-13 | 436 | 1267d |
| 440 |  | Review of test scripts by TE | 3d | 2025-03-14 | 2025-03-18 | 439 | 1267d |
| 441 |  | Review of test scripts by KPMG | 3d | 2025-03-14 | 2025-03-18 | 440SS | 1267d |
| 442 |  | Perform Integration testing | 7d | 2025-03-19 | 2025-03-27 | 441 | 1267d |
| 443 |  | Conduct L-2 training | 5d | 2025-03-28 | 2025-04-03 | 442 | 1267d |
| 444 |  | Perform User Acceptance testing | 10d | 2025-04-04 | 2025-04-17 | 443 | 1267d |
| 445 |  | Resolve issues, if any | 10d | 2025-04-04 | 2025-04-17 | 444SS | 1267d |
| 446 |  | Retesting of scenarios | 3d | 2025-04-18 | 2025-04-22 | 445 | 1267d |
| 447 |  | Realize Phase signoff | 1d | 2025-04-22 | 2025-04-22 | 446FF | 1267d |
| 448 |  | Prepare end user training plan | 2d | 2025-03-28 | 2025-03-31 | 442 | 1290d |
| 449 |  | Data migration strategy | 2d | 2025-03-28 | 2025-03-31 | 443SS | 1289d |
| 450 |  | Review of data migration strategy by KPMG | 2d | 2025-03-28 | 2025-03-31 | 449SS | 1290d |
| 451 |  | Circulate cutover data template | 1d | 2025-04-01 | 2025-04-01 | 449 | 1289d |
| 452 | 1.2.3.2.20 | **Deliverables** | 11d | 2025-04-04 | 2025-04-18 |  | 1276d |
| 453 |  | D: Updated workbook | 1d | 2025-04-18 | 2025-04-18 | 444 | 1276d |
| 454 |  | D: SIT & UAT | 1d | 2025-04-18 | 2025-04-18 | 444 | 1276d |
| 455 |  | D: CTM Admin Training Guide | 1d | 2025-04-04 | 2025-04-04 | 443 | 1286d |
| 456 | 1.2.3.3 | **Deploy** | 63d | 2025-02-14 | 2025-05-13 |  | 1237d |
| 457 |  | Transport request to Production | 1d | 2025-04-23 | 2025-04-23 | 447 | 1272d |
| 458 |  | Conduct end user training | 4d | 2025-04-23 | 2025-04-28 | 447 | 1267d |
| 459 |  | Provide & check roles & authorization | 3d | 2025-04-29 | 2025-05-01 | 458 | 1267d |
| 460 |  | Receipt of master data | 49d | 2025-02-14 | 2025-04-23 | 423 | 1237d |
| 461 |  | Upload master data in Production | 4d | 2025-04-24 | 2025-04-29 | 460 | 1237d |
| 462 |  | Receipt of cutover data | 5d | 2025-04-30 | 2025-05-06 | 461 | 1237d |
| 463 |  | Upload cutover data in production | 4d | 2025-05-07 | 2025-05-12 | 462 | 1237d |
| 464 |  | Pre-GoLive readiness by KPMG | 5d | 2025-04-30 | 2025-05-06 | 461 | 1264d |
| 465 |  | Deploy Phase signoff | 1d | 2025-05-12 | 2025-05-12 | 463FF | 1237d |
| 466 | 1.2.3.3.10 | **Deliverables** | 14d | 2025-04-24 | 2025-05-13 |  | 1259d |
| 467 |  | D: End user training guide | 1d | 2025-04-29 | 2025-04-29 | 458 | 1269d |
| 468 |  | D: Production Sanity Test | 1d | 2025-04-24 | 2025-04-24 | 457 | 1272d |
| 469 |  | D: Go Live signoff | 1d | 2025-05-13 | 2025-05-13 | 465 | 1259d |
| 470 |  | Go Live | 1d | 2025-05-13 | 2025-05-13 | 465 | 1237d |
| 471 | 1.2.3.5 | **Stabilization** | 22d | 2025-05-14 | 2025-06-12 |  | 1237d |
| 472 |  | Hand holding & issue resolution | 22d | 2025-05-14 | 2025-06-12 | 470 | 1237d |
| 473 | 1.3 | **Phase 2: AMS for 5 years** | 1304d | 2025-03-12 | 2030-03-11 |  | 0d |
| 474 |  | Issue resolution & support | 1304d | 2025-03-12 | 2030-03-11 | 283 | 0d |
| 475 | 1.4 | **Phase 3A: Extended Warehouse Management (EWM)** | 110d | 2025-03-11 | 2025-08-11 |  | 1195d |
| 476 | 1.4.1 | **Prepare** | 6d | 2025-03-11 | 2025-03-18 |  | 1195d |
| 477 |  | Mobilize team | 1d | 2025-03-11 | 2025-03-11 | 283FS-1d | 1195d |
| 478 |  | Finalize delivery plan | 4d | 2025-03-12 | 2025-03-17 | 477 | 1299d |
| 479 | 1.4.1.3 | **Deliverables** | 1d | 2025-03-18 | 2025-03-18 |  | 1299d |
| 480 |  | Project plan | 1d | 2025-03-18 | 2025-03-18 | 478 | 1299d |
| 481 | 1.4.2 | **Explore** | 29d | 2025-03-12 | 2025-04-21 |  | 1195d |
| 482 |  | Requirement gathering | 3d | 2025-03-12 | 2025-03-14 | 283 | 1195d |
| 483 |  | Prepare business blueprint document | 6d | 2025-03-17 | 2025-03-24 | 482 | 1195d |
| 484 |  | Review BBP with CTM | 7d | 2025-03-25 | 2025-04-02 | 483 | 1195d |
| 485 |  | Review of BBP by KPMG | 7d | 2025-03-25 | 2025-04-02 | 484SS | 1195d |
| 486 |  | Incorporate changes suggested | 2d | 2025-04-03 | 2025-04-04 | 485 | 1195d |
| 487 |  | BBP walkthrough to BPO & Management | 2d | 2025-04-07 | 2025-04-08 | 486 | 1195d |
| 488 |  | Incorporate changes & submit final BBP | 1d | 2025-04-09 | 2025-04-09 | 487 | 1195d |
| 489 |  | Approval & signoff of BBP document | 2d | 2025-04-10 | 2025-04-11 | 488 | 1195d |
| 490 |  | Explain master data & cutover data template | 1d | 2025-04-14 | 2025-04-14 | 489 | 1195d |

| ID | WBS | Task | Duration | Start | Finish | Predecessors | Total float |
| --- | --- | --- | --- | --- | --- | --- | --- |
| 491 |  | Circulate master data & cutover data template | 1d | 2025-04-15 | 2025-04-15 | 490 | 1195d |
| 492 |  | Prepare RGS | 3d | 2025-04-16 | 2025-04-18 | 491 | 1223d |
| 493 |  | Submit RGS | 1d | 2025-04-21 | 2025-04-21 | 492 | 1223d |
| 494 |  | Explore Phase completion | 1d | 2025-04-18 | 2025-04-18 | 492FF | 1276d |
| 495 | 1.4.2.14 | **Deliverables** | 2d | 2025-04-14 | 2025-04-15 |  | 1279d |
| 496 |  | D: BBP document | 1d | 2025-04-14 | 2025-04-14 | 489 | 1280d |
| 497 |  | D: Gap Analysis | 1d | 2025-04-14 | 2025-04-14 | 489 | 1280d |
| 498 |  | D: Core team training presentation | 1d | 2025-04-14 | 2025-04-14 | 489 | 1280d |
| 499 |  | D: Final WRICEF list | 1d | 2025-04-14 | 2025-04-14 | 489 | 1280d |
| 500 |  | D: Initial master data templates | 1d | 2025-04-15 | 2025-04-15 | 491FF | 1279d |
| 501 | 1.4.3 | **Realize** | 43d | 2025-04-22 | 2025-06-19 |  | 1223d |
| 502 |  | Prepare FS | 3d | 2025-04-22 | 2025-04-24 | 493 | 1223d |
| 503 |  | Configuration of finalized business process | 7d | 2025-04-25 | 2025-05-05 | 502 | 1223d |
| 504 |  | Review of config by KPMG | 7d | 2025-04-25 | 2025-05-05 | 503SS | 1223d |
| 505 |  | Unit Testing by HBT | 5d | 2025-05-06 | 2025-05-12 | 504 | 1223d |
| 506 |  | Development of identified custom objects | 30d | 2025-05-06 | 2025-06-16 | 503 | 1232d |
| 507 |  | Testing of development objects | 30d | 2025-05-09 | 2025-06-19 | 506SS+3d | 1232d |
| 508 |  | Scenario listing | 2d | 2025-05-13 | 2025-05-14 | 505 | 1223d |
| 509 |  | Review of test scripts by KPMG | 2d | 2025-05-13 | 2025-05-14 | 508SS | 1258d |
| 510 |  | Perform SIT by HBT | 7d | 2025-05-15 | 2025-05-23 | 508 | 1223d |
| 511 |  | Conduct L-2 Training | 4d | 2025-05-26 | 2025-05-29 | 510 | 1223d |
| 512 |  | Perform User Acceptance testing | 10d | 2025-05-30 | 2025-06-12 | 511 | 1223d |
| 513 |  | Resolve issues, if any | 1d | 2025-06-13 | 2025-06-13 | 512 | 1223d |
| 514 |  | Retesting of scenarios | 3d | 2025-06-16 | 2025-06-18 | 513 | 1223d |
| 515 |  | Realize Phase signoff | 1d | 2025-06-19 | 2025-06-19 | 514 | 1223d |
| 516 |  | Prepare end user training plan | 1d | 2025-05-26 | 2025-05-26 | 510 | 1250d |
| 517 |  | Data migration strategy | 2d | 2025-05-30 | 2025-06-02 | 511 | 1244d |
| 518 |  | Review of data migration strategy by KPMG | 2d | 2025-05-30 | 2025-06-02 | 517SS | 1244d |
| 519 |  | Circulate cutover data template | 1d | 2025-06-03 | 2025-06-03 | 518 | 1244d |
| 520 | 1.4.3.19 | **Deliverables** | 28d | 2025-05-13 | 2025-06-19 |  | 1232d |
| 521 |  | D: Test scripts | 1d | 2025-05-15 | 2025-05-15 | 508 | 1257d |
| 522 |  | D: Unit test result document | 1d | 2025-05-13 | 2025-05-13 | 505 | 1259d |
| 523 |  | D: Integration testing document | 1d | 2025-05-26 | 2025-05-26 | 510 | 1250d |
| 524 |  | D: User Acceptance testing document | 1d | 2025-06-19 | 2025-06-19 | 514 | 1232d |
| 525 |  | D: Final master data templates | 1d | 2025-06-03 | 2025-06-03 | 519FF | 1244d |
| 526 |  | D: Data migration strategy document | 1d | 2025-06-03 | 2025-06-03 | 519FF | 1244d |
| 527 | 1.4.4 | **Deploy** | 61d | 2025-04-16 | 2025-07-09 |  | 1195d |
| 528 |  | Transport request to Production | 2d | 2025-06-20 | 2025-06-23 | 515 | 1230d |
| 529 |  | Conduct end user training | 5d | 2025-06-20 | 2025-06-26 | 515 | 1223d |
| 530 |  | Provide & check roles & authorization | 3d | 2025-06-27 | 2025-07-01 | 529 | 1223d |
| 531 |  | Receipt of master data | 50d | 2025-04-16 | 2025-06-24 | 491 | 1195d |
| 532 |  | Upload master data in Production | 4d | 2025-06-25 | 2025-06-30 | 531 | 1195d |
| 533 |  | Receipt of cutover data | 1d | 2025-07-01 | 2025-07-01 | 532 | 1195d |
| 534 |  | Upload cutover data in production | 5d | 2025-07-02 | 2025-07-08 | 533 | 1195d |
| 535 |  | Pre-Go Live check by KPMG | 5d | 2025-07-01 | 2025-07-07 | 532 | 1220d |
| 536 |  | Deploy Phase signoff | 1d | 2025-07-09 | 2025-07-09 | 534 | 1195d |
| 537 | 1.4.4.10 | **Deliverables** | 27d | 2025-06-03 | 2025-07-09 |  | 1218d |
| 538 |  | D: End user training manual | 1d | 2025-06-27 | 2025-06-27 | 529 | 1226d |
| 539 |  | D: Data migration plan & checklist | 1d | 2025-06-03 | 2025-06-03 | 519FF | 1244d |
| 540 |  | D: Master data upload programs | 1d | 2025-07-01 | 2025-07-01 | 532 | 1224d |
| 541 |  | D: Sample data upload validation | 1d | 2025-07-09 | 2025-07-09 | 534 | 1218d |
| 542 |  | D: Final SAP Authorization matrix | 1d | 2025-07-02 | 2025-07-02 | 530 | 1223d |
| 543 |  | Go Live | 1d | 2025-07-10 | 2025-07-10 | 536 | 1195d |
| 544 | 1.4.6 | **Stabilization** | 22d | 2025-07-11 | 2025-08-11 |  | 1195d |
| 545 |  | Hand holding & issue resolution | 22d | 2025-07-11 | 2025-08-11 | 543 | 1195d |
| 546 | 1.4.6.2 | **Deliverables** | 21d | 2025-07-11 | 2025-08-08 |  | 1196d |
| 547 |  | D: Issue list with resolution status | 21d | 2025-07-11 | 2025-08-08 | 545SS | 1196d |
| 548 |  | D: Configuration documents | 21d | 2025-07-11 | 2025-08-08 | 545SS | 1196d |
| 549 |  | D: FS & TS | 21d | 2025-07-11 | 2025-08-08 | 545SS | 1196d |
| 550 |  | D: Core team training document | 21d | 2025-07-11 | 2025-08-08 | 545SS | 1196d |
| 551 | 1.5 | **Phase 3B: Group Reporting** | 87d | 2025-04-11 | 2025-08-11 |  | 1195d |
| 552 | 1.5.1 | **Group Reporting** | 87d | 2025-04-11 | 2025-08-11 |  | 1195d |
| 553 | 1.5.1.1 | **Explore** | 20d | 2025-04-11 | 2025-05-08 |  | 1195d |
| 554 |  | Requirement gathering | 3d | 2025-04-11 | 2025-04-15 | 477FS+22d | 1195d |
| 555 |  | Prepare business blueprint document | 4d | 2025-04-16 | 2025-04-21 | 554 | 1195d |
| 556 |  | Review BBP with CTM | 3d | 2025-04-22 | 2025-04-24 | 555 | 1195d |
| 557 |  | Review of BBP by KPMG | 3d | 2025-04-22 | 2025-04-24 | 556SS | 1195d |
| 558 |  | Incorporate changes suggested | 1d | 2025-04-25 | 2025-04-25 | 557 | 1195d |
| 559 |  | BBP walkthrough to BPO & Management | 2d | 2025-04-28 | 2025-04-29 | 558 | 1195d |
| 560 |  | Incorporate changes & submit final BBP | 1d | 2025-04-30 | 2025-04-30 | 559 | 1195d |

| ID | WBS | Task | Duration | Start | Finish | Predecessors | Total float |
| --- | --- | --- | --- | --- | --- | --- | --- |
| 561 |  | Approval & signoff of BBP document | 1d | 2025-05-01 | 2025-05-01 | 560 | 1195d |
| 562 |  | Explain master data & cutover data template | 1d | 2025-05-02 | 2025-05-02 | 561 | 1195d |
| 563 |  | Circulate master data & cutover data template | 1d | 2025-05-05 | 2025-05-05 | 562 | 1195d |
| 564 |  | Prepare RGS | 2d | 2025-05-06 | 2025-05-07 | 563 | 1220d |
| 565 |  | Submit RGS | 1d | 2025-05-08 | 2025-05-08 | 564 | 1220d |
| 566 |  | Explore Phase Completion | 1d | 2025-05-08 | 2025-05-08 | 565FF | 1262d |
| 567 | 1.5.1.1.14 | **Deliverables** | 2d | 2025-05-02 | 2025-05-05 |  | 1265d |
| 568 |  | D: BBP document | 1d | 2025-05-02 | 2025-05-02 | 561 | 1266d |
| 569 |  | D: Gap Analysis | 1d | 2025-05-02 | 2025-05-02 | 561 | 1266d |
| 570 |  | D: Core team training presentation | 1d | 2025-05-02 | 2025-05-02 | 561 | 1266d |
| 571 |  | D: Final WRICEF list | 1d | 2025-05-02 | 2025-05-02 | 561 | 1266d |
| 572 |  | D: Initial master data templates | 1d | 2025-05-05 | 2025-05-05 | 563FF | 1265d |
| 573 | 1.5.1.2 | **Realize** | 33d | 2025-05-09 | 2025-06-24 |  | 1220d |
| 574 |  | Prepare FS | 2d | 2025-05-09 | 2025-05-12 | 565 | 1220d |
| 575 |  | Configuration of finalized business process | 7d | 2025-05-13 | 2025-05-21 | 574 | 1220d |
| 576 |  | Config review by KPMG | 7d | 2025-05-13 | 2025-05-21 | 575SS | 1220d |
| 577 |  | Testing by HBT | 5d | 2025-05-22 | 2025-05-28 | 576 | 1220d |
| 578 |  | Development of identified custom objects | 20d | 2025-05-22 | 2025-06-18 | 575 | 1230d |
| 579 |  | Testing of development objects | 20d | 2025-05-27 | 2025-06-23 | 578SS+3d | 1230d |
| 580 |  | Prepare test scripts | 2d | 2025-05-29 | 2025-05-30 | 577 | 1220d |
| 581 |  | Review of test scripts by KPMG | 2d | 2025-05-29 | 2025-05-30 | 580SS | 1220d |
| 582 |  | Integration testing by HBT | 5d | 2025-06-02 | 2025-06-06 | 581 | 1220d |
| 583 |  | Conduct L-2 training | 3d | 2025-06-09 | 2025-06-11 | 582 | 1220d |
| 584 |  | Perform User Acceptance testing | 5d | 2025-06-12 | 2025-06-18 | 583 | 1220d |
| 585 |  | Resolve issues, if any | 1d | 2025-06-19 | 2025-06-19 | 584 | 1220d |
| 586 |  | Retesting of scenarios | 2d | 2025-06-20 | 2025-06-23 | 585 | 1220d |
| 587 |  | Realize Phase signoff | 1d | 2025-06-24 | 2025-06-24 | 586 | 1220d |
| 588 |  | Prepare end user training plan | 1d | 2025-06-02 | 2025-06-02 | 580 | 1245d |
| 589 |  | Data migration strategy | 2d | 2025-06-09 | 2025-06-10 | 583SS | 1238d |
| 590 |  | Review of data migration strategy by KPMG | 2d | 2025-06-09 | 2025-06-10 | 589SS | 1239d |
| 591 |  | Circulate cutover data template | 1d | 2025-06-11 | 2025-06-11 | 589 | 1238d |
| 592 | 1.5.1.2.19 | **Deliverables** | 16d | 2025-05-29 | 2025-06-19 |  | 1232d |
| 593 |  | D: Test scripts | 1d | 2025-06-02 | 2025-06-02 | 581 | 1245d |
| 594 |  | D: Unit test result document | 1d | 2025-05-29 | 2025-05-29 | 577 | 1247d |
| 595 |  | D: Integration testing document | 1d | 2025-05-29 | 2025-05-29 | 577 | 1247d |
| 596 |  | D: User Acceptance testing document | 1d | 2025-06-19 | 2025-06-19 | 584 | 1232d |
| 597 |  | D: Final master data templates | 1d | 2025-06-11 | 2025-06-11 | 591FF | 1238d |
| 598 |  | D: Data migration strategy document | 1d | 2025-06-11 | 2025-06-11 | 589 | 1238d |
| 599 | 1.5.1.3 | **Deploy** | 48d | 2025-05-06 | 2025-07-10 |  | 1195d |
| 600 |  | Transport request to Production | 1d | 2025-06-25 | 2025-06-25 | 587 | 1220d |
| 601 |  | Conduct end user training | 4d | 2025-06-26 | 2025-07-01 | 600 | 1220d |
| 602 |  | Provide & check roles & authorization | 3d | 2025-07-02 | 2025-07-04 | 601 | 1220d |
| 603 |  | Receipt of master data | 36d | 2025-05-06 | 2025-06-24 | 563 | 1195d |
| 604 |  | Upload master data in Production | 4d | 2025-06-25 | 2025-06-30 | 603 | 1195d |
| 605 |  | Receipt of cutover data | 1d | 2025-07-01 | 2025-07-01 | 604 | 1195d |
| 606 |  | Upload cutover data in production | 6d | 2025-07-02 | 2025-07-09 | 605 | 1195d |
| 607 |  | Pre-Go Live check by KPMG | 5d | 2025-07-01 | 2025-07-07 | 604 | 1220d |
| 608 |  | Deploy Phase signoff | 1d | 2025-07-09 | 2025-07-09 | 606FF | 1195d |
| 609 | 1.5.1.3.10 | **Deliverables** | 22d | 2025-06-11 | 2025-07-10 |  | 1217d |
| 610 |  | D: End user training manual | 1d | 2025-07-02 | 2025-07-02 | 601 | 1223d |
| 611 |  | D: Data migration plan & checklist | 1d | 2025-06-11 | 2025-06-11 | 591FF | 1238d |
| 612 |  | D: Master data upload programs | 1d | 2025-07-01 | 2025-07-01 | 604 | 1224d |
| 613 |  | D: Sample data upload validation | 1d | 2025-07-10 | 2025-07-10 | 606 | 1217d |
| 614 |  | D: Final SAP Authorization matrix | 1d | 2025-07-07 | 2025-07-07 | 602 | 1220d |
| 615 |  | Go Live | 1d | 2025-07-10 | 2025-07-10 | 608 | 1195d |
| 616 | 1.5.1.5 | **Stabilization** | 22d | 2025-07-11 | 2025-08-11 |  | 1195d |
| 617 |  | Hand holding & issue resolution | 22d | 2025-07-11 | 2025-08-11 | 615 | 1195d |
| 618 | 1.5.1.5.2 | **Deliverables** | 21d | 2025-07-11 | 2025-08-08 |  | 1196d |
| 619 |  | D: Issue list with resolution status | 21d | 2025-07-11 | 2025-08-08 | 617SS | 1196d |
| 620 |  | D: Configuration documents | 21d | 2025-07-11 | 2025-08-08 | 617SS | 1196d |
| 621 |  | D: FS & TS | 21d | 2025-07-11 | 2025-08-08 | 617SS | 1196d |
| 622 |  | D: Core team training document | 21d | 2025-07-11 | 2025-08-08 | 617SS | 1196d |

## Version 2 (data date 2022-10-13, saved 2024-11-06, file TASK_00631555_1_06112024092108.mpp)

Note of the change: Add project files.

Last finish stays 2030-03-11. Complete tasks 0 → 30.

Removed: 162 Presentation to Management for AS IS process; 168 Enterprise structure; 169 Define Org structure; 170 Review & discuss Org Structure with TE; 171 Review of Org structure by KPMG; 172 Incorporate changes suggested by TE & KPMG; 173 Finalize & submit Org structure; 174 Sign off on Org structure by TE

Changed:

| ID | Task | Start | Finish | Duration | Complete | Total float | Predecessors | Other |
| --- | --- | --- | --- | --- | --- | --- | --- | --- |
| 1 | **SAP Implementation at Total Environment** | 2024-08-05 A |  |  | 0% → 3% |  |  |  |
| 2 | **Phase 1A & 3C: S4 HANA Implementation** | 2024-08-05 A |  |  | 0% → 12% | 0d → 1304d |  |  |
| 3 | **Implementation** | 2024-08-05 A |  |  | 0% → 13% | 0d → 1324d |  |  |
| 4 | **Prepare** | 2024-08-05 A | 2024-09-09 A |  | 0% → 100% | 0d → none |  |  |
| 5 | **Kick off** | 2024-08-05 A | 2024-08-12 A |  | 0% → 100% | 0d → none |  |  |
| 6 | Prepare kickoff presentation in consultation with TE | 2024-08-05 A | 2024-08-07 A |  | 0% → 100% | 0d → none |  |  |
| 7 | Review & finalize kickoff presentation | 2024-08-08 A | 2024-08-09 A |  | 0% → 100% | 0d → none |  |  |
| 8 | Project Kick off with Key stakeholders | 2024-08-12 A | 2024-08-12 A |  | 0% → 100% | 0d → none |  |  |
| 9 | **Project Plan** | 2024-08-13 A | 2024-08-23 A |  | 0% → 100% | 1428d → none |  |  |
| 10 | Prepare & submit Initial project plan | 2024-08-13 A | 2024-08-19 A |  | 0% → 100% | 1428d → none |  |  |
| 11 | Review project plan | 2024-08-20 A | 2024-08-21 A |  | 0% → 100% | 1439d → none |  |  |
| 12 | Make necessary changes in the plan | 2024-08-22 A | 2024-08-22 A |  | 0% → 100% | 1439d → none |  |  |
| 13 | Submit revised plan | 2024-08-22 A | 2024-08-22 A |  | 0% → 100% | 1439d → none |  |  |
| 14 | Approval of project plan by TE | 2024-08-23 A | 2024-08-23 A |  | 0% → 100% | 1439d → none |  |  |
| 15 | **Project Governance** | 2024-08-22 A | 2024-08-23 A |  | 0% → 100% | 1428d → none |  |  |
| 16 | Finalize communication plan | 2024-08-22 A | 2024-08-22 A |  | 0% → 100% | 1428d → none |  |  |
| 17 | Finalize deliverable signoff matrix | 2024-08-23 A | 2024-08-23 A |  | 0% → 100% | 1428d → none |  |  |
| 18 | **Mobilize team** | 2024-09-06 A | 2024-09-06 A |  | 0% → 100% | 1428d → none |  |  |
| 19 | HBT Team mobilization | 2024-09-06 A | 2024-09-06 A |  | 0% → 100% | 1428d → none |  |  |
| 20 | Total Environment team mobilization | 2024-09-06 A | 2024-09-06 A |  | 0% → 100% | 1428d → none |  |  |
| 21 | Project preparation phase sign off by TE | 2024-09-09 A | 2024-09-09 A |  | 0% → 100% | 1428d → none |  |  |
| 22 | **Deliverables** | 2024-08-13 A | 2024-08-23 A |  | 0% → 100% | 1439d → none |  |  |
| 23 | D: Baseline Project Plan | 2024-08-23 A | 2024-08-23 A |  | 0% → 100% | 1439d → none |  |  |
| 24 | D: Project kickoff presentation | 2024-08-13 A | 2024-08-13 A |  | 0% → 100% | 1447d → none |  |  |
| 25 | **PS, MM, SD, PP, QM, FICO, REFX, Cash Mgmt** | 2024-08-19 A |  |  | 0% → 16% | 0d → 1324d |  | was named PS, MM, SD, PP, QM, FICO |
| 26 | **Explore** | 2024-08-19 A |  |  | 0% → 74% | 0d → 1392d |  |  |
| 27 | **Requirement gathering & Conceptual design** | 2024-08-19 A | 2024-10-17 A |  | 0% → 100% | 0d → none |  |  |
| 28 | Explain & share AS IS template | 2024-08-19 A | 2024-08-19 A |  | 0% → 100% | 0d → none |  |  |
| 29 | Prepare AS-IS document | 2024-08-20 A | 2024-08-26 A |  | 0% → 100% | 0d → none |  |  |
| 30 | AS IS document review with TE | 2024-08-27 A | 2024-09-23 A |  | 0% → 100% | 0d → none |  |  |
| 31 | Update AS IS document as per discussion | 2024-08-27 A | 2024-09-23 A |  | 0% → 100% | 0d → none |  |  |
| 32 | Prepare end to end cycle (holistic view) for AS IS | 2024-09-24 A | 2024-09-27 A |  | 0% → 100% | 1402d → none |  |  |
| 33 | Presentation to Management for AS IS process | 2024-09-30 A | 2024-10-15 A |  | 0% → 100% | 1402d → none |  |  |
| 34 | Making final changes in AS IS | 2024-10-16 A | 2024-10-17 A |  | 0% → 100% | 1402d → none |  |  |
| 35 | **Level 1 training - L1** | 2024-09-24 A | 2024-09-27 A |  | 0% → 100% | 1413d → none |  |  |
| 36 | Making necessary training preparation and Plan | 2024-09-24 A | 2024-09-25 A |  | 0% → 100% | 1413d → none |  |  |
| 37 | Conducting level-1 training (SAP Overview) | 2024-09-26 A | 2024-09-27 A |  | 0% → 100% | 1413d → none |  |  |
| 38 | **Business Process definition** | 2024-09-24 A |  |  | 0% → 39% | 0d → 1392d |  |  |
| 39 | **Enterprise structure** | 2024-09-24 A |  |  | 0% → 99% | 0d → 1410d |  |  |
| 40 | Define Org structure | 2024-09-24 A | 2024-09-26 A |  | 0% → 100% | 0d → none |  |  |
| 41 | Review & discuss Org Structure with TE | 2024-09-27 A | 2024-09-27 A |  | 0% → 100% | 1410d → none |  |  |
| 42 | Review of Org structure by KPMG | 2024-09-27 A | 2024-09-30 A |  | 0% → 100% | 1410d → none |  |  |
| 43 | Incorporate changes suggested by TE & KPMG | 2024-10-01 A | 2024-10-03 A |  | 0% → 100% | 1410d → none |  |  |
| 44 | Finalize & submit Org structure | 2024-10-04 A | 2024-10-04 A |  | 0% → 100% | 1410d → none |  |  |
| 45 | Sign off on Org structure by TE | 2024-10-04 A |  |  | 0% → 90% |  |  |  |
| 46 | **Business Blueprint** | 2024-09-27 A |  |  | 0% → 39% | 0d → 1401d |  |  |
| 47 | Prepare Business blueprint document & KDS | 2024-09-27 A | 2024-10-04 A |  | 0% → 100% | 0d → none |  |  |
| 48 | Review Gap analysis, propose workaround, identify development list | 2024-10-03 A |  |  | 0% → 80% | 0d → 0.6d |  |  |
| 49 | Submit BBP to CTM | 2024-10-07 A |  |  | 0% → 60% | 0d → 1409d |  |  |
| 50 | Review BBP with CTM & BPO | 2024-10-07 A |  |  | 0% → 20% | 0d → 1406d |  |  |
| 51 | Review of BBP by KPMG | 2024-10-07 A |  |  | 0% → 20% | 0d → 0.6d |  |  |
| 52 | Incorporate changes suggested | 2024-10-14 A |  |  | 0% → 20% |  |  |  |
| 154 | **QM** | 2024-08-05 → 2024-11-04 (+91d) |  | 130d → 69d |  |  |  | was named REFX, Cash Management, PM |
| 155 | **Explore** | 2024-08-19 → 2024-11-04 (+77d) |  | 73d → 22d |  |  |  |  |
| 156 | **Requirement gathering & Conceptual design** | 2024-08-19 → 2024-11-04 (+77d) | 2024-10-18 → 2024-11-12 (+25d) | 43d → 7d |  |  |  |  |
| 157 | Explain & share AS IS template | 2024-08-19 → 2024-11-04 (+77d) | 2024-08-19 → 2024-11-04 (+77d) |  |  |  | 8FS+4d → none | constraint none → start no earlier than 2024-11-04 |
| 158 | Prepare AS-IS document | 2024-08-20 → 2024-11-05 (+77d) | 2024-08-26 → 2024-11-07 (+73d) | 5d → 3d |  |  |  |  |
| 159 | AS IS document review with TE | 2024-08-27 → 2024-11-08 (+73d) | 2024-09-23 → 2024-11-12 (+50d) | 20d → 3d |  |  |  |  |
| 160 | Update AS IS document as per discussion | 2024-08-27 → 2024-11-08 (+73d) | 2024-09-23 → 2024-11-08 (+46d) | 20d → 1d |  |  |  |  |
| 161 | Prepare end to end cycle (holistic view) for AS IS | 2024-09-24 → 2024-11-11 (+48d) | 2024-09-27 → 2024-11-11 (+45d) | 4d → 1d |  | 1401d → 1324d |  |  |
| 162 | Making final changes in AS IS | 2024-10-17 → 2024-11-12 (+26d) | 2024-10-18 → 2024-11-12 (+25d) | 2d → 1d |  | 1401d → 1324d | Presentation to Management for AS IS process → 161 |  |
| 163 | **Level 1 training - L1** | 2024-09-24 → 2024-11-13 (+50d) | 2024-09-27 → 2024-11-15 (+49d) | 4d → 3d |  | 1413d → 1324d |  |  |
| 164 | Making necessary training preparation and Plan | 2024-09-24 → 2024-11-13 (+50d) | 2024-09-25 → 2024-11-14 (+50d) |  |  | 1413d → 1324d | 160 → 162 |  |
| 165 | Conducting level-1 training (SAP Overview) | 2024-09-26 → 2024-11-15 (+50d) | 2024-09-27 → 2024-11-15 (+49d) | 2d → 1d |  | 1413d → 1324d |  |  |
| 166 | **Business Process definition** | 2024-09-24 → 2024-11-18 (+55d) |  | 47d → 12d |  |  |  |  |
| 168 | Prepare Business blueprint document & KDS |  |  |  |  |  | Sign off on Org structure by TEFS+27d → 165 |  |
| 185 | **Deliverables** | 2024-09-30 → 2024-11-18 (+49d) |  | 42d → 11d |  |  |  |  |
| 188 | D: Core team training presentation | 2024-09-30 → 2024-11-18 (+49d) | 2024-09-30 → 2024-11-18 (+49d) |  |  | 1413d → 1382d |  |  |
| 191 | **Realize** | 2024-08-05 → 2024-12-03 (+120d) |  | 116d → 34d |  | 1338d → 1326d |  |  |
| 229 | **Deliverables** | 2024-08-05 → 2024-12-18 (+135d) |  | 116d → 23d |  |  |  |  |

| ID | Task | Start | Finish | Complete | Total float | Predecessors |
| --- | --- | --- | --- | --- | --- | --- |
| 231 | D: Unit test result document | 2024-08-05 → 2024-12-18 (+135d) | 2024-08-05 → 2024-12-18 (+135d) |  | 1453d → 1360d | none → 198 |
| 281 | **Phase 1B & 1C: Success Factor Implementation** | 2024-10-01 A |  | 0% → 1% |  |  |
| 282 | **PMGM** | 2024-10-01 A |  | 0% → 1% |  |  |
| 283 | **Explore** | 2024-10-01 A |  | 0% → 7% | 1316d → 1391d |  |
| 284 | Requirement gathering | 2024-10-01 A |  | 0% → 70% |  |  |
| 343 | **EC** | 2024-10-01 A |  | 0% → 1% |  |  |
| 344 | **Explore** | 2024-10-01 A |  | 0% → 9% | 1354d → 1387d |  |
| 345 | Requirement gathering | 2024-10-01 A |  | 0% → 80% |  |  |
